# MirageDEVPlan_Less_Slic tasks_16Jan

Schedule from MS Project, 2008-01-07 to 2008-10-01, A marks actual dates.

## Calendars

- Standard: Mon-Fri 08:00-12:00, 13:00-17:00; Sat-Sun off.

## Resources

| Resource |
| --- |
| Kapil |
| Himanshu |
| Vishal |
| Mike |
| Anurag |
| Pallavi |
| Ramkumar |
| 1ETW |
| 2ETW |
| 3ETW |
| RKB |
| Gowie |
| ShashiP |
| RKB1 |
| Ravi |
| Mike25 |
| Gowie25 |

## Schedule

| ID | WBS | Task | Type | Duration | Start | Finish | Predecessors | Complete | Remaining | Total slack | Free slack | Constraint | Resources | Work | Actual work | Text1 |
| --- | --- | --- | --- | --- | --- | --- | --- | --- | --- | --- | --- | --- | --- | --- | --- | --- |
| 1 | 1 | **Mirage SW DEV** |  | 172.71d? | 2008-02-04 A | 2008-10-01 |  | 16% | 144.98d? | 0d |  |  |  | 5035.99h | 792.79h |  |
| 2 | 1.1 | **Phases** |  | 129.86d? | 2008-02-04 | 2008-08-01 |  |  |  | 42.85d |  |  |  |  |  |  |
| 3 | 1.1.1 | Phase 1 (Design and Initial Creation) | milestone | 1d? | 2008-03-26 | 2008-03-27 | 15, 18, 21, 27, 32, 35, 42, 46, 51, 197, 254, 257, 258, 259, 261, 262, 272, 276, 281, 415, 418, 421, 440, 446 |  |  | 134.71d |  |  |  |  |  |  |
| 4 | 1.1.2 | Phase 2 (FFT & THD) |  | 1d? | 2008-07-29 | 2008-07-30 | 61, 69, 80, 85, 95, 103, 107, 116, 151, 160, 169, 176, 183, 190, 200, 206, 212, 218, 263, 264, 265, 269, 270, 274, 25, 299, 311, 322, 345, 356, 368, 379, 390, 408, 409, 413, 428, 429, 431, 433, 434, 267, 268, 427, 426, 423, 424, 55, 224, 231, 238, 245, 435 |  |  | 45.52d |  |  |  |  |  |  |
| 5 | 1.1.3 | Phase 3 (Remote/Local/Averaging) |  | 1d? | 2008-07-31 | 2008-08-01 | 90, 98, 111, 124, 132, 140, 148, 435, 224, 231, 238, 245 |  |  | 42.85d |  |  |  |  |  |  |
| 6 | 1.1.4 | Phase 4 (Partial FFT Mode Simualte IE) |  | 1d? | 2008-02-04 | 2008-02-04 |  |  |  | 171.71d |  |  |  |  |  |  |
| 7 | 1.1.5 | Phase 5 (Full FFT w/o System & Analysis, Green screen with HW) |  | 1d? | 2008-02-04 | 2008-02-04 |  |  |  | 171.71d |  |  |  |  |  |  |
| 8 | 1.1.6 | Phase 6 (Full Stepped Sin Mode with System Hardkey) |  | 1d? | 2008-02-04 | 2008-02-04 |  |  |  | 171.71d |  |  |  |  |  |  |
| 9 | 1.1.7 | Phase 7 (Full Octave with Analysis Hardkey) |  | 1d? | 2008-02-04 | 2008-02-04 |  |  |  | 171.71d |  |  |  |  |  |  |
| 10 | 1.1.8 | Phase 8 (Learning Products) |  | 1d? | 2008-02-04 | 2008-02-04 |  |  |  | 171.71d |  |  |  |  |  |  |
| 11 | 1.1.9 | Phase 9 HQ |  | 1d? | 2008-02-04 | 2008-02-04 |  |  |  | 171.71d |  |  |  |  |  |  |
| 12 | 1.1.10 | Phase 10 SQ |  | 1d? | 2008-02-04 | 2008-02-04 |  |  |  | 171.71d |  |  |  |  |  |  |
| 13 | 1.1.11 | Phase 11 Ship |  | 1d? | 2008-02-04 | 2008-02-04 |  |  |  | 171.71d |  |  |  |  |  |  |
| 14 | 1.2 | **Process Infrastructure** |  | 26.29d? | 2008-02-04 A | 2008-03-11 |  | 55% | 11.74d? | 145.43d |  |  |  | 120h | 66.4h | P1 |
| 15 | 1.2.1 | **SCM ( Source management)** |  | 4.29d? | 2008-02-04 A | 2008-02-08 A |  | 100% |  |  |  |  |  | 24h | 24h | P1 |
| 16 | 1.2.1.1 | Defining the Folder heriarchy for source code |  | 1.43d? | 2008-02-04 A | 2008-02-05 A |  | 100% |  |  |  |  | RKB [70%] | 8h | 8h |  |
| 17 | 1.2.1.2 | TFS Set up ( Server & Client set up) |  | 2.86d? | 2008-02-05 A | 2008-02-08 A | 16 | 100% |  |  |  |  | RKB [70%] | 16h | 16h |  |
| 18 | 1.2.2 | **Development guidelines** |  | 2.43d? | 2008-02-08 A | 2008-02-12 A |  | 100% |  |  |  |  |  | 8h | 8h | P1 |
| 19 | 1.2.2.1 | Coding standard ( C++, C#) |  | 0.71d? | 2008-02-08 A | 2008-02-08 A | 17 | 100% |  |  |  | start no earlier than 2008-02-04 | RKB [70%] | 4h | 4h |  |
| 20 | 1.2.2.2 | Code Review , Unit Test case review guidelines |  | 0.71d? | 2008-02-12 A | 2008-02-12 A | 19 | 100% |  |  |  |  | RKB [70%] | 4h | 4h |  |
| 21 | 1.2.3 | **Skelton projects for each components** |  | 2.86d | 2008-02-12 A | 2008-02-15 A |  | 100% |  |  |  |  |  | 16h | 16h | P1 |
| 22 | 1.2.3.1 | GUI, AML, ML |  | 1.43d | 2008-02-12 A | 2008-02-14 A | 20 | 100% |  |  |  |  | RKB [70%] | 8h | 8h |  |
| 23 | 1.2.3.2 | Instrument interface, AI |  | 1.43d | 2008-02-14 A | 2008-02-15 A | 22 | 100% |  |  |  |  | RKB [70%] | 8h | 8h |  |
| 24 | 1.2.4 | **Platform Builder Image** |  | 22.43d? | 2008-02-07 A | 2008-03-11 |  | 26% | 16.7d? | 145.43d |  |  |  | 72h | 18.4h | P1 |
| 25 | 1.2.4.1 | Identifying the components which are to be added |  | 2.86d? | 2008-02-07 A | 2008-02-13 | 487 | 70% | 0.86d? | 161.86d | 0d |  | Anurag [70%] | 16h | 11.2h | P1 |
| 26 | 1.2.4.2 | Creating NK.bin |  | 1.43d? | 2008-02-13 A | 2008-02-15 | 25 | 50% | 0.71d? | 161.14d | 0d |  | Anurag [70%] | 8h | 4h | P1 |
| 27 | 1.2.4.3 | Checking presence and working of all components |  | 1.43d? | 2008-02-15 | 2008-02-18 | 26 |  |  | 161.14d | 26.43d |  | Anurag [70%] | 8h |  | P1 |
| 28 | 1.2.4.4 | Automation: Pushing this Image in the box |  | 2.86d? | 2008-02-29 | 2008-03-04 | 56 |  |  | 54.43d | 0d |  | Anurag [70%] | 16h |  | P2 |
| 29 | 1.2.4.5 | Auto Installation of this Image in the box |  | 2.86d? | 2008-03-04 | 2008-03-07 | 28 |  |  | 54.43d | 0d |  | Anurag [70%] | 16h |  | P2 |
| 30 | 1.2.4.6 | Integrating it with Trace Control & Registry settings |  | 1.43d? | 2008-03-07 A | 2008-03-11 | 29 | 40% | 0.86d? | 53.86d | 0d |  | Anurag [70%] | 8h | 3.2h | P2 |

| ID | WBS | Task | Duration | Start | Finish | Predecessors | Complete | Remaining | Total slack | Free slack | Resources | Work | Actual work | Text1 |
| --- | --- | --- | --- | --- | --- | --- | --- | --- | --- | --- | --- | --- | --- | --- |
| 31 | 1.3 | **Front Panel Tasks** | 126.19d? | 2008-02-04 A | 2008-07-29 |  | 13% | 109.84d? | 45.52d |  |  | 1696h | 204h |  |
| 32 | 1.3.1 | **Define interface IGUIHardKey** | 9d? | 2008-02-15 A | 2008-02-28 |  | 27% | 6.6d? | 153.14d | 18.43d |  | 48h | 12.8h | P1 |
| 33 | 1.3.1.1 | Design, Review & Update | 2.86d? | 2008-02-15 A | 2008-02-20 | 23 | 80% | 0.57d? | 159.29d |  | RKB [70%] | 16h | 12.8h |  |
| 34 | 1.3.1.2 | Implementation | 5.71d? | 2008-02-20 | 2008-02-28 | 199 |  |  | 43.71d | 0d | Himanshu [70%] | 32h |  |  |
| 35 | 1.3.2 | **FP Events Flow Mechanism** | 16.7d? | 2008-02-20 A | 2008-03-14 |  | 91% | 1.54d? | 142.58d | 7.87d |  | 88h | 80h | P1 |
| 36 | 1.3.2.1 | Define all FP events | 2.86d? | 2008-02-20 A | 2008-02-25 A | 33 | 100% |  |  |  | RKB [70%] | 16h | 16h |  |
| 37 | 1.3.2.2 | Implement EventProcessor | 3.08d? | 2008-02-25 A | 2008-02-28 A | 36 | 100% |  |  |  | Pallavi [65%] | 16h | 16h |  |
| 38 | 1.3.2.3 | Implement Event Dispatcher | 3.08d? | 2008-02-28 A | 2008-03-04 A | 37 | 100% |  |  |  | Pallavi [65%] | 16h | 16h |  |
| 39 | 1.3.2.4 | Implement Basic Event Target | 3.08d? | 2008-03-04 A | 2008-03-07 A | 38 | 100% |  |  |  | Pallavi [65%] | 16h | 16h |  |
| 40 | 1.3.2.5 | Implement change in Target Priority | 3.08d? | 2008-03-07 A | 2008-03-12 A | 39 | 100% |  |  |  | Pallavi [65%] | 16h | 16h |  |
| 41 | 1.3.2.6 | Code Review | 1.54d | 2008-03-12 | 2008-03-14 | 40 |  |  | 142.58d |  | Pallavi [65%] | 8h |  |  |
| 42 | 1.3.3 | **Error & Debug Information** | 16.57d? | 2008-02-18 A | 2008-03-12 |  | 25% | 12.43d? | 44.71d | 9.86d |  | 64h | 16h | P1 |
| 43 | 1.3.3.1 | Design/Define common interface for Accessing Error Log system | 2.86d? | 2008-02-18 A | 2008-02-21 A | 27 | 100% |  |  |  | Anurag [70%] | 16h | 16h |  |
| 44 | 1.3.3.2 | Implement Common Error Log system | 5.71d? | 2008-02-28 | 2008-03-07 | 34 |  |  | 43.71d | 0d | Himanshu [70%] | 32h |  |  |
| 45 | 1.3.3.3 | Unit Testing & Code Review | 2.86d? | 2008-03-07 | 2008-03-12 | 44 |  |  | 44.71d | 0d | Himanshu [70%] | 16h |  |  |
| 46 | 1.3.4 | **Define interface for All Major Component** | 25.29d? | 2008-02-04 A | 2008-03-10 |  | 78% | 5.56d? | 48.29d | 11.71d |  | 112h | 84h | P1 |
| 47 | 1.3.4.1 | AML Interface | 5d? | 2008-02-25 A | 2008-03-03 A | 36 | 100% |  |  |  | RKB [70%] | 28h | 28h |  |
| 48 | 1.3.4.2 | Instrument Interface | 6.36d? | 2008-02-04 A | 2008-02-12 A |  | 100% |  |  |  | Gowie [55%] | 28h | 28h |  |
| 49 | 1.3.4.3 | AutoMation interface | 6.36d? | 2008-02-12 A | 2008-02-20 A | 48 | 100% |  |  |  | Gowie [55%] | 28h | 28h |  |
| 50 | 1.3.4.4 | File Formatting Component | 5d? | 2008-03-03 | 2008-03-10 | 47 |  |  | 48.29d | 0d | RKB [70%] | 28h |  |  |
| 51 | 1.3.5 | **Start/Shut down activity** | 21.86d? | 2008-02-21 A | 2008-03-24 |  | 20% | 17.49d? | 43.71d | 1.71d |  | 56h | 11.2h | P1 |
| 52 | 1.3.5.1 | Design Start/Shut down framework | 2.86d? | 2008-02-21 A | 2008-02-26 | 43 | 70% | 0.86d? | 54.43d | 0d | Anurag [70%] | 16h | 11.2h |  |
| 53 | 1.3.5.2 | Implementation & Unit testing | 5.71d? | 2008-03-12 | 2008-03-19 | 45 |  |  | 44.71d | 0d | Himanshu [70%] | 32h |  |  |
| 54 | 1.3.5.3 | Code Review/ Unit test case review/Design screen/ Screen usability reviews with Jan Ryles | 1.43d | 2008-03-19 | 2008-03-24 | 53 |  |  | 43.71d | 0d | Himanshu [70%] | 8h |  |  |

| ID | WBS | Task | Duration | Start | Finish | Predecessors | Total slack | Free slack | Resources | Work | Text1 |
| --- | --- | --- | --- | --- | --- | --- | --- | --- | --- | --- | --- |
| 55 | 1.3.6 | **Splash Screen** | 27.57d? | 2008-02-26 | 2008-04-03 |  | 43.71d | 82.33d |  | 64h | P2 |
| 56 | 1.3.6.1 | Design framework & splash screen, Review with Jan Ryles | 2.86d? | 2008-02-26 | 2008-02-29 | 52 | 54.43d | 0d | Anurag [70%] | 16h |  |
| 57 | 1.3.6.2 | Implement Framework | 2.86d? | 2008-03-24 | 2008-03-27 | 54 | 44.43d | 0d | Himanshu [70%] | 16h |  |
| 58 | 1.3.6.3 | Incorporate the Intilization Events to show progress | 1.43d? | 2008-03-27 | 2008-03-28 | 57 | 44.43d | 0d | Himanshu [70%] | 8h |  |
| 59 | 1.3.6.4 | Integrate splash screen with Start Shut down activity | 1.43d? | 2008-03-28 | 2008-03-31 | 58 | 44.43d | 0d | Himanshu [70%] | 8h |  |
| 60 | 1.3.6.5 | Unit test case,Design review/Code review | 2.86d? | 2008-04-01 | 2008-04-03 | 59 | 43.71d | 0d | Himanshu [70%] | 16h |  |
| 61 | 1.3.7 | **Display layout Management** | 16.29d? | 2008-03-10 | 2008-04-01 |  | 48.29d | 84.62d |  | 96h | P2 |
| 62 | 1.3.7.1 | Design Display Layout | 2.86d? | 2008-03-10 | 2008-03-13 | 50 | 48.29d | 0d | RKB [70%] | 16h |  |
| 63 | 1.3.7.2 | Change Active Display | 2.86d? | 2008-03-11 | 2008-03-14 | 30 | 53.86d | 0d | Anurag [70%] | 16h |  |
| 64 | 1.3.7.3 | Configure Layout/Number of Display | 4.29d? | 2008-03-14 | 2008-03-20 | 63 | 53.86d | 0d | Anurag [70%] | 24h |  |
| 65 | 1.3.7.4 | Display Traversing | 2.86d? | 2008-03-20 | 2008-03-26 | 64 | 52.86d | 0d | Anurag [70%] | 16h |  |
| 66 | 1.3.7.5 | Show/Hide Status & Softkey bar | 1.43d? | 2008-03-26 | 2008-03-27 | 65 | 52.86d | 0d | Anurag [70%] | 8h |  |
| 67 | 1.3.7.6 | Full screen Graph Mode | 1.43d? | 2008-03-27 | 2008-03-31 | 66 | 52.86d | 0d | Anurag [70%] | 8h |  |
| 68 | 1.3.7.7 | Code Review | 1.43d | 2008-03-31 | 2008-04-01 | 67 | 52.86d | 0d | Anurag [70%] | 8h |  |
| 69 | 1.3.8 | **XML Based Menu Tree Framework** | 23.98d? | 2008-03-13 | 2008-04-16 |  | 48.29d | 74.07d |  | 116h | P2 |
| 70 | 1.3.8.1 | Design XML schema | 2.14d? | 2008-03-13 | 2008-03-17 | 62 | 48.29d | 0d | RKB [70%] | 12h |  |
| 71 | 1.3.8.2 | Desgin SoftKey handling Framework | 2.14d? | 2008-03-17 | 2008-03-19 | 70 | 48.29d | 0d | RKB [70%] | 12h |  |
| 72 | 1.3.8.3 | Populate Softkey handler memory objects from XML File | 2.31d? | 2008-03-19 | 2008-03-24 | 71 | 70.9d | 0d | Pallavi [65%] | 12h |  |
| 73 | 1.3.8.4 | Implement Softkey ( 4/7 ) More key Traversing mechansim | 2.31d? | 2008-03-24 | 2008-03-27 | 72 | 70.9d | 0d | Pallavi [65%] | 12h |  |
| 74 | 1.3.8.5 | Implement Back Key functionality | 2.31d? | 2008-03-27 | 2008-03-31 | 73 | 70.9d | 0d | Pallavi [65%] | 12h |  |
| 75 | 1.3.8.6 | Implement Combo Box based Selection Mechansim | 2.31d? | 2008-03-31 | 2008-04-02 | 74 | 70.9d | 0d | Pallavi [65%] | 12h |  |
| 76 | 1.3.8.7 | Implement bi-value based selection ( Show/Hide, AC/DC etc) | 2.31d? | 2008-04-02 | 2008-04-04 | 75 | 70.9d | 0d | Pallavi [65%] | 12h |  |
| 77 | 1.3.8.8 | Unit test case for validating Menu State & Code review | 3.08d? | 2008-04-04 | 2008-04-10 | 76 | 70.9d | 0d | Pallavi [65%] | 16h |  |
| 78 | 1.3.8.9 | Lighten the respected Hard key's | 1.54d? | 2008-04-10 | 2008-04-11 | 77 | 70.9d | 0d | Pallavi [65%] | 8h |  |
| 79 | 1.3.8.10 | Code Review | 1.54d | 2008-04-11 | 2008-04-16 | 78 | 69.9d | 0d | Pallavi [65%] | 8h |  |

| ID | WBS | Task | Duration | Start | Finish | Predecessors | Total slack | Free slack | Resources | Work | Text1 |
| --- | --- | --- | --- | --- | --- | --- | --- | --- | --- | --- | --- |
| 80 | 1.3.9 | **Screen Header Panel** | 28.39d? | 2008-03-19 | 2008-04-28 |  | 48.29d | 65.38d |  | 56h | P2 |
| 81 | 1.3.9.1 | Design screen header layouts/ Class/ Exposed function | 2.86d? | 2008-03-19 | 2008-03-25 | 71 | 47.29d | 0d | RKB [70%] | 16h |  |
| 82 | 1.3.9.2 | Implementation | 4.62d? | 2008-04-16 | 2008-04-23 | 79 | 68.9d | 0d | Pallavi [65%] | 24h |  |
| 83 | 1.3.9.3 | Unit test case | 1.54d? | 2008-04-23 | 2008-04-25 | 82 | 68.9d | 0d | Pallavi [65%] | 8h |  |
| 84 | 1.3.9.4 | Code reviews/unit test case reviews | 1.54d | 2008-04-25 | 2008-04-28 | 83 | 68.9d | 0d | Pallavi [65%] | 8h |  |
| 85 | 1.3.10 | **Status Panel** | 31.68d? | 2008-03-25 | 2008-05-07 |  | 47.29d | 58.22d |  | 48h | P2 |
| 86 | 1.3.10.1 | Design Status Panel layout/ Exposed classes/ Functions | 2.86d? | 2008-03-25 | 2008-03-28 | 81 | 47.29d | 0d | RKB [70%] | 16h |  |
| 87 | 1.3.10.2 | Implementation of status panel | 3.08d? | 2008-04-28 | 2008-05-02 | 84 | 67.9d | 0d | Pallavi [65%] | 16h |  |
| 88 | 1.3.10.3 | Unit test case | 1.54d? | 2008-05-02 | 2008-05-06 | 87 | 67.9d | 0d | Pallavi [65%] | 8h |  |
| 89 | 1.3.10.4 | Code reviews/unit test case reviews | 1.54d | 2008-05-06 | 2008-05-07 | 88 | 67.9d | 0d | Pallavi [65%] | 8h |  |
| 90 | 1.3.11 | **Analyser Mode Management : FFT** | 76.38d? | 2008-03-28 | 2008-07-14 |  | 47.29d | 13.33d |  | 44h | P3 |
| 91 | 1.3.11.1 | Design | 1.43d? | 2008-03-28 | 2008-03-31 | 86 | 47.29d | 0d | RKB [70%] | 8h |  |
| 92 | 1.3.11.2 | Implementation | 3.33d? | 2008-06-25 | 2008-07-01 | 91 | 56.81d | 0d | Ravi [75%] | 20h |  |
| 93 | 1.3.11.3 | Unit Testing | 1.33d? | 2008-07-09 | 2008-07-11 | 92 | 56.19d | 0d | Ravi [75%] | 8h |  |
| 94 | 1.3.11.4 | Code Review | 1.33d? | 2008-07-11 | 2008-07-14 | 93 | 56.19d |  | Ravi [75%] | 8h |  |
| 95 | 1.3.12 | **Module Integration** | 5.71d? | 2008-03-31 | 2008-04-08 |  | 47.29d | 79.91d |  | 32h | P2 |
| 96 | 1.3.12.1 | Module Integration GUI - Inst Interface | 2.86d? | 2008-03-31 | 2008-04-03 | 91 | 47.29d | 0d | RKB [70%] | 16h |  |
| 97 | 1.3.12.2 | Module integration GUI - AML | 2.86d? | 2008-04-03 | 2008-04-08 | 96 | 47.29d | 0d | RKB [70%] | 16h |  |
| 98 | 1.3.13 | **Configure Analyzer Frequency** | 29.37d? | 2008-04-08 | 2008-05-19 |  | 47.29d |  |  | 48h | P3 |
| 99 | 1.3.13.1 | Design | 1.43d? | 2008-04-08 | 2008-04-09 | 97 | 47.29d | 0d | RKB [70%] | 8h |  |
| 100 | 1.3.13.2 | Implementation | 4.62d? | 2008-05-07 | 2008-05-14 | 89 | 67.9d | 0d | Pallavi [65%] | 24h |  |
| 101 | 1.3.13.3 | Unit Testing | 1.54d? | 2008-05-14 | 2008-05-16 | 100 | 68.9d | 0d | Pallavi [65%] | 8h |  |
| 102 | 1.3.13.4 | Code reviews/unit test case reviews | 1.54d | 2008-05-16 | 2008-05-19 | 101 | 68.9d | 0d | Pallavi [65%] | 8h |  |
| 103 | 1.3.14 | **Configure Triggering : Free Run** | 77.05d? | 2008-04-11 | 2008-07-29 |  | 45.52d | 0d |  | 32h | P2 |
| 104 | 1.3.14.1 | Design | 1.43d? | 2008-04-11 | 2008-04-15 | 99 | 46d | 0d | RKB [70%] | 8h |  |
| 105 | 1.3.14.2 | Implementation | 2.67d? | 2008-06-19 | 2008-06-24 | 104 | 47.14d | 0d | Ravi [75%] | 16h |  |
| 106 | 1.3.14.3 | Code/unit test Review | 1.33d? | 2008-07-25 | 2008-07-29 | 105 | 45.52d |  | Ravi [75%] | 8h |  |

| ID | WBS | Task | Duration | Start | Finish | Predecessors | Total slack | Free slack | Resources | Work | Text1 |
| --- | --- | --- | --- | --- | --- | --- | --- | --- | --- | --- | --- |
| 107 | 1.3.15 | **Configure ARM : Automatic** | 72.57d? | 2008-04-16 | 2008-07-25 |  | 46d | 1.33d |  | 28h | P2 |
| 108 | 1.3.15.1 | Design | 0.71d? | 2008-04-16 | 2008-04-16 | 104 | 46d | 0d | RKB [70%] | 4h |  |
| 109 | 1.3.15.2 | Implementation | 2.67d? | 2008-07-07 | 2008-07-09 | 105 | 47.14d | 0d | Ravi [75%] | 16h |  |
| 110 | 1.3.15.3 | Code/unit test Review | 1.33d? | 2008-07-24 | 2008-07-25 | 109 | 46.86d |  | Ravi [75%] | 8h |  |
| 111 | 1.3.16 | **Start/Pause/Run** | 29.58d? | 2008-04-16 | 2008-05-28 |  | 46d |  |  | 48h | P3 |
| 112 | 1.3.16.1 | Design the framework | 2.14d? | 2008-04-16 | 2008-04-22 | 108 | 45d | 0d | RKB [70%] | 12h |  |
| 113 | 1.3.16.2 | Implementation of Run Behaviour | 3.08d? | 2008-05-19 | 2008-05-22 | 102 | 68.9d | 0d | Pallavi [65%] | 16h |  |
| 114 | 1.3.16.3 | Unit testing | 2.31d? | 2008-05-22 | 2008-05-27 | 113 | 68.9d | 0d | Pallavi [65%] | 12h |  |
| 115 | 1.3.16.4 | Code Review/ Unit test case review | 1.54d | 2008-05-27 | 2008-05-28 | 114 | 68.9d | 0d | Pallavi [65%] | 8h |  |
| 116 | 1.3.17 | **Configure Measurements: THD** | 63.1d? | 2008-04-28 | 2008-07-24 |  | 45d | 2.67d |  | 100h | P2 |
| 117 | 1.3.17.1 | Design Framework for THD configuration | 2.14d? | 2008-04-28 | 2008-04-30 | 112 | 45d | 0d | RKB [70%] | 12h |  |
| 118 | 1.3.17.2 | Design Framework for Temporary Measurement flow | 3.57d? | 2008-05-06 | 2008-05-09 | 117 | 45d | 0d | RKB [70%] | 20h |  |
| 119 | 1.3.17.3 | Implement screen ( With Live Chart) | 3.33d? | 2008-05-28 | 2008-06-02 | 118 | 49.48d | 0d | Ravi [75%] | 20h |  |
| 120 | 1.3.17.4 | Hooks the value change on screen with Temporary Measurement flow | 2d? | 2008-06-06 | 2008-06-10 | 119 | 48.81d | 0d | Ravi [75%] | 12h |  |
| 121 | 1.3.17.5 | Display THD Measurement Value on Status bar | 2d? | 2008-06-17 | 2008-06-19 | 120 | 49.68d | 0d | Ravi [75%] | 12h |  |
| 122 | 1.3.17.6 | Unit test case | 2.67d? | 2008-07-02 | 2008-07-07 | 121 | 49.81d | 0d | Ravi [75%] | 16h |  |
| 123 | 1.3.17.7 | Code Review/ Unit test case review/Design screen/ Screen usability reviews with Jan Ryles | 1.33d | 2008-07-23 | 2008-07-24 | 122 | 48.19d |  | Ravi [75%] | 8h |  |
| 124 | 1.3.18 | **Configure Measurements : Harmonic Power Value** | 11.54d? | 2008-05-28 | 2008-06-13 |  | 68.9d | 34.74d |  | 60h | P3 |
| 125 | 1.3.18.1 | Design Framework for Harmonic Power configuration | 1.54d? | 2008-05-28 | 2008-05-30 | 115 | 68.9d | 0d | Pallavi [65%] | 8h |  |
| 126 | 1.3.18.2 | Design Framework for Temporary Measurement flow | 2.31d? | 2008-05-30 | 2008-06-03 | 125 | 69.9d | 0d | Pallavi [65%] | 12h |  |
| 127 | 1.3.18.3 | Implement screen ( With Live Chart) | 1.54d? | 2008-06-03 | 2008-06-04 | 126 | 69.9d | 0d | Pallavi [65%] | 8h |  |
| 128 | 1.3.18.4 | Hooks the value change on screen with Temporary Measurement flow | 1.54d? | 2008-06-04 | 2008-06-06 | 127 | 69.9d | 0d | Pallavi [65%] | 8h |  |
| 129 | 1.3.18.5 | Display Harmonic power value Measurement Value on Status bar | 1.54d | 2008-06-06 | 2008-06-10 | 128 | 69.9d | 0d | Pallavi [65%] | 8h |  |
| 130 | 1.3.18.6 | Unit test case | 1.54d? | 2008-06-10 | 2008-06-11 | 129 | 69.9d | 0d | Pallavi [65%] | 8h |  |
| 131 | 1.3.18.7 | Code Review/ Unit test case review/Design screen/ Screen usability reviews with Jan Ryles | 1.54d | 2008-06-11 | 2008-06-13 | 130 | 69.9d | 0d | Pallavi [65%] | 8h |  |

| ID | WBS | Task | Duration | Start | Finish | Predecessors | Total slack | Free slack | Resources | Work | Text1 |
| --- | --- | --- | --- | --- | --- | --- | --- | --- | --- | --- | --- |
| 132 | 1.3.19 | **Configure Measurements : Side band power** | 30.39d? | 2008-05-13 | 2008-06-24 |  | 47.14d | 27.04d |  | 60h | P3 |
| 133 | 1.3.19.1 | Design Framework for Side band power configuration | 1.43d? | 2008-05-13 | 2008-05-14 | 118 | 47.14d | 0d | RKB [70%] | 8h |  |
| 134 | 1.3.19.2 | Design Framework for Temporary Measurement flow | 2.14d? | 2008-05-16 | 2008-05-21 | 133 | 45.43d | 0d | RKB [70%] | 12h |  |
| 135 | 1.3.19.3 | Implement screen ( With Live Chart) | 1.54d? | 2008-06-13 | 2008-06-16 | 131 | 69.9d | 0d | Pallavi [65%] | 8h |  |
| 136 | 1.3.19.4 | Hooks the value change on screen with Temporary Measurement flow | 1.54d? | 2008-06-16 | 2008-06-18 | 135 | 69.9d | 0d | Pallavi [65%] | 8h |  |
| 137 | 1.3.19.5 | Display side band power Measurement Value on Status bar | 1.54d | 2008-06-18 | 2008-06-19 | 136 | 69.9d | 0d | Pallavi [65%] | 8h |  |
| 138 | 1.3.19.6 | Unit test case | 1.54d? | 2008-06-19 | 2008-06-23 | 137 | 69.9d | 0d | Pallavi [65%] | 8h |  |
| 139 | 1.3.19.7 | Code Review/ Unit test case review/Design screen/ Screen usability reviews with Jan Ryles | 1.54d | 2008-06-23 | 2008-06-24 | 138 | 69.9d |  | Pallavi [65%] | 8h |  |
| 140 | 1.3.20 | **Configure Measurements : Band power value** | 45.05d? | 2008-05-21 | 2008-07-23 |  | 45.43d | 6.67d |  | 60h | P3 |
| 141 | 1.3.20.1 | Design framework for band power configuration | 1.43d? | 2008-05-21 | 2008-05-22 | 134 | 45.43d | 0d | RKB [70%] | 8h |  |
| 142 | 1.3.20.2 | Design Framework for Temporary Measurement flow | 2.14d? | 2008-05-28 | 2008-05-30 | 141 | 45.71d | 0d | RKB [70%] | 12h |  |
| 143 | 1.3.20.3 | Implement screen ( With Live Chart) | 1.33d? | 2008-06-10 | 2008-06-11 | 142 | 46.14d | 0d | Ravi [75%] | 8h |  |
| 144 | 1.3.20.4 | Hooks the value change on screen with Temporary Measurement flow | 1.33d? | 2008-06-16 | 2008-06-17 | 143 | 49.14d | 0d | Ravi [75%] | 8h |  |
| 145 | 1.3.20.5 | Display band power Measurement Value on Status bar | 1.33d | 2008-06-24 | 2008-06-25 | 144 | 49.14d | 0d | Ravi [75%] | 8h |  |
| 146 | 1.3.20.6 | Unit test case | 1.33d? | 2008-07-01 | 2008-07-02 | 145 | 49.52d | 0d | Ravi [75%] | 8h |  |
| 147 | 1.3.20.7 | Code Review/ Unit test case review/Design screen/ Screen usability reviews with Jan Ryles | 1.33d | 2008-07-21 | 2008-07-23 | 146 | 49.52d |  | Ravi [75%] | 8h |  |
| 148 | 1.3.21 | **File Service** | 7.14d? | 2008-06-05 | 2008-06-16 |  | 76d | 33.14d |  | 20h | P3 |
| 149 | 1.3.21.1 | Define File/Directory structure hierarchy | 2.86d? | 2008-06-05 | 2008-06-10 | 142 | 78d | 0d | RKB [70%] | 16h |  |
| 150 | 1.3.21.2 | Review with team | 0.71d? | 2008-06-13 | 2008-06-16 | 149 | 76d |  | RKB [70%] | 4h |  |
| 151 | 1.3.22 | **Linear spectrum Chart** | 77.29d? | 2008-04-01 | 2008-07-17 |  | 52.86d | 7.33d |  | 104h | P2 |
| 152 | 1.3.22.1 | Implement Chart View Object | 3.57d? | 2008-04-01 | 2008-04-07 | 68 | 52.86d | 0d | Anurag [70%] | 20h |  |
| 153 | 1.3.22.2 | Support multiple X-Axis Type ( Lin, Log) | 2.86d? | 2008-04-07 | 2008-04-09 | 152 | 52.86d | 0d | Anurag [70%] | 16h |  |
| 154 | 1.3.22.3 | Support multiple Data point units | 1.43d? | 2008-04-09 | 2008-04-11 | 153 | 52.86d | 0d | Anurag [70%] | 8h |  |
| 155 | 1.3.22.4 | Y-Axis Scaling ( Auto Sclaing) Display only | 1.43d? | 2008-04-11 | 2008-04-15 | 154 | 51.86d | 0d | Anurag [70%] | 8h |  |
| 156 | 1.3.22.5 | Multiple channels support | 2.86d? | 2008-04-15 | 2008-04-21 | 155 | 50.86d | 0d | Anurag [70%] | 16h |  |
| 157 | 1.3.22.6 | Integrate with data push mechnaism | 1.43d? | 2008-04-21 | 2008-04-23 | 156 | 50.86d | 0d | Anurag [70%] | 8h |  |
| 158 | 1.3.22.7 | unit testing | 2.86d? | 2008-04-23 | 2008-04-25 | 157 | 50.86d | 0d | Anurag [70%] | 16h |  |
| 159 | 1.3.22.8 | Code Review/ Unit test case review/Design screen/ Screen usability reviews with Jan Ryles | 2.14d | 2008-07-15 | 2008-07-17 | 158 | 52.86d |  | Anurag [70%] | 12h |  |

| ID | WBS | Task | Duration | Start | Finish | Predecessors | Total slack | Free slack | Resources | Work | Text1 |
| --- | --- | --- | --- | --- | --- | --- | --- | --- | --- | --- | --- |
| 160 | 1.3.23 | **Common Graph Cordinate implementation** | 56.71d? | 2008-04-25 | 2008-07-15 |  | 55d | 9.48d |  | 64h | p2 |
| 161 | 1.3.23.1 | Linear Magnitude | 1.43d? | 2008-04-25 | 2008-04-29 | 158 | 56d | 0d | Anurag [70%] | 8h |  |
| 162 | 1.3.23.2 | Log Magnitude | 1.43d? | 2008-04-29 | 2008-04-30 | 161 | 56d | 0d | Anurag [70%] | 8h |  |
| 163 | 1.3.23.3 | DB Magnitude | 1.43d? | 2008-04-30 | 2008-05-05 | 162 | 55d | 0d | Anurag [70%] | 8h |  |
| 164 | 1.3.23.4 | Real Imagainary | 1.43d? | 2008-05-05 | 2008-05-06 | 163 | 55d | 0d | Anurag [70%] | 8h |  |
| 165 | 1.3.23.5 | Phase, UnWrapped Phase | 1.43d? | 2008-05-06 | 2008-05-08 | 164 | 55d | 0d | Anurag [70%] | 8h |  |
| 166 | 1.3.23.6 | Group Delay | 1.43d? | 2008-05-08 | 2008-05-09 | 165 | 55d | 0d | Anurag [70%] | 8h |  |
| 167 | 1.3.23.7 | Polar | 1.43d? | 2008-05-09 | 2008-05-12 | 166 | 55d | 0d | Anurag [70%] | 8h |  |
| 168 | 1.3.23.8 | Code Review/ Unit test case review/Design screen/ Screen usability reviews with Jan Ryles | 1.43d? | 2008-07-14 | 2008-07-15 | 167 | 55d |  | Anurag [70%] | 8h |  |
| 169 | 1.3.24 | **Nyquist Chart** | 44.29d? | 2008-05-12 | 2008-07-14 |  | 55.86d | 10.91d |  | 40h | P2 |
| 170 | 1.3.24.1 | Implement Chart View Object | 1.43d? | 2008-05-12 | 2008-05-14 | 167 | 55.86d | 0d | Anurag [70%] | 8h |  |
| 171 | 1.3.24.2 | Support multiple X-Axis Type ( Lin, Log) & Y-Axis scaling | 1.43d? | 2008-05-14 | 2008-05-15 | 170 | 55.86d | 0d | Anurag [70%] | 8h |  |
| 172 | 1.3.24.3 | Support multiple Data point units | 1.43d? | 2008-05-15 | 2008-05-19 | 171 | 55.86d | 0d | Anurag [70%] | 8h |  |
| 173 | 1.3.24.4 | Multiple channels support\Marker support | 0.71d? | 2008-05-19 | 2008-05-19 | 172 | 55.86d | 0d | Anurag [70%] | 4h |  |
| 174 | 1.3.24.5 | Unit test case | 1.43d? | 2008-05-19 | 2008-05-21 | 173 | 55.86d | 0d | Anurag [70%] | 8h |  |
| 175 | 1.3.24.6 | Code Review/ Unit test case review/Design screen/ Screen usability reviews with Jan Ryles | 0.71d? | 2008-07-11 | 2008-07-14 | 174 | 56.43d |  | Anurag [70%] | 4h |  |
| 176 | 1.3.25 | **Nichols chart** | 7.14d? | 2008-05-21 | 2008-05-30 |  | 55.86d | 41.62d |  | 40h | P2 |
| 177 | 1.3.25.1 | Implement Chart View Object | 1.43d? | 2008-05-21 | 2008-05-22 | 174 | 55.86d | 0d | Anurag [70%] | 8h |  |
| 178 | 1.3.25.2 | Support multiple X-Axis Type ( Lin, Log) & Y-Axis scaling | 1.43d? | 2008-05-22 | 2008-05-26 | 177 | 55.86d | 0d | Anurag [70%] | 8h |  |
| 179 | 1.3.25.3 | Support multiple Data point units | 0.71d? | 2008-05-26 | 2008-05-26 | 178 | 55.86d | 0d | Anurag [70%] | 4h |  |
| 180 | 1.3.25.4 | Multiple channels support\Marker support | 1.43d? | 2008-05-26 | 2008-05-28 | 179 | 55.86d | 0d | Anurag [70%] | 8h |  |
| 181 | 1.3.25.5 | Unit test case | 1.43d? | 2008-05-28 | 2008-05-29 | 180 | 55.86d | 0d | Anurag [70%] | 8h |  |
| 182 | 1.3.25.6 | Code Review/ Unit test case review/Design screen/ Screen usability reviews with Jan Ryles | 0.71d? | 2008-05-29 | 2008-05-30 | 181 | 56.86d | 0d | Anurag [70%] | 4h |  |
| 183 | 1.3.26 | **WaterFall** | 30d? | 2008-05-30 | 2008-07-11 |  | 56.86d | 11.62d |  | 96h | P2 |
| 184 | 1.3.26.1 | Implement Chart View Object | 4.29d? | 2008-05-30 | 2008-06-05 | 182 | 56.86d | 0d | Anurag [70%] | 24h |  |
| 185 | 1.3.26.2 | Z-Axis Range support | 3.57d? | 2008-06-05 | 2008-06-11 | 184 | 56.86d | 0d | Anurag [70%] | 20h |  |
| 186 | 1.3.26.3 | Skew angle | 2.86d? | 2008-06-11 | 2008-06-16 | 185 | 56.86d | 0d | Anurag [70%] | 16h |  |
| 187 | 1.3.26.4 | Line clipping | 2.86d? | 2008-06-16 | 2008-06-19 | 186 | 57.86d | 0d | Anurag [70%] | 16h |  |
| 188 | 1.3.26.5 | Unit test case | 2.86d? | 2008-06-19 | 2008-06-23 | 187 | 57.86d | 0d | Anurag [70%] | 16h |  |
| 189 | 1.3.26.6 | Code Review/ Unit test case review/Design screen/ Screen usability reviews with Jan Ryles | 0.71d? | 2008-07-10 | 2008-07-11 | 188 | 57.14d |  | Anurag [70%] | 4h |  |

| ID | WBS | Task | Duration | Start | Finish | Predecessors | Complete | Remaining | Total slack | Free slack | Constraint | Resources | Work | Actual work | Text1 |
| --- | --- | --- | --- | --- | --- | --- | --- | --- | --- | --- | --- | --- | --- | --- | --- |
| 190 | 1.3.27 | **Spectrogram** | 12.86d? | 2008-06-23 | 2008-07-10 |  |  |  | 57.86d | 12.33d |  |  | 72h |  | P2 |
| 191 | 1.3.27.1 | Implement Chart View Object | 5.71d? | 2008-06-23 | 2008-07-01 | 188 |  |  | 57.86d | 0d |  | Anurag [70%] | 32h |  |  |
| 192 | 1.3.27.2 | multiple color intensity | 1.43d? | 2008-07-01 | 2008-07-03 | 191 |  |  | 57.86d | 0d |  | Anurag [70%] | 8h |  |  |
| 193 | 1.3.27.3 | Z-Axis Range , Top, Bottom | 2.14d? | 2008-07-03 | 2008-07-07 | 192 |  |  | 57.86d | 0d |  | Anurag [70%] | 12h |  |  |
| 194 | 1.3.27.4 | Unit test case | 2.14d? | 2008-07-07 | 2008-07-09 | 193 |  |  | 57.86d | 0d |  | Anurag [70%] | 12h |  |  |
| 195 | 1.3.27.5 | Code Review/ Unit test case review/Design screen/ Screen usability reviews with Jan Ryles | 1.43d? | 2008-07-09 | 2008-07-10 | 194 |  |  | 57.86d |  |  | Anurag [70%] | 8h |  |  |
| 196 | 1.4 | **Analysis Measurement Layer** | 118.86d? | 2008-02-18 A | 2008-07-31 |  | 2% | 116.53d? | 43.85d |  |  |  | 612h | 12h |  |
| 197 | 1.4.1 | **Error & Exception** | 2.86d? | 2008-02-18 A | 2008-02-20 |  | 75% | 0.71d? | 43.71d | 24.14d |  |  | 16h | 12h | P1 |
| 198 | 1.4.1.1 | Define Error code for AL | 1.43d? | 2008-02-18 A | 2008-02-19 A |  | 100% |  |  |  | start no earlier than 2008-02-18 | Himanshu [70%] | 8h | 8h |  |
| 199 | 1.4.1.2 | Provide Error code Vs Description string | 1.43d? | 2008-02-19 A | 2008-02-20 | 198 | 50% | 0.71d? | 43.71d | 0d |  | Himanshu [70%] | 8h | 4h |  |
| 200 | 1.4.2 | **Analyzer mode management :: FFT Analyzer** | 8.43d? | 2008-04-03 | 2008-04-16 |  |  |  | 44.43d |  |  |  | 48h |  | P2 |
| 201 | 1.4.2.1 | Design interface/Framework for mode change | 1.43d? | 2008-04-09 | 2008-04-11 | 23 |  |  | 75.86d | 0d |  | RKB [70%] | 8h |  |  |
| 202 | 1.4.2.2 | Review with tech leads | 0.71d? | 2008-04-15 | 2008-04-16 | 201 |  |  | 77.71d | 0d |  | RKB [70%] | 4h |  |  |
| 203 | 1.4.2.3 | implementation | 4.29d? | 2008-04-03 | 2008-04-10 | 60 |  |  | 44.43d | 0d |  | Himanshu [70%] | 24h |  |  |
| 204 | 1.4.2.4 | Unit testing | 1.43d? | 2008-04-10 | 2008-04-11 | 203 |  |  | 44.43d | 0d |  | Himanshu [70%] | 8h |  |  |
| 205 | 1.4.2.5 | Code Review | 0.71d | 2008-04-11 | 2008-04-15 | 204 |  |  | 43.43d | 0d |  | Himanshu [70%] | 4h |  |  |
| 206 | 1.4.3 | **Trace management** | 14.14d? | 2008-04-15 | 2008-05-05 |  |  |  | 43.43d |  |  |  | 92h |  | P2 |
| 207 | 1.4.3.1 | Design Interface | 2.86d? | 2008-04-22 | 2008-04-24 | 202 |  |  | 78.57d | 0d |  | RKB [70%] | 16h |  |  |
| 208 | 1.4.3.2 | Review interface design with Team leads | 1.43d? | 2008-04-24 | 2008-04-28 | 207 |  |  | 78.57d | 0d |  | RKB [70%] | 8h |  |  |
| 209 | 1.4.3.3 | Implementation of Trace Management | 5.71d? | 2008-04-15 | 2008-04-23 | 205 |  |  | 42.43d | 0d |  | Himanshu [70%] | 32h |  |  |
| 210 | 1.4.3.4 | Unit testing | 5.71d? | 2008-04-24 | 2008-05-02 | 209 |  |  | 41.43d | 0d |  | Himanshu [70%] | 32h |  |  |
| 211 | 1.4.3.5 | Code Review | 0.71d? | 2008-05-02 | 2008-05-05 | 210 |  |  | 41.43d | 0d |  | Himanshu [70%] | 4h |  |  |
| 212 | 1.4.4 | **Measurement Flow management Framework** | 13.57d? | 2008-04-30 | 2008-05-20 |  |  |  | 44.28d |  |  |  | 84h |  | P2 |
| 213 | 1.4.4.1 | Design Interface | 2.86d? | 2008-04-30 | 2008-05-06 | 208 |  |  | 78.57d | 0d |  | RKB [70%] | 16h |  |  |
| 214 | 1.4.4.2 | Review interface design with Team leads | 1.43d? | 2008-05-09 | 2008-05-13 | 213 |  |  | 77d | 0d |  | RKB [70%] | 8h |  |  |
| 215 | 1.4.4.3 | Implementation of Measurement Flow Management | 5.71d? | 2008-05-05 | 2008-05-13 | 211 |  |  | 41.43d | 0d |  | Himanshu [70%] | 32h |  |  |
| 216 | 1.4.4.4 | Unit testing | 4.29d? | 2008-05-13 | 2008-05-19 | 215 |  |  | 41.43d | 0d |  | Himanshu [70%] | 24h |  |  |
| 217 | 1.4.4.5 | Code Review | 0.71d? | 2008-05-19 | 2008-05-20 | 216 |  |  | 41.43d | 0d |  | Himanshu [70%] | 4h |  |  |

| ID | WBS | Task | Duration | Start | Finish | Predecessors | Total slack | Free slack | Resources | Work | Text1 |
| --- | --- | --- | --- | --- | --- | --- | --- | --- | --- | --- | --- |
| 218 | 1.4.5 | **Measurement Flow: Linear spectrum** | 7.57d? | 2008-05-14 | 2008-05-26 |  | 44.71d |  |  | 36h | P2 |
| 219 | 1.4.5.1 | Design Interface | 1.43d? | 2008-05-14 | 2008-05-16 | 214 | 77d | 0d | RKB [70%] | 8h |  |
| 220 | 1.4.5.2 | Review interface design with Team leads | 0.71d? | 2008-05-16 | 2008-05-16 | 219 | 77d | 0d | RKB [70%] | 4h |  |
| 221 | 1.4.5.3 | Implementation of Measurement Flow | 2.14d? | 2008-05-20 | 2008-05-22 | 217 | 41.43d | 0d | Himanshu [70%] | 12h |  |
| 222 | 1.4.5.4 | Unit testing | 1.43d? | 2008-05-22 | 2008-05-23 | 221 | 41.43d | 0d | Himanshu [70%] | 8h |  |
| 223 | 1.4.5.5 | Code Review | 0.71d? | 2008-05-23 | 2008-05-26 | 222 | 41.43d | 0d | Himanshu [70%] | 4h |  |
| 224 | 1.4.6 | **Measurement : Harmonic Power, THD** | 14.72d? | 2008-05-22 | 2008-06-12 |  | 43.29d | 35.57d |  | 92h | P3 |
| 225 | 1.4.6.1 | Design Interface | 2.86d? | 2008-05-22 | 2008-05-27 | 220 | 77.86d | 0d | RKB [70%] | 16h |  |
| 226 | 1.4.6.2 | Review interface design with Team leads | 0.71d? | 2008-05-27 | 2008-05-28 | 225 | 77.86d | 0d | RKB [70%] | 4h |  |
| 227 | 1.4.6.3 | Implementation of Measurement Flow | 5.71d? | 2008-05-26 | 2008-06-03 | 223 | 41.43d | 0d | Himanshu [70%] | 32h |  |
| 228 | 1.4.6.4 | Intermediate result | 2.14d? | 2008-06-03 | 2008-06-05 | 227 | 41.43d | 0d | Himanshu [70%] | 12h |  |
| 229 | 1.4.6.5 | Unit testing | 4.29d? | 2008-06-05 | 2008-06-11 | 228 | 41.43d | 0d | Himanshu [70%] | 24h |  |
| 230 | 1.4.6.6 | Code Review | 0.71d? | 2008-06-11 | 2008-06-12 | 229 | 41.43d | 0d | Himanshu [70%] | 4h |  |
| 231 | 1.4.7 | **Measurement : Side band Power** | 16.86d? | 2008-05-30 | 2008-06-24 |  | 50.43d | 27.72d |  | 56h | P3 |
| 232 | 1.4.7.1 | Design Interface | 1.43d? | 2008-05-30 | 2008-06-02 | 226 | 76.43d | 0d | RKB [70%] | 8h |  |
| 233 | 1.4.7.2 | Review interface design with Team leads | 0.71d? | 2008-06-02 | 2008-06-03 | 232 | 76.43d | 0d | RKB [70%] | 4h |  |
| 234 | 1.4.7.3 | Implementation of Measurement Flow | 2.14d? | 2008-06-12 | 2008-06-16 | 230 | 41.43d | 0d | Himanshu [70%] | 12h |  |
| 235 | 1.4.7.4 | Intermediate result | 2.14d? | 2008-06-16 | 2008-06-18 | 234 | 41.43d | 0d | Himanshu [70%] | 12h |  |
| 236 | 1.4.7.5 | Unit testing | 2.86d? | 2008-06-18 | 2008-06-23 | 235 | 41.43d | 0d | Himanshu [70%] | 16h |  |
| 237 | 1.4.7.6 | Code Review | 0.71d? | 2008-06-23 | 2008-06-24 | 236 | 42.43d | 0d | Himanshu [70%] | 4h |  |
| 238 | 1.4.8 | **Measurement : Band Power** | 42.43d? | 2008-06-03 | 2008-07-31 |  | 43.85d | 0d |  | 56h | P3 |
| 239 | 1.4.8.1 | Design Interface | 1.43d? | 2008-06-03 | 2008-06-04 | 233 | 76.43d | 0d | RKB [70%] | 8h |  |
| 240 | 1.4.8.2 | Review interface design with Team leads | 0.71d? | 2008-06-04 | 2008-06-05 | 239 | 76.43d | 0d | RKB [70%] | 4h |  |
| 241 | 1.4.8.3 | Implementation of Measurement Flow | 2.14d? | 2008-06-24 | 2008-06-26 | 237 | 42.43d | 0d | Himanshu [70%] | 12h |  |
| 242 | 1.4.8.4 | Intermediate result | 2.14d? | 2008-06-26 | 2008-06-30 | 241 | 42.43d | 0d | Himanshu [70%] | 12h |  |
| 243 | 1.4.8.5 | Unit testing | 2.86d? | 2008-06-30 | 2008-07-03 | 242 | 42.43d | 0d | Himanshu [70%] | 16h |  |
| 244 | 1.4.8.6 | Code Review | 0.71d? | 2008-07-29 | 2008-07-31 | 243 | 43.85d |  | Himanshu [70%] | 4h |  |

| ID | WBS | Task | Duration | Start | Finish | Predecessors | Complete | Remaining | Total slack | Free slack | Resources | Work | Actual work | Text1 |
| --- | --- | --- | --- | --- | --- | --- | --- | --- | --- | --- | --- | --- | --- | --- |
| 245 | 1.4.9 | **Unit Conversion** | 36.86d? | 2008-06-10 | 2008-07-31 |  |  |  | 43.43d | 0.57d |  | 132h |  | P3 |
| 246 | 1.4.9.1 | Design interface for unit conversion | 2.86d? | 2008-06-10 | 2008-06-13 | 240 |  |  | 76.71d | 0d | RKB [70%] | 16h |  |  |
| 247 | 1.4.9.2 | Review with tech leads | 0.71d? | 2008-06-13 | 2008-06-13 | 246 |  |  | 76.71d |  | RKB [70%] | 4h |  |  |
| 248 | 1.4.9.3 | Implementation | 5.71d? | 2008-07-03 | 2008-07-11 | 243 |  |  | 42.43d | 0d | Himanshu [70%] | 32h |  |  |
| 249 | 1.4.9.4 | Unit testing | 4.29d? | 2008-07-11 | 2008-07-17 | 248 |  |  | 43.43d | 0d | Himanshu [70%] | 24h |  |  |
| 250 | 1.4.9.5 | How unit will ripple down | 8.57d? | 2008-07-17 | 2008-07-29 | 249 |  |  | 43.43d | 0d | Himanshu [70%] | 48h |  |  |
| 251 | 1.4.9.6 | Code Review | 1.43d | 2008-07-29 | 2008-07-31 | 250 |  |  | 43.43d |  | Himanshu [70%] | 8h |  |  |
| 252 | 1.5 | **Measurement Layer** | 86.38d? | 2008-02-04 A | 2008-06-03 |  | 31% | 59.56d? | 86.33d |  |  | 1440h | 458.4h |  |
| 253 | 1.5.1 | **Managed interface definition** | 27.43d? | 2008-03-04 A | 2008-04-11 |  | 25% | 20.57d? | 122.57d |  |  | 112h | 28h |  |
| 254 | 1.5.1.1 | **Defining (first pass)interfaces for all MVP meas** | 2.86d | 2008-03-04 A | 2008-03-07 A |  | 100% |  |  |  |  | 16h | 16h | P1 |
| 255 | 1.5.1.1.1 | Review with team & Incorporate Review decisions | 2.86d | 2008-03-04 A | 2008-03-07 A | 286 | 100% |  |  |  | Kapil [70%] | 16h | 16h |  |
| 256 | 1.5.1.2 | **Transforms** | 3.86d? | 2008-03-18 A | 2008-03-24 |  | 75% | 0.96d? | 87.28d |  |  | 16h | 12h |  |
| 257 | 1.5.1.2.1 | FFT | 0.71d? | 2008-03-18 A | 2008-03-19 A | 272 | 100% |  |  |  | Kapil [70%] | 4h | 4h | P1 |
| 258 | 1.5.1.2.2 | Windowing | 0.71d | 2008-03-19 A | 2008-03-20 A | 257 | 100% |  |  |  | Kapil [70%] | 4h | 4h | P1 |
| 259 | 1.5.1.2.3 | Window coeff for IE needs, Managed & Unmanaged | 1.43d? | 2008-03-20 A | 2008-03-24 | 258 | 50% | 0.71d? | 87.28d | 0d | Kapil [70%] | 8h | 4h | P1 |
| 260 | 1.5.1.3 | **Spectrums** | 5d? | 2008-03-24 | 2008-03-31 |  |  |  | 87.28d |  |  | 20h |  |  |
| 261 | 1.5.1.3.1 | Linear | 0.71d | 2008-03-24 | 2008-03-25 | 259 |  |  | 87.28d | 0d | Kapil [70%] | 4h |  | P1 |
| 262 | 1.5.1.3.2 | Power | 0.71d? | 2008-03-25 | 2008-03-26 | 261 |  |  | 87.28d | 0d | Kapil [70%] | 4h |  | P1 |
| 263 | 1.5.1.3.3 | Phase | 0.71d? | 2008-03-27 | 2008-03-28 | 268 |  |  | 87.28d | 0d | Kapil [70%] | 4h |  | P2 |
| 264 | 1.5.1.3.4 | Auto power | 0.71d? | 2008-03-28 | 2008-03-28 | 263 |  |  | 87.28d | 0d | Kapil [70%] | 4h |  | P2 |
| 265 | 1.5.1.3.5 | Cross power | 0.71d? | 2008-03-28 | 2008-03-31 | 264 |  |  | 87.28d | 0d | Kapil [70%] | 4h |  | P2 |
| 266 | 1.5.1.4 | **Distortion** | 1.43d? | 2008-03-26 | 2008-03-27 |  |  |  | 87.28d |  |  | 8h |  |  |
| 267 | 1.5.1.4.1 | THD | 0.71d? | 2008-03-26 | 2008-03-26 | 262 |  |  | 87.28d | 0d | Kapil [70%] | 4h |  | P2 |
| 268 | 1.5.1.4.2 | THD + Noise | 0.71d? | 2008-03-26 | 2008-03-27 | 267 |  |  | 87.28d | 0d | Kapil [70%] | 4h |  | P2 |
| 269 | 1.5.1.5 | Averaging | 4.29d? | 2008-03-31 | 2008-04-04 | 265 |  |  | 87.28d | 0d | Kapil [70%] | 24h |  | P2 |
| 270 | 1.5.1.6 | Coherence | 1.43d? | 2008-04-04 | 2008-04-08 | 269 |  |  | 87.28d | 0d | Kapil [70%] | 8h |  | P2 |

Notes:
- 254: MVP meas defined
- 259: Need to understand what IE needs

| ID | WBS | Task | Duration | Start | Finish | Predecessors | Complete | Remaining | Total slack | Free slack | Resources | Work | Actual work | Text1 |
| --- | --- | --- | --- | --- | --- | --- | --- | --- | --- | --- | --- | --- | --- | --- |
| 271 | 1.5.1.7 | **Signal Generation** | 0.71d? | 2008-03-17 | 2008-03-18 |  |  |  | 140d |  |  | 4h |  |  |
| 272 | 1.5.1.7.1 | Sine | 0.71d? | 2008-03-17 | 2008-03-18 | 280 |  |  | 140d | 5.29d | Kapil [70%] | 4h |  | P1 |
| 273 | 1.5.1.8 | **Swept Sine** | 2.86d? | 2008-04-08 | 2008-04-11 |  |  |  | 87.28d |  |  | 16h |  |  |
| 274 | 1.5.1.8.1 | Frequency Response | 1.43d? | 2008-04-08 | 2008-04-09 | 270 |  |  | 87.28d | 0d | Kapil [70%] | 8h |  | P2 |
| 275 | 1.5.1.8.2 | Group Delay | 1.43d? | 2008-04-09 | 2008-04-11 | 274 |  |  | 87.28d | 0d | Kapil [70%] | 8h |  | P2 |
| 276 | 1.5.2 | **Data model design** | 6.43d? | 2008-03-07 A | 2008-03-17 |  | 89% | 0.71d? | 140.71d | 6d |  | 36h | 32h | P1 |
| 277 | 1.5.2.1 | Review the current design/implementation | 0.71d? | 2008-03-07 A | 2008-03-10 A | 255 | 100% |  |  |  | Kapil [70%] | 4h | 4h |  |
| 278 | 1.5.2.2 | Complete the implementation | 2.86d? | 2008-03-10 A | 2008-03-13 A | 277 | 100% |  |  |  | Kapil [70%] | 16h | 16h |  |
| 279 | 1.5.2.3 | Review with the team & update | 1.43d? | 2008-03-13 A | 2008-03-14 | 278 | 50% | 0.71d? | 142.14d |  | Kapil [70%] | 8h | 4h |  |
| 280 | 1.5.2.4 | Build some test cases | 1.43d? | 2008-03-14 A | 2008-03-17 A | 279 | 100% |  |  |  | Kapil [70%] | 8h | 8h |  |
| 281 | 1.5.3 | **Infrastrucutre development** | 12.14d? | 2008-02-15 A | 2008-03-04 |  | 80% | 2.43d? | 150d | 15.29d |  | 68h | 54.4h | P1 |
| 282 | 1.5.3.1 | VS Project setup and tuning | 2.86d? | 2008-02-15 A | 2008-02-20 A | 449 | 100% |  |  |  | Kapil [70%] | 16h | 16h |  |
| 283 | 1.5.3.2 | Performance test framework and setup | 2.86d? | 2008-02-20 A | 2008-02-25 | 282 | 40% | 1.71d? | 155.71d | 0d | Kapil [70%] | 16h | 6.4h |  |
| 284 | 1.5.3.3 | Verfication test process and guidelines | 3.57d? | 2008-02-25 A | 2008-02-28 | 283 | 80% | 0.71d? | 152.86d |  | Kapil [70%] | 20h | 16h |  |
| 285 | 1.5.3.4 | Documentation tool setup for library users | 0.71d? | 2008-02-28 A | 2008-02-29 A | 284 | 100% |  |  |  | Kapil [70%] | 4h | 4h |  |
| 286 | 1.5.3.5 | FxCop setup | 2.14d? | 2008-02-29 A | 2008-03-04 A | 285 | 100% |  |  |  | Kapil [70%] | 12h | 12h |  |
| 287 | 1.5.4 | **Research/Implementation** | 53.78d? | 2008-03-07 A | 2008-05-21 |  | 1% | 53.32d? | 93.85d |  |  | 468h | 4h |  |
| 288 | 1.5.4.1 | **FFT** | 10.57d? | 2008-04-11 | 2008-04-25 |  |  |  | 86.28d |  |  | 48h |  | P2 |
| 289 | 1.5.4.1.1 | Review meas catalog & update | 0.71d? | 2008-04-11 | 2008-04-11 | 275 |  |  | 87.28d | 0d | Kapil [70%] | 4h |  |  |
| 290 | 1.5.4.1.2 | Review managed & Native interface definitions | 0.71d? | 2008-04-11 | 2008-04-15 | 289 |  |  | 86.28d | 0d | Kapil [70%] | 4h |  |  |
| 291 | 1.5.4.1.3 | Implementation | 2.14d? | 2008-04-15 | 2008-04-17 | 290 |  |  | 86.28d | 0d | Kapil [70%] | 12h |  |  |
| 292 | 1.5.4.1.4 | Unit test the code | 0.71d? | 2008-04-17 | 2008-04-21 | 291 |  |  | 86.28d | 0d | Kapil [70%] | 4h |  |  |
| 293 | 1.5.4.1.5 | **Verifcation** | 2.14d? | 2008-04-21 | 2008-04-23 |  |  |  | 86.28d |  |  | 12h |  |  |
| 294 | 1.5.4.1.5.1 | Develop the verification code in Matlab | 0.71d? | 2008-04-21 | 2008-04-22 | 292 |  |  | 86.28d | 0d | Kapil [70%] | 4h |  |  |
| 295 | 1.5.4.1.5.2 | Define the test input data & pass to ML & MATLAB | 0.71d? | 2008-04-22 | 2008-04-22 | 294 |  |  | 86.28d | 0d | Kapil [70%] | 4h |  |  |
| 296 | 1.5.4.1.5.3 | Compare the outputs | 0.71d? | 2008-04-22 | 2008-04-23 | 295 |  |  | 86.28d | 0d | Kapil [70%] | 4h |  |  |
| 297 | 1.5.4.1.6 | Measure performance & document mesaurements | 1.43d? | 2008-04-23 | 2008-04-25 | 296 |  |  | 86.28d | 0d | Kapil [70%] | 8h |  |  |
| 298 | 1.5.4.1.7 | Interface definition, code, Nunit , Result & Doc review | 0.71d? | 2008-04-25 | 2008-04-25 | 297 |  |  | 86.28d | 0d | Kapil [70%] | 4h |  |  |

| ID | WBS | Task | Duration | Start | Finish | Predecessors | Total slack | Free slack | Resources | Work | Text1 |
| --- | --- | --- | --- | --- | --- | --- | --- | --- | --- | --- | --- |
| 299 | 1.5.4.2 | **Windowing** | 8.69d? | 2008-03-18 | 2008-03-31 |  | 131.25d | 85.73d |  | 40h | P1 |
| 300 | 1.5.4.2.1 | Review meas catalog & update | 0.77d? | 2008-03-18 | 2008-03-19 | 403 | 132.25d | 0d | ShashiP [65%] | 4h |  |
| 301 | 1.5.4.2.2 | Review managed & Native interface definitions | 0.77d? | 2008-03-19 | 2008-03-20 | 300 | 132.25d | 0d | ShashiP [65%] | 4h |  |
| 302 | 1.5.4.2.3 | Write code | 1.54d? | 2008-03-20 | 2008-03-24 | 301 | 131.25d | 0d | ShashiP [65%] | 8h |  |
| 303 | 1.5.4.2.4 | Unit test the code | 0.77d? | 2008-03-24 | 2008-03-25 | 302 | 131.25d | 0d | ShashiP [65%] | 4h |  |
| 304 | 1.5.4.2.5 | **Verifcation** | 2.31d? | 2008-03-25 | 2008-03-27 |  | 131.25d |  |  | 12h |  |
| 305 | 1.5.4.2.5.1 | Develop the verification code in Matlab | 0.77d? | 2008-03-25 | 2008-03-26 | 303 | 131.25d | 0d | ShashiP [65%] | 4h |  |
| 306 | 1.5.4.2.5.2 | Define the test input data & pass to ML & MATLAB | 0.77d? | 2008-03-26 | 2008-03-27 | 305 | 131.25d | 0d | ShashiP [65%] | 4h |  |
| 307 | 1.5.4.2.5.3 | Compare the outputs | 0.77d? | 2008-03-27 | 2008-03-27 | 306 | 131.25d | 0d | ShashiP [65%] | 4h |  |
| 308 | 1.5.4.2.6 | Measure performance & document mesaurements | 0.77d? | 2008-03-27 | 2008-03-28 | 307 | 131.25d | 0d | ShashiP [65%] | 4h |  |
| 309 | 1.5.4.2.7 | Interface definition, code, Nunit , Result & Doc review | 0.77d? | 2008-03-28 | 2008-03-31 | 308 | 131.25d |  | ShashiP [65%] | 4h |  |
| 310 | 1.5.4.3 | **Spectrums** | 28.17d? | 2008-04-11 | 2008-05-21 |  | 87.7d |  |  | 116h |  |
| 311 | 1.5.4.3.1 | **Linear** | 7.43d? | 2008-04-25 | 2008-05-07 |  | 86.28d | 59.05d |  | 36h | P2 |
| 312 | 1.5.4.3.1.1 | Review meas catalog & update | 0.71d? | 2008-04-25 | 2008-04-28 | 298 | 86.28d | 0d | Kapil [70%] | 4h |  |
| 313 | 1.5.4.3.1.2 | Review managed & Native interface definitions | 0.71d? | 2008-04-28 | 2008-04-29 | 312 | 86.28d | 0d | Kapil [70%] | 4h |  |
| 314 | 1.5.4.3.1.3 | Write code | 0.71d? | 2008-04-29 | 2008-04-29 | 313 | 86.28d | 0d | Kapil [70%] | 4h |  |
| 315 | 1.5.4.3.1.4 | Unit test the code | 0.71d? | 2008-04-29 | 2008-04-30 | 314 | 86.28d | 0d | Kapil [70%] | 4h |  |
| 316 | 1.5.4.3.1.5 | **Verifcation** | 3.14d? | 2008-04-30 | 2008-05-05 |  | 85.28d |  |  | 12h |  |
| 317 | 1.5.4.3.1.5.1 | Develop the verification code in Matlab | 0.71d? | 2008-04-30 | 2008-05-02 | 315 | 85.28d | 0d | Kapil [70%] | 4h |  |
| 318 | 1.5.4.3.1.5.2 | Define the test input data & pass to ML & MATLAB | 0.71d? | 2008-05-02 | 2008-05-05 | 317 | 85.28d | 0d | Kapil [70%] | 4h |  |
| 319 | 1.5.4.3.1.5.3 | Compare the outputs | 0.71d? | 2008-05-05 | 2008-05-05 | 318 | 85.28d | 0d | Kapil [70%] | 4h |  |
| 320 | 1.5.4.3.1.6 | Measure performance & document mesaurements | 0.71d? | 2008-05-05 | 2008-05-06 | 319 | 85.28d | 0d | Kapil [70%] | 4h |  |
| 321 | 1.5.4.3.1.7 | Interface definition, code, Nunit , Result & Doc review | 0.71d? | 2008-05-06 | 2008-05-07 | 320 | 85.28d | 0d | Kapil [70%] | 4h |  |
| 322 | 1.5.4.3.2 | **Power** | 10.71d? | 2008-05-07 | 2008-05-21 |  | 86.28d | 48.33d |  | 36h | P2 |
| 323 | 1.5.4.3.2.1 | Review meas catalog & update | 0.71d? | 2008-05-07 | 2008-05-07 | 321 | 86.28d | 0d | Kapil [70%] | 4h |  |
| 324 | 1.5.4.3.2.2 | Review managed & Native interface definitions | 0.71d? | 2008-05-07 | 2008-05-08 | 323 | 86.28d | 0d | Kapil [70%] | 4h |  |
| 325 | 1.5.4.3.2.3 | Write code | 0.71d? | 2008-05-08 | 2008-05-09 | 324 | 86.28d | 0d | Kapil [70%] | 4h |  |
| 326 | 1.5.4.3.2.4 | Unit test the code | 0.71d? | 2008-05-09 | 2008-05-12 | 325 | 86.28d | 0d | Kapil [70%] | 4h |  |

| ID | WBS | Task | Duration | Start | Finish | Predecessors | Total slack | Free slack | Resources | Work | Text1 |
| --- | --- | --- | --- | --- | --- | --- | --- | --- | --- | --- | --- |
| 327 | 1.5.4.3.2.5 | **Verifcation** | 6.43d? | 2008-05-12 | 2008-05-20 |  | 86.28d |  |  | 12h |  |
| 328 | 1.5.4.3.2.5.1 | Develop the verification code in Matlab | 0.71d? | 2008-05-12 | 2008-05-12 | 326 | 86.28d | 0d | Kapil [70%] | 4h |  |
| 329 | 1.5.4.3.2.5.2 | Define the test input data & pass to ML & MATLAB | 0.71d? | 2008-05-19 | 2008-05-19 | 328 | 86.71d | 0d | Kapil [70%] | 4h |  |
| 330 | 1.5.4.3.2.5.3 | Compare the outputs | 0.71d? | 2008-05-19 | 2008-05-20 | 329 | 86.71d | 0d | Kapil [70%] | 4h |  |
| 331 | 1.5.4.3.2.6 | Measure performance & document mesaurements | 0.71d? | 2008-05-20 | 2008-05-21 | 330 | 86.71d | 0d | Kapil [70%] | 4h |  |
| 332 | 1.5.4.3.2.7 | Interface definition, code, Nunit , Result & Doc review | 0.71d? | 2008-05-21 | 2008-05-21 | 331 | 86.71d | 0d | Kapil [70%] | 4h |  |
| 333 | 1.5.4.3.3 | **Cross power** | 10.46d? | 2008-04-11 | 2008-04-28 |  | 105.41d |  |  | 44h |  |
| 334 | 1.5.4.3.3.1 | Review meas catalog & update | 0.77d? | 2008-04-11 | 2008-04-15 | 401 | 106.41d | 0d | Ramkumar [65%] | 4h |  |
| 335 | 1.5.4.3.3.2 | Review managed & Native interface definitions | 0.77d? | 2008-04-15 | 2008-04-16 | 334 | 106.41d | 0d | Ramkumar [65%] | 4h |  |
| 336 | 1.5.4.3.3.3 | Write code | 1.54d? | 2008-04-16 | 2008-04-17 | 335 | 106.41d | 0d | Ramkumar [65%] | 8h |  |
| 337 | 1.5.4.3.3.4 | Unit test the code | 0.77d? | 2008-04-17 | 2008-04-21 | 336 | 105.41d | 0d | Ramkumar [65%] | 4h |  |
| 338 | 1.5.4.3.3.5 | **Verifcation** | 3.08d? | 2008-04-21 | 2008-04-24 |  | 105.41d |  |  | 16h |  |
| 339 | 1.5.4.3.3.5.1 | Develop the verification code in Matlab | 1.54d? | 2008-04-21 | 2008-04-23 | 337 | 105.41d | 0d | Ramkumar [65%] | 8h |  |
| 340 | 1.5.4.3.3.5.2 | Define the test input data & pass to ML & MATLAB | 0.77d? | 2008-04-23 | 2008-04-23 | 339 | 105.41d | 0d | Ramkumar [65%] | 4h |  |
| 341 | 1.5.4.3.3.5.3 | Compare the outputs | 0.77d? | 2008-04-23 | 2008-04-24 | 340 | 105.41d | 0d | Ramkumar [65%] | 4h |  |
| 342 | 1.5.4.3.3.6 | Measure performance & document mesaurements | 0.77d? | 2008-04-24 | 2008-04-25 | 341 | 105.41d | 0d | Ramkumar [65%] | 4h |  |
| 343 | 1.5.4.3.3.7 | Interface definition, code, Nunit , Result & Doc review | 0.77d? | 2008-04-25 | 2008-04-28 | 342 | 105.41d | 0d | Ramkumar [65%] | 4h |  |
| 344 | 1.5.4.4 | **Distortion** | 25.31d? | 2008-04-02 | 2008-05-07 |  | 86.33d |  |  | 136h |  |
| 345 | 1.5.4.4.1 | **THD** | 25.31d? | 2008-04-02 | 2008-05-07 |  | 86.33d | 58.88d |  | 56h | P2 |
| 346 | 1.5.4.4.1.1 | Review meas catalog & update | 0.5d? | 2008-04-02 | 2008-04-02 | 427 | 86.33d | 0d | Mike [50%] | 2h |  |
| 347 | 1.5.4.4.1.2 | Review managed & Native interface definitions | 0.5d? | 2008-04-02 | 2008-04-02 | 346 | 86.33d | 0d | Mike [50%] | 2h |  |
| 348 | 1.5.4.4.1.3 | Write code | 3d? | 2008-04-03 | 2008-04-07 | 347 | 86.33d | 0d | Mike [50%] | 12h |  |
| 349 | 1.5.4.4.1.4 | Unit test the code | 2d? | 2008-04-08 | 2008-04-09 | 348 | 86.33d | 0d | Mike [50%] | 8h |  |
| 350 | 1.5.4.4.1.5 | **Verifcation** | 5.62d? | 2008-04-28 | 2008-05-05 |  | 104.41d |  |  | 24h |  |
| 351 | 1.5.4.4.1.5.1 | Develop the verification code in Matlab | 3.08d? | 2008-04-28 | 2008-05-02 | 343 | 104.41d | 0d | Ramkumar [65%] | 16h |  |
| 352 | 1.5.4.4.1.5.2 | Define the test input data & pass to ML & MATLAB | 0.77d? | 2008-05-02 | 2008-05-02 | 351 | 104.41d | 0d | Ramkumar [65%] | 4h |  |
| 353 | 1.5.4.4.1.5.3 | Compare the outputs | 0.77d? | 2008-05-02 | 2008-05-05 | 352 | 104.41d | 0d | Ramkumar [65%] | 4h |  |
| 354 | 1.5.4.4.1.6 | Measure performance & document mesaurements | 0.77d? | 2008-05-05 | 2008-05-06 | 353 | 104.41d | 0d | Ramkumar [65%] | 4h |  |
| 355 | 1.5.4.4.1.7 | Interface definition, code, Nunit , Result & Doc review | 0.77d? | 2008-05-06 | 2008-05-07 | 354 | 104.41d |  | Ramkumar [65%] | 4h |  |

| ID | WBS | Task | Duration | Start | Finish | Predecessors | Complete | Remaining | Total slack | Free slack | Resources | Work | Actual work | Text1 |
| --- | --- | --- | --- | --- | --- | --- | --- | --- | --- | --- | --- | --- | --- | --- |
| 356 | 1.5.4.4.2 | **THD + Noise** | 18.38d? | 2008-04-10 | 2008-05-06 |  |  |  | 84.33d | 59.81d |  | 80h |  | P2 |
| 357 | 1.5.4.4.2.1 | Review meas catalog & update | 0.77d? | 2008-04-10 | 2008-04-10 | 349, 355 |  |  | 86.33d | 0d | ShashiP [65%] | 4h |  |  |
| 358 | 1.5.4.4.2.2 | Review managed & Native interface definitions | 0.77d? | 2008-04-10 | 2008-04-11 | 357 |  |  | 86.33d | 0d | ShashiP [65%] | 4h |  |  |
| 359 | 1.5.4.4.2.3 | Write code | 5.38d? | 2008-04-11 | 2008-04-22 | 358 |  |  | 85.33d | 0d | ShashiP [65%] | 28h |  |  |
| 360 | 1.5.4.4.2.4 | Unit test the code | 1.54d? | 2008-04-22 | 2008-04-24 | 359 |  |  | 85.33d | 0d | ShashiP [65%] | 8h |  |  |
| 361 | 1.5.4.4.2.5 | **Verifcation** | 5.62d? | 2008-04-24 | 2008-05-02 |  |  |  | 84.33d |  |  | 24h |  |  |
| 362 | 1.5.4.4.2.5.1 | Develop the verification code in Matlab | 3.08d? | 2008-04-24 | 2008-04-29 | 360 |  |  | 85.33d | 0d | ShashiP [65%] | 16h |  |  |
| 363 | 1.5.4.4.2.5.2 | Define the test input data & pass to ML & MATLAB | 0.77d? | 2008-04-29 | 2008-04-30 | 362 |  |  | 85.33d | 0d | ShashiP [65%] | 4h |  |  |
| 364 | 1.5.4.4.2.5.3 | Compare the outputs | 0.77d? | 2008-04-30 | 2008-05-02 | 363 |  |  | 84.33d | 0d | ShashiP [65%] | 4h |  |  |
| 365 | 1.5.4.4.2.6 | Measure performance & document mesaurements | 0.77d? | 2008-05-02 | 2008-05-02 | 364 |  |  | 84.33d | 0d | ShashiP [65%] | 4h |  |  |
| 366 | 1.5.4.4.2.7 | Interface definition, code, Nunit , Result & Doc review | 1.54d? | 2008-05-02 | 2008-05-06 | 365 |  |  | 84.33d | 0d | ShashiP [65%] | 8h |  |  |
| 367 | 1.5.4.5 | **Signal Generation** | 25.61d? | 2008-03-07 A | 2008-04-11 |  | 3% | 24.81d? | 107.41d |  |  | 128h | 4h |  |
| 368 | 1.5.4.5.1 | **Sine** | 7.69d? | 2008-03-07 A | 2008-03-18 |  | 10% | 6.92d? | 106.41d | 94.42d |  | 40h | 4h | P1 |
| 369 | 1.5.4.5.1.1 | Review meas catalog & update | 0.77d? | 2008-03-07 A | 2008-03-07 A | 404 | 100% |  |  |  | Ramkumar [65%] | 4h | 4h |  |
| 370 | 1.5.4.5.1.2 | Review managed & Native interface definitions | 0.77d? | 2008-03-07 | 2008-03-10 | 369 |  |  | 106.41d | 0d | Ramkumar [65%] | 4h |  |  |
| 371 | 1.5.4.5.1.3 | Write code | 0.77d? | 2008-03-10 | 2008-03-11 | 370 |  |  | 106.41d | 0d | Ramkumar [65%] | 4h |  |  |
| 372 | 1.5.4.5.1.4 | Unit test the code | 0.77d? | 2008-03-11 | 2008-03-12 | 371 |  |  | 106.41d | 0d | Ramkumar [65%] | 4h |  |  |
| 373 | 1.5.4.5.1.5 | **Verifcation** | 3.08d? | 2008-03-12 | 2008-03-17 |  |  |  | 106.41d |  |  | 16h |  |  |
| 374 | 1.5.4.5.1.5.1 | Develop the verification code in Matlab | 1.54d? | 2008-03-12 | 2008-03-13 | 372 |  |  | 106.41d | 0d | Ramkumar [65%] | 8h |  |  |
| 375 | 1.5.4.5.1.5.2 | Define the test input data & pass to ML & MATLAB | 0.77d? | 2008-03-13 | 2008-03-14 | 374 |  |  | 106.41d | 0d | Ramkumar [65%] | 4h |  |  |
| 376 | 1.5.4.5.1.5.3 | Compare the outputs | 0.77d? | 2008-03-14 | 2008-03-17 | 375 |  |  | 106.41d | 0d | Ramkumar [65%] | 4h |  |  |
| 377 | 1.5.4.5.1.6 | Measure performance & document mesaurements | 0.77d? | 2008-03-17 | 2008-03-17 | 376 |  |  | 106.41d | 0d | Ramkumar [65%] | 4h |  |  |
| 378 | 1.5.4.5.1.7 | Interface definition, code, Nunit , Result & Doc review | 0.77d? | 2008-03-17 | 2008-03-18 | 377 |  |  | 106.41d | 0d | Ramkumar [65%] | 4h |  |  |
| 379 | 1.5.4.5.2 | **Square** | 8.69d? | 2008-03-18 | 2008-03-31 |  |  |  | 106.41d | 85.73d |  | 40h |  | P1 |
| 380 | 1.5.4.5.2.1 | Review meas catalog & update | 0.77d? | 2008-03-18 | 2008-03-19 | 378 |  |  | 106.41d | 0d | Ramkumar [65%] | 4h |  |  |
| 381 | 1.5.4.5.2.2 | Review managed & Native interface definitions | 0.77d? | 2008-03-19 | 2008-03-20 | 380 |  |  | 106.41d | 0d | Ramkumar [65%] | 4h |  |  |
| 382 | 1.5.4.5.2.3 | Write code | 0.77d? | 2008-03-20 | 2008-03-24 | 381 |  |  | 106.41d | 0d | Ramkumar [65%] | 4h |  |  |
| 383 | 1.5.4.5.2.4 | Unit test the code | 0.77d? | 2008-03-24 | 2008-03-24 | 382 |  |  | 106.41d | 0d | Ramkumar [65%] | 4h |  |  |

| ID | WBS | Task | Duration | Start | Finish | Predecessors | Complete | Remaining | Total slack | Free slack | Resources | Work | Actual work | Text1 |
| --- | --- | --- | --- | --- | --- | --- | --- | --- | --- | --- | --- | --- | --- | --- |
| 384 | 1.5.4.5.2.5 | **Verifcation** | 3.08d? | 2008-03-24 | 2008-03-27 |  |  |  | 106.41d |  |  | 16h |  |  |
| 385 | 1.5.4.5.2.5.1 | Develop the verification code in Matlab | 1.54d? | 2008-03-24 | 2008-03-26 | 383 |  |  | 106.41d | 0d | Ramkumar [65%] | 8h |  |  |
| 386 | 1.5.4.5.2.5.2 | Define the test input data & pass to ML & MATLAB | 0.77d? | 2008-03-26 | 2008-03-27 | 385 |  |  | 106.41d | 0d | Ramkumar [65%] | 4h |  |  |
| 387 | 1.5.4.5.2.5.3 | Compare the outputs | 0.77d? | 2008-03-27 | 2008-03-27 | 386 |  |  | 106.41d | 0d | Ramkumar [65%] | 4h |  |  |
| 388 | 1.5.4.5.2.6 | Measure performance & document mesaurements | 0.77d? | 2008-03-27 | 2008-03-28 | 387 |  |  | 106.41d | 0d | Ramkumar [65%] | 4h |  |  |
| 389 | 1.5.4.5.2.7 | Interface definition, code, Nunit , Result & Doc review | 0.77d? | 2008-03-28 | 2008-03-31 | 388 |  |  | 106.41d | 0d | Ramkumar [65%] | 4h |  |  |
| 390 | 1.5.4.5.3 | **Noise** | 9.23d? | 2008-03-31 | 2008-04-11 |  |  |  | 106.41d | 76.5d |  | 48h |  | P2 |
| 391 | 1.5.4.5.3.1 | **Random** | 9.23d? | 2008-03-31 | 2008-04-11 |  |  |  | 106.41d |  |  | 48h |  |  |
| 392 | 1.5.4.5.3.1.1 | Review meas catalog & update | 0.77d? | 2008-03-31 | 2008-04-01 | 389 |  |  | 106.41d | 0d | Ramkumar [65%] | 4h |  |  |
| 393 | 1.5.4.5.3.1.2 | Review managed & Native interface definitions | 0.77d? | 2008-04-01 | 2008-04-01 | 392 |  |  | 106.41d | 0d | Ramkumar [65%] | 4h |  |  |
| 394 | 1.5.4.5.3.1.3 | Write code | 0.77d? | 2008-04-01 | 2008-04-02 | 393 |  |  | 106.41d | 0d | Ramkumar [65%] | 4h |  |  |
| 395 | 1.5.4.5.3.1.4 | Unit test the code | 0.77d? | 2008-04-02 | 2008-04-03 | 394 |  |  | 106.41d | 0d | Ramkumar [65%] | 4h |  |  |
| 396 | 1.5.4.5.3.1.5 | **Verifcation** | 4.62d? | 2008-04-03 | 2008-04-10 |  |  |  | 106.41d |  |  | 24h |  |  |
| 397 | 1.5.4.5.3.1.5.1 | Develop the verification code in Matlab | 3.08d? | 2008-04-03 | 2008-04-08 | 395 |  |  | 106.41d | 0d | Ramkumar [65%] | 16h |  |  |
| 398 | 1.5.4.5.3.1.5.2 | Define the test input data & pass to ML & MATLAB | 0.77d? | 2008-04-08 | 2008-04-09 | 397 |  |  | 107.41d | 0d | Ramkumar [65%] | 4h |  |  |
| 399 | 1.5.4.5.3.1.5.3 | Compare the outputs | 0.77d? | 2008-04-09 | 2008-04-10 | 398 |  |  | 107.41d | 0d | Ramkumar [65%] | 4h |  |  |
| 400 | 1.5.4.5.3.1.6 | Measure performance & document mesaurements | 0.77d? | 2008-04-10 | 2008-04-10 | 399 |  |  | 107.41d | 0d | Ramkumar [65%] | 4h |  |  |
| 401 | 1.5.4.5.3.1.7 | Interface definition, code, Nunit , Result & Doc review | 0.77d? | 2008-04-10 | 2008-04-11 | 400 |  |  | 107.41d | 0d | Ramkumar [65%] | 4h |  |  |
| 402 | 1.5.5 | Research & Investigation on MVP filters | 15.38d? | 2008-02-04 A | 2008-02-26 A |  | 100% |  |  |  | ShashiP [65%] | 80h | 80h | P1 |
| 403 | 1.5.6 | Averaging-MATLAB simulation for MVP | 15.38d? | 2008-02-26 A | 2008-03-18 A | 402 | 100% |  |  |  | ShashiP [65%] | 80h | 80h | P1 |
| 404 | 1.5.7 | Research & invesitgation on Octave with MATLAB simulation | 23.08d? | 2008-02-04 A | 2008-03-07 |  | 80% | 4.62d? | 148.64d |  | Ramkumar [65%] | 120h | 96h | P1 |
| 407 | 1.5.8 | **Testing and Result Verification** | 20d? | 2008-05-06 | 2008-06-03 |  |  |  | 84.33d |  |  | 144h |  |  |
| 408 | 1.5.8.1 | Verify THD | 4.29d? | 2008-05-21 | 2008-05-28 | 332 |  |  | 86.71d | 0d | Kapil [70%] | 24h |  | P2 |
| 409 | 1.5.8.2 | Verify THD+N | 2.86d? | 2008-05-28 | 2008-06-02 | 408 |  |  | 86.71d | 41.19d | Kapil [70%] | 16h |  | P3 |
| 410 | 1.5.8.3 | Verify FFT | 4.62d? | 2008-05-06 | 2008-05-12 | 366 |  |  | 84.33d | 0d | ShashiP [65%] | 24h |  | P2 |
| 411 | 1.5.8.4 | Verify Windowing | 6.15d? | 2008-05-12 | 2008-05-21 | 410 |  |  | 85.33d |  | ShashiP [65%] | 32h |  | P2 |
| 412 | 1.5.8.5 | Verify Linear Spectrum | 4.62d? | 2008-05-21 | 2008-05-27 | 411 |  |  | 85.33d | 0d | ShashiP [65%] | 24h |  | P3 |
| 413 | 1.5.8.6 | Verify Power Spectrum | 4.62d? | 2008-05-27 | 2008-06-03 | 412 |  |  | 85.33d | 39.81d |  | 24h |  | P3 |

| ID | WBS | Task | Duration | Start | Finish | Predecessors | Total slack | Free slack | Resources | Work | Text1 |
| --- | --- | --- | --- | --- | --- | --- | --- | --- | --- | --- | --- |
| 414 | 1.5.9 | **Unmanaged interface definition** | 47d? | 2008-02-26 | 2008-04-30 |  | 86.33d |  |  | 164h |  |
| 415 | 1.5.9.1 | Identify IE needs (include Heros) | 4d? | 2008-02-26 | 2008-02-29 | 450 | 86.33d | 0d | Mike [50%] | 16h | P1 |
| 416 | 1.5.9.2 | Define interface style/model | 8d? | 2008-03-03 | 2008-03-12 | 415 | 86.33d | 0d | Mike [50%] | 32h | P1 |
| 417 | 1.5.9.3 | Review with IE and Hereos team | 2d? | 2008-03-13 | 2008-03-14 | 416 | 86.33d | 0d | Mike [50%] | 8h | P1 |
| 418 | 1.5.9.4 | Incorporate review decisions | 4d? | 2008-03-17 | 2008-03-20 | 417 | 86.33d | 0d | Mike [50%] | 16h | P1 |
| 419 | 1.5.9.5 | **Transforms** | 3d? | 2008-03-21 | 2008-03-25 |  | 86.33d |  |  | 12h |  |
| 420 | 1.5.9.5.1 | FFT | 2d? | 2008-03-21 | 2008-03-24 | 418 | 86.33d | 0d | Mike [50%] | 8h | P1 |
| 421 | 1.5.9.5.2 | Windowing | 1d? | 2008-03-25 | 2008-03-25 | 420 | 86.33d | 0d | Mike [50%] | 4h | P1 |
| 422 | 1.5.9.6 | **Spectrums** | 2d? | 2008-03-26 | 2008-03-27 |  | 86.33d |  |  | 8h |  |
| 423 | 1.5.9.6.1 | Linear | 1d? | 2008-03-26 | 2008-03-26 | 421 | 86.33d | 0d | Mike [50%] | 4h | P2 |
| 424 | 1.5.9.6.2 | Power | 1d? | 2008-03-27 | 2008-03-27 | 423 | 86.33d | 0d | Mike [50%] | 4h | P2 |
| 425 | 1.5.9.7 | **Distortion** | 3d? | 2008-03-28 | 2008-04-01 |  | 86.33d |  |  | 12h |  |
| 426 | 1.5.9.7.1 | THD | 1d? | 2008-03-28 | 2008-03-28 | 424 | 86.33d | 0d | Mike [50%] | 4h | P2 |
| 427 | 1.5.9.7.2 | THD + Noise | 2d? | 2008-03-31 | 2008-04-01 | 426 | 86.33d | 0d | Mike [50%] | 8h | P2 |
| 428 | 1.5.9.8 | Averaging | 10d? | 2008-04-10 | 2008-04-23 | 349, 355 | 94.71d | 0d | Mike [50%] | 40h | P2 |
| 429 | 1.5.9.9 | Coherence | 2d? | 2008-04-24 | 2008-04-25 | 428 | 94.71d | 0d | Mike [50%] | 8h | P2 |
| 430 | 1.5.9.10 | **Signal Generation** | 1d? | 2008-04-28 | 2008-04-28 |  | 94.71d |  |  | 4h |  |
| 431 | 1.5.9.10.1 | Sine | 1d? | 2008-04-28 | 2008-04-28 | 429 | 94.71d | 0d | Mike [50%] | 4h | P2 |
| 432 | 1.5.9.11 | **Swept Sine** | 2d? | 2008-04-29 | 2008-04-30 |  | 94.71d |  |  | 8h |  |
| 433 | 1.5.9.11.1 | Frequency Response | 1d? | 2008-04-29 | 2008-04-29 | 431 | 94.71d | 0d | Mike [50%] | 4h | P2 |
| 434 | 1.5.9.11.2 | Group Delay | 1d? | 2008-04-30 | 2008-04-30 | 433 | 94.71d | 0d | Mike [50%] | 4h | P2 |
| 435 | 1.5.10 | **Error codes definition** | 14d? | 2008-05-01 | 2008-05-20 |  | 94.71d | 51.86d |  | 56h | P2 |
| 436 | 1.5.10.1 | Categorize errors | 6d? | 2008-05-01 | 2008-05-08 | 434 | 94.71d | 0d | Mike [50%] | 24h |  |
| 437 | 1.5.10.2 | Error code translation proposal/plan | 6d? | 2008-05-09 | 2008-05-16 | 436 | 94.71d | 0d | Mike [50%] | 24h |  |
| 438 | 1.5.10.3 | Review with team | 1d? | 2008-05-19 | 2008-05-19 | 437 | 94.71d | 0d | Mike [50%] | 4h |  |
| 439 | 1.5.10.4 | Incorporate review decisions | 1d? | 2008-05-20 | 2008-05-20 | 438 | 94.71d |  | Mike [50%] | 4h |  |

| ID | WBS | Task | Duration | Start | Finish | Predecessors | Complete | Remaining | Total slack | Free slack | Constraint | Resources | Work | Actual work | Text1 |
| --- | --- | --- | --- | --- | --- | --- | --- | --- | --- | --- | --- | --- | --- | --- | --- |
| 440 | 1.5.11 | **Define meas to be implemented in MVP** | 12d? | 2008-02-04 A | 2008-02-19 A |  | 100% |  |  |  |  |  | 48h | 48h | P1 |
| 441 | 1.5.11.1 | List the meas for MVP | 2d? | 2008-02-04 A | 2008-02-05 A |  | 100% |  |  |  |  | Mike [50%] | 8h | 8h |  |
| 442 | 1.5.11.2 | Identify dependecies on other meas | 4d? | 2008-02-06 A | 2008-02-11 A | 441 | 100% |  |  |  |  | Mike [50%] | 16h | 16h |  |
| 443 | 1.5.11.3 | Review with team | 2d? | 2008-02-12 A | 2008-02-13 A | 442 | 100% |  |  |  |  | Mike [50%] | 8h | 8h |  |
| 444 | 1.5.11.4 | Incorporate review decisions | 2d? | 2008-02-14 A | 2008-02-15 A | 443 | 100% |  |  |  |  | Mike [50%] | 8h | 8h |  |
| 445 | 1.5.11.5 | Finalize meas definition for MVP | 2d? | 2008-02-18 A | 2008-02-19 A | 444 | 100% |  |  |  |  | Mike [50%] | 8h | 8h |  |
| 446 | 1.5.12 | **Infrastructure Development** | 16d? | 2008-02-04 A | 2008-02-25 |  | 58% | 6.73d? | 155.71d | 21d |  |  | 64h | 36h | P1 |
| 447 | 1.5.12.1 | Unit test framework setup | 2.86d? | 2008-02-04 A | 2008-02-06 A |  | 100% |  |  |  |  | Kapil [70%] | 16h | 16h |  |
| 448 | 1.5.12.2 | Test result reporting and tracking | 4.29d? | 2008-02-06 | 2008-02-14 | 447 |  |  | 163.57d |  |  | Kapil [70%] | 24h |  |  |
| 449 | 1.5.12.3 | Folder structure (OS, Unit test, performance test, verfication test and results) | 1.43d? | 2008-02-14 A | 2008-02-15 A | 448 | 100% |  |  |  |  | Kapil [70%] | 8h | 8h |  |
| 450 | 1.5.12.4 | Work with LP to understand their needs | 4d? | 2008-02-20 A | 2008-02-25 | 445 | 75% | 1d? | 86.33d | 0d |  | Mike [50%] | 16h | 12h |  |
| 451 | 1.6 | **AI Less SLIC Single Commands** | 172.71d? | 2008-02-04 A | 2008-10-01 |  | 5% | 164.08d? | 0d |  |  |  | 1031.99h | 52h |  |
| 452 | 1.6.1 | Develop Code and Nunit tests for 200 Parser Commands (15 per Day) | 18.57d? | 2008-02-04 A | 2008-02-29 |  | 50% | 9.29d? | 0d |  | start no earlier than 2008-02-04 | Vishal [70%] | 104h | 52h | P1-P5 |
| 453 | 1.6.2 | **Status System** | 21d? | 2008-02-04 | 2008-03-03 |  |  |  | 151.72d |  |  |  | 103.99h |  | P2 |
| 454 | 1.6.2.1 | Design Status System Registers | 7.69d? | 2008-02-04 | 2008-02-14 |  |  |  | 151.72d | 0d |  | 2ETW [65%] | 39.99h |  |  |
| 455 | 1.6.2.2 | Implement Status System Execution Routines | 7.69d | 2008-02-14 | 2008-02-26 | 454 |  |  | 151.72d | 0d |  | 2ETW [65%] | 40h |  |  |
| 456 | 1.6.2.3 | Nunit Status System | 4.62d | 2008-02-26 | 2008-03-03 | 455 |  |  | 151.72d |  |  | 2ETW [65%] | 24h |  |  |
| 457 | 1.6.3 | **Frequency Execution Routines** | 4.29d? | 2008-02-29 | 2008-03-06 |  |  |  | 0d |  |  |  | 24h |  | P2 |
| 458 | 1.6.3.1 | Implement | 2.86d? | 2008-02-29 | 2008-03-05 | 452 |  |  | 0d |  |  | Vishal [70%] | 16h |  |  |
| 459 | 1.6.3.2 | Nunit | 1.43d? | 2008-03-05 | 2008-03-06 | 458 |  |  | 0d |  |  | Vishal [70%] | 8h |  |  |
| 460 | 1.6.4 | **Averaging Execution Routines** | 8.57d? | 2008-03-06 | 2008-03-19 |  |  |  | 0d |  |  |  | 48h |  | P3 |
| 461 | 1.6.4.1 | Implement | 5.71d? | 2008-03-06 | 2008-03-14 | 459 |  |  | 0d |  |  | Vishal [70%] | 32h |  |  |
| 462 | 1.6.4.2 | Nunit | 2.86d? | 2008-03-14 | 2008-03-19 | 461 |  |  | 0d |  |  | Vishal [70%] | 16h |  |  |
| 463 | 1.6.5 | **Trace Commands** | 49.71d | 2008-03-19 | 2008-05-28 |  |  |  | 0d |  |  |  | 256h |  | P2 |
| 464 | 1.6.5.1 | Design AI - Analysis Layer Interface | 4.29d | 2008-03-19 | 2008-03-26 | 462 |  |  | 0d |  |  | Vishal [70%] | 24h |  |  |
| 465 | 1.6.5.2 | Implement AI -- Analysis Layer Interface | 4.29d | 2008-03-26 | 2008-04-01 | 464 |  |  | 0d |  |  | Vishal [70%] | 24h |  |  |
| 466 | 1.6.5.3 | Design Trace Combinations | 14.29d | 2008-04-01 | 2008-04-24 | 465 |  |  | 0d |  |  | Vishal [70%] | 80h |  |  |
| 467 | 1.6.5.4 | Implement Trace Combinations | 14.29d | 2008-04-24 | 2008-05-15 | 466 |  |  | 0d |  |  | Vishal [70%] | 80h |  |  |
| 468 | 1.6.5.5 | Implement Fetch Command | 2.86d | 2008-05-15 | 2008-05-20 | 467 |  |  | 0d |  |  | Vishal [70%] | 16h |  |  |
| 469 | 1.6.5.6 | Nunit Fetch Commands | 5.71d | 2008-05-20 | 2008-05-28 | 468 |  |  | 0d |  |  | Vishal [70%] | 32h |  |  |

| ID | WBS | Task | Duration | Start | Finish | Predecessors | Complete | Remaining | Total slack | Free slack | Constraint | Resources | Work | Actual work | Text1 |
| --- | --- | --- | --- | --- | --- | --- | --- | --- | --- | --- | --- | --- | --- | --- | --- |
| 470 | 1.6.6 | **Measurement Value** | 90.57d | 2008-05-28 | 2008-10-01 |  |  |  | 0d |  |  |  | 496h |  | P2-P5 |
| 471 | 1.6.6.1 | Design MV Combinations (19 Measurements * 2 Days per Measurment) | 54.29d | 2008-05-28 | 2008-08-12 | 469 |  |  | 0d |  |  | Vishal [70%] | 304h |  |  |
| 472 | 1.6.6.2 | Implement Trace Combinations | 14.29d | 2008-08-12 | 2008-09-02 | 471 |  |  | 0d |  |  | Vishal [70%] | 80h |  |  |
| 473 | 1.6.6.3 | Implement Fetch Command | 14.29d | 2008-09-02 | 2008-09-23 | 472 |  |  | 0d |  |  | Vishal [70%] | 80h |  |  |
| 474 | 1.6.6.4 | Nunit Fetch Commands | 5.71d | 2008-09-23 | 2008-10-01 | 473 |  |  | 0d |  |  | Vishal [70%] | 32h |  |  |
| 475 | 1.7 | **FFT Mode I.I.** | 22.56d? | 2008-03-31 | 2008-04-30 |  |  |  | 110.15d |  |  |  | 136h |  |  |
| 476 | 1.7.1 | Design Frequency GUI | 3.64d? | 2008-03-31 | 2008-04-03 | 514 |  |  | 112.15d | 0d |  | Gowie [55%] | 16h |  | P2 |
| 477 | 1.7.2 | Implement Frequency GUI | 4.62d? | 2008-04-03 | 2008-04-10 | 476 |  |  | 112.15d | 0d |  | 2ETW [65%] | 24h |  | P2 |
| 478 | 1.7.3 | Nunit Frequency GUI | 3.08d? | 2008-04-10 | 2008-04-16 | 477 |  |  | 111.15d | 0d |  | 2ETW [65%] | 16h |  | P2 |
| 479 | 1.7.4 | Design Cancel / Ok Logic | 7.27d? | 2008-04-03 | 2008-04-14 | 476 |  |  | 121.8d |  |  | Gowie [55%] | 32h |  | P2 |
| 480 | 1.7.5 | Implement Cancel / Ok Logic | 6.15d? | 2008-04-16 | 2008-04-25 | 478 |  |  | 110.15d | 0d |  | 2ETW [65%] | 32h |  | P2 |
| 481 | 1.7.6 | Nunit Cancel / Ok Logic | 3.08d? | 2008-04-25 | 2008-04-30 | 480 |  |  | 110.15d |  |  | 2ETW [65%] | 16h |  | P2 |
| 482 | 2 | **35670A DataLinker** | 114.19d? | 2008-01-07 A | 2008-06-13 |  | 48% | 59.36d? | 78.52d |  |  |  | 640h | 304h |  |
| 483 | 2.1 | **Design** | 23.86d? | 2008-01-07 A | 2008-02-07 |  | 84% | 3.73d? | 164.86d |  |  |  | 128h | 108h |  |
| 484 | 2.1.1 | FrameWork Design | 5.71d? | 2008-01-07 A | 2008-01-14 A |  | 100% |  |  |  | start no earlier than 2008-01-07 | Anurag [70%] | 32h | 32h |  |
| 485 | 2.1.2 | Review and Updation | 2.86d? | 2008-01-14 A | 2008-01-18 A | 484 | 100% |  |  |  |  | Anurag [70%] | 16h | 16h |  |
| 486 | 2.1.3 | UI Design | 7.14d? | 2008-01-18 A | 2008-01-29 | 485 | 75% | 1.79d? | 170.21d | 0d |  | Anurag [70%] | 40h | 30h |  |
| 487 | 2.1.4 | Review and Updation | 7.14d? | 2008-01-29 A | 2008-02-07 | 486 | 75% | 1.79d? | 164.86d | 0d |  | Anurag [70%] | 40h | 30h |  |
| 488 | 2.2 | **Functionality** | 53.33d? | 2008-02-07 A | 2008-04-23 |  | 66% | 18.02d? | 50.81d |  |  |  | 296h | 196h |  |
| 489 | 2.2.1 | Finding 35670 on LAN-GPIB Converter | 4d? | 2008-02-07 A | 2008-02-14 A | 487 | 100% |  |  |  |  | Ravi [75%] | 24h | 24h |  |
| 490 | 2.2.2 | Finding 35670 on USB-GPIB Converter | 4d? | 2008-02-14 A | 2008-02-20 A | 489 | 100% |  |  |  |  | Ravi [75%] | 24h | 24h |  |
| 491 | 2.2.3 | Finding 35670 on GPIB-GPIB | 4d? | 2008-02-20 A | 2008-02-26 A | 490 | 100% |  |  |  |  | Ravi [75%] | 24h | 24h |  |
| 492 | 2.2.4 | Ibasic prog for Dir info transfer in RAM | 5.33d? | 2008-02-26 A | 2008-03-05 A | 491 | 100% |  |  |  |  | Ravi [75%] | 32h | 32h |  |
| 493 | 2.2.5 | Ibasic prog for Dir info transfer in Floppy Drive | 4d? | 2008-03-05 A | 2008-03-11 A | 492 | 100% |  |  |  |  | Ravi [75%] | 24h | 24h |  |
| 494 | 2.2.6 | Implement Data structure to store Dir Info | 2.67d? | 2008-03-11 A | 2008-03-13 A | 493 | 100% |  |  |  |  | Ravi [75%] | 16h | 16h |  |
| 495 | 2.2.7 | Parse the ascii file and store the info in datastructure | 1.33d? | 2008-03-13 A | 2008-03-17 A | 494 | 100% |  |  |  |  | Ravi [75%] | 8h | 8h |  |
| 496 | 2.2.8 | Display data on Screen as per Format | 2.67d? | 2008-03-17 A | 2008-03-19 A | 495 | 100% |  |  |  |  | Ravi [75%] | 16h | 16h |  |
| 497 | 2.2.9 | Sorting of displayed data | 2.67d? | 2008-03-19 A | 2008-03-25 A | 496 | 100% |  |  |  |  | Ravi [75%] | 16h | 16h |  |
| 498 | 2.2.10 | Download selected file | 2.67d? | 2008-03-25 A | 2008-03-28 | 497 | 50% | 1.33d? | 53.48d | 0d |  | Ravi [75%] | 16h | 8h |  |
| 499 | 2.2.11 | Download Directory selection dialog box | 1.33d? | 2008-03-28 A | 2008-03-31 | 498 | 50% | 0.67d? | 52.81d | 0d |  | Ravi [75%] | 8h | 4h |  |
| 500 | 2.2.12 | DataViewer integration | 4d? | 2008-03-31 | 2008-04-04 | 499 |  |  | 52.81d | 0d |  | Ravi [75%] | 24h |  |  |
| 501 | 2.2.13 | Uint Testing | 10.67d? | 2008-04-04 | 2008-04-23 | 500 |  |  | 50.81d | 0d |  | Ravi [75%] | 64h |  |  |
| 502 | 2.3 | System Testing | 13.33d | 2008-04-23 | 2008-05-13 | 501 |  |  | 49.81d | 0d |  | Ravi [75%] | 80h |  |  |

| ID | WBS | Task | Duration | Start | Finish | Predecessors | Complete | Remaining | Total slack | Free slack | Resources | Work | Actual work | Text1 |
| --- | --- | --- | --- | --- | --- | --- | --- | --- | --- | --- | --- | --- | --- | --- |
| 503 | 2.4 | **Help** | 14.67d? | 2008-05-13 | 2008-06-03 |  |  |  | 77.52d |  |  | 88h |  |  |
| 504 | 2.4.1 | Online Manual help | 4d? | 2008-05-13 | 2008-05-19 | 502 |  |  | 49.81d | 0d | Ravi [75%] | 24h |  |  |
| 505 | 2.4.2 | Help Version | 1.33d? | 2008-05-19 | 2008-05-20 | 504 |  |  | 49.81d | 0d | Ravi [75%] | 8h |  |  |
| 506 | 2.4.3 | Link Dialog Help button | 2.67d? | 2008-05-20 | 2008-05-23 | 505 |  |  | 78.52d | 0d | Ravi [75%] | 16h |  |  |
| 507 | 2.4.4 | Help Organization | 2.67d? | 2008-05-23 | 2008-05-28 | 506 |  |  | 78.52d | 0d | Ravi [75%] | 16h |  |  |
| 508 | 2.4.5 | Getting Started | 4d? | 2008-05-28 | 2008-06-03 | 507 |  |  | 78.52d | 0d | Ravi [75%] | 24h |  |  |
| 509 | 2.5 | Show Software (Version number etc) | 2.67d? | 2008-06-03 | 2008-06-05 | 508 |  |  | 78.52d |  | Ravi [75%] | 16h |  |  |
| 510 | 2.6 | Installer/Uninstaller | 5.33d? | 2008-06-05 | 2008-06-13 | 509 |  |  | 78.52d |  | Ravi [75%] | 32h |  |  |
| 512 | 3 | **NEW TASKS ADDED 2/12/08** | 60d? | 2008-02-04 A | 2008-04-25 |  | 15% | 50.78d? | 112.71d |  |  | 328h | 40h |  |
| 513 | 3.1 | Architecture Development | 40d | 2008-02-04 A | 2008-03-28 |  | 50% | 20d | 132.71d |  | Mike25 [25%] | 80h | 40h | P1 |
| 514 | 3.2 | GUI Technical Spec FFT Mode | 40d? | 2008-02-04 | 2008-03-28 |  |  |  | 112.15d | 0d | Gowie25 [25%] | 80h |  | P1 |
| 515 | 3.3 | SCPI Technical Spec FFT Mode | 20d? | 2008-03-31 | 2008-04-25 | 514 |  |  | 112.71d |  | Gowie25 [25%] | 40h |  | P2 |
| 516 | 3.4 | **FFT Mode IE State Proxy Component** | 52.73d? | 2008-02-04 | 2008-04-16 |  |  |  | 119.99d |  |  | 128h |  |  |
| 517 | 3.4.1 | **IE Proxy Collection** | 5.45d? | 2008-03-19 | 2008-03-27 |  |  |  | 134.53d |  |  | 24h |  | P2 |
| 518 | 3.4.1.1 | Design | 1.82d? | 2008-03-19 | 2008-03-21 |  |  |  | 138.17d |  | Gowie [55%] | 8h |  |  |
| 519 | 3.4.1.2 | Implement | 1.82d? | 2008-03-21 | 2008-03-25 |  |  |  | 136.35d |  | Gowie [55%] | 8h |  |  |
| 520 | 3.4.1.3 | Nunit | 1.82d? | 2008-03-25 | 2008-03-27 |  |  |  | 134.53d |  | Gowie [55%] | 8h |  |  |
| 521 | 3.4.2 | **Frequency Proxy** | 40d? | 2008-02-20 | 2008-04-16 |  |  |  | 119.99d |  |  | 40h |  | P2 |
| 522 | 3.4.2.1 | Design | 5.45d? | 2008-02-20 | 2008-02-28 |  |  |  | 154.53d |  | Gowie [55%] | 24h |  |  |
| 523 | 3.4.2.2 | Implement | 1.82d? | 2008-03-27 | 2008-03-28 |  |  |  | 132.71d |  | Gowie [55%] | 8h |  |  |
| 524 | 3.4.2.3 | Nunit | 1.82d? | 2008-04-14 | 2008-04-16 |  |  |  | 119.99d |  | Gowie [55%] | 8h |  |  |
| 525 | 3.4.3 | **Data Pacer** | 32.73d? | 2008-02-04 | 2008-03-19 |  |  |  | 139.99d |  |  | 64h |  | P2 |
| 526 | 3.4.3.1 | Design | 3.64d? | 2008-02-28 | 2008-03-04 |  |  |  | 150.9d |  | Gowie [55%] | 16h |  |  |
| 527 | 3.4.3.2 | Implement Simulation | 3.64d? | 2008-03-04 | 2008-03-10 |  |  |  | 147.26d |  | Gowie [55%] | 16h |  |  |
| 528 | 3.4.3.3 | Implement | 3.64d? | 2008-03-10 | 2008-03-14 |  |  |  | 143.62d |  | Gowie [55%] | 16h |  |  |
| 529 | 3.4.3.4 | Nunit | 3.64d? | 2008-03-14 | 2008-03-19 |  |  |  | 139.99d |  | Gowie [55%] | 16h |  |  |
