# MirageDEVPlan_Less_Slic tasks_16Jan

Schedule from MS Project, 2008-01-07 to 2009-06-04, A marks actual dates.

## Calendars

- Standard: Mon-Fri 08:00-12:00, 13:00-17:00; Sat-Sun off.

## Resources

| Resource |
| --- |
| Kapil |
| Himanshu |
| Vishal |
| Mike |
| Anurag |
| Pallavi |
| Ramkumar |
| 1ETW |
| 2ETW |
| 3ETW |
| RKB |
| Gowie |
| ShashiP |
| RKB1 |

## Schedule

| ID | WBS | Task | Type | Duration | Start | Finish | Predecessors | Complete | Remaining | Total slack | Free slack | Constraint | Resources | Work | Actual work | Text1 |
| --- | --- | --- | --- | --- | --- | --- | --- | --- | --- | --- | --- | --- | --- | --- | --- | --- |
| 1 | 1 | **Mirage SW DEV** |  | 348.16d? | 2008-02-04 A | 2009-06-04 |  | 9% | 316.06d? | 0d |  |  |  | 15449h | 1372.48h |  |
| 2 | 1.1 | **Phases** |  | 246.48d? | 2008-06-24 | 2009-06-03 | 15, 18, 21, 25, 26, 27, 32, 42, 579, 668, 671, 673, 674, 678, 679, 687, 688 |  |  | 0.54d |  |  |  |  |  |  |
| 3 | 1.1.1 | Phase 1 (Design and Initial Creation) | milestone | 1d? | 2009-06-02 | 2009-06-03 | 61, 69, 80, 85, 95, 103, 107, 116, 151, 160, 169, 176, 183, 190, 200, 206, 212, 218, 263, 264, 265, 269, 270, 274, 25, 530, 299, 311, 322, 345, 356, 368, 379, 390, 408, 409, 413, 428, 429, 431, 433, 434, 267, 268, 427, 426, 423, 424, 55 |  |  | 0.54d |  |  |  |  |  |  |
| 4 | 1.1.2 | Phase 2 (FFT & THD) |  | 1d? | 2009-05-27 | 2009-05-28 | 90, 98, 111, 124, 132, 140, 148, 435, 224, 231, 238, 245 |  |  | 5.15d |  |  |  |  |  |  |
| 5 | 1.1.3 | Phase 3 (Remote/Local/Averaging) |  | 1d? | 2008-06-24 | 2008-06-25 |  |  |  | 246.01d |  |  |  |  |  |  |
| 6 | 1.1.4 | Phase 4 (Partial FFT Mode Simualte IE) |  | 1d? | 2008-06-24 | 2008-06-25 |  |  |  | 246.01d |  |  |  |  |  |  |
| 7 | 1.1.5 | Phase 5 (Full FFT w/o System & Analysis, Green screen with HW) |  | 1d? | 2008-06-24 | 2008-06-25 |  |  |  | 246.01d |  |  |  |  |  |  |
| 8 | 1.1.6 | Phase 6 (Full Stepped Sin Mode with System Hardkey) |  | 1d? | 2008-06-24 | 2008-06-25 |  |  |  | 246.01d |  |  |  |  |  |  |
| 9 | 1.1.7 | Phase 7 (Full Octave with Analysis Hardkey) |  | 1d? | 2008-06-24 | 2008-06-25 |  |  |  | 246.01d |  |  |  |  |  |  |
| 10 | 1.1.8 | Phase 8 (Learning Products) |  | 1d? | 2008-06-24 | 2008-06-25 |  |  |  | 246.01d |  |  |  |  |  |  |
| 11 | 1.1.9 | Phase 9 HQ |  | 1d? | 2008-06-24 | 2008-06-25 |  |  |  | 246.01d |  |  |  |  |  |  |
| 12 | 1.1.10 | Phase 10 SQ |  | 1d? | 2008-06-24 | 2008-06-25 |  |  |  | 246.01d |  |  |  |  |  |  |
| 13 | 1.1.11 | Phase 11 Ship |  | 1d? | 2008-06-24 | 2008-06-25 |  |  |  | 246.01d |  |  |  |  |  |  |
| 14 | 1.2 | **Process Infrastructure** |  | 125d? | 2008-02-04 A | 2008-07-25 |  | 58% | 52.35d? | 222.16d |  |  |  | 128h | 74.4h | P1 |
| 15 | 1.2.1 | **SCM ( Source management)** |  | 4.29d? | 2008-02-04 A | 2008-02-08 A |  | 100% |  |  |  |  |  | 24h | 24h | P1 |
| 16 | 1.2.1.1 | Defining the Folder heriarchy for source code |  | 1.43d? | 2008-02-04 A | 2008-02-05 A |  | 100% |  |  |  |  | RKB [70%] | 8h | 8h |  |
| 17 | 1.2.1.2 | TFS Set up ( Server & Client set up) |  | 2.86d? | 2008-02-05 A | 2008-02-08 A | 16 | 100% |  |  |  |  | RKB [70%] | 16h | 16h |  |
| 18 | 1.2.2 | **Development guidelines** |  | 3.86d? | 2008-02-08 A | 2008-02-14 A |  | 100% |  |  |  |  |  | 16h | 16h | P1 |
| 19 | 1.2.2.1 | Coding standard ( C++, C#) |  | 1.43d? | 2008-02-08 A | 2008-02-12 A | 17 | 100% |  |  |  | start no earlier than 2008-02-04 | RKB [70%] | 8h | 8h |  |
| 20 | 1.2.2.2 | Code Review , Unit Test case review guidelines |  | 1.43d? | 2008-02-12 A | 2008-02-14 A | 19 | 100% |  |  |  |  | RKB [70%] | 8h | 8h |  |
| 21 | 1.2.3 | **Skelton projects for each components** |  | 3.86d | 2008-02-08 A | 2008-02-14 A |  | 100% |  |  |  |  |  | 16h | 16h | P1 |
| 22 | 1.2.3.1 | GUI, AML, ML |  | 1.43d | 2008-02-08 A | 2008-02-12 A | 17 | 100% |  |  |  |  | RKB [70%] | 8h | 8h |  |
| 23 | 1.2.3.2 | Instrument interface, AI |  | 1.43d | 2008-02-12 A | 2008-02-14 A | 22 | 100% |  |  |  |  | RKB [70%] | 8h | 8h |  |
| 24 | 1.2.4 | **Platform Builder Image** |  | 121.14d? | 2008-02-07 A | 2008-07-25 |  | 26% | 90.19d? | 222.16d |  |  |  | 72h | 18.4h | P1 |
| 25 | 1.2.4.1 | Identifying the components which are to be added |  | 2.86d? | 2008-02-07 A | 2008-02-13 | 1541 | 70% | 0.86d? | 337.3d | 0d |  | Anurag [70%] | 16h | 11.2h | P1 |
| 26 | 1.2.4.2 | Creating NK.bin |  | 1.43d? | 2008-02-13 A | 2008-02-15 | 25 | 50% | 0.71d? | 336.59d | 0d |  | Anurag [70%] | 8h | 4h | P1 |
| 27 | 1.2.4.3 | Checking presence and working of all components |  | 1.43d? | 2008-02-15 | 2008-02-18 | 26 |  |  | 336.59d | 90.57d |  | Anurag [70%] | 8h |  | P1 |
| 28 | 1.2.4.4 | Automation: Pushing this Image in the box |  | 2.86d? | 2008-07-16 | 2008-07-18 | 60 |  |  | 59.14d | 0d |  | Anurag [70%] | 16h |  | P2 |
| 29 | 1.2.4.5 | Auto Installation of this Image in the box |  | 2.86d? | 2008-07-21 | 2008-07-24 | 28 |  |  | 60.57d | 0d |  | Anurag [70%] | 16h |  | P2 |
| 30 | 1.2.4.6 | Integrating it with Trace Control & Registry settings |  | 1.43d? | 2008-07-24 A | 2008-07-25 | 29 | 40% | 0.86d? | 60d | 0.29d |  | Anurag [70%] | 8h | 3.2h | P2 |

| ID | WBS | Task | Duration | Start | Finish | Predecessors | Complete | Remaining | Total slack | Free slack | Resources | Work | Actual work | Text1 |
| --- | --- | --- | --- | --- | --- | --- | --- | --- | --- | --- | --- | --- | --- | --- |
| 31 | 1.3 | **Front Panel Tasks** | 348.16d? | 2008-02-04 A | 2009-06-04 |  | 6% | 326.61d? | 0d |  |  | 5023.43h | 322.8h |  |
| 32 | 1.3.1 | **Define interface IGUIHardKey** | 84.43d? | 2008-02-14 A | 2008-06-11 |  | 33% | 56.29d? | 254.59d | 8.57d |  | 48h | 16h | P1 |
| 33 | 1.3.1.1 | Design, Review & Update | 2.86d? | 2008-02-14 A | 2008-02-18 A | 23 | 100% |  |  |  | RKB [70%] | 16h | 16h |  |
| 34 | 1.3.1.2 | Implementation | 5.71d? | 2008-02-20 | 2008-06-11 | 581 |  |  | 254.59d |  | Himanshu [70%] | 32h |  |  |
| 35 | 1.3.2 | **FP Events Flow Mechanism** | 16.7d? | 2008-02-18 A | 2008-03-12 A |  | 100% |  |  |  |  | 88h | 88h | P1 |
| 36 | 1.3.2.1 | Define all FP events | 2.86d? | 2008-02-18 A | 2008-02-21 A | 33 | 100% |  |  |  | RKB [70%] | 16h | 16h |  |
| 37 | 1.3.2.2 | Implement EventProcessor | 3.08d? | 2008-02-21 A | 2008-02-26 A | 36 | 100% |  |  |  | Pallavi [65%] | 16h | 16h |  |
| 38 | 1.3.2.3 | Implement Event Dispatcher | 3.08d? | 2008-02-26 A | 2008-03-03 A | 37 | 100% |  |  |  | Pallavi [65%] | 16h | 16h |  |
| 39 | 1.3.2.4 | Implement Basic Event Target | 3.08d? | 2008-03-03 A | 2008-03-06 A | 38 | 100% |  |  |  | Pallavi [65%] | 16h | 16h |  |
| 40 | 1.3.2.5 | Implement change in Target Priority | 3.08d? | 2008-03-06 A | 2008-03-11 A | 39 | 100% |  |  |  | Pallavi [65%] | 16h | 16h |  |
| 41 | 1.3.2.6 | Code Review | 1.54d | 2008-03-11 A | 2008-03-12 A | 40 | 100% |  |  |  | Pallavi [65%] | 8h | 8h |  |
| 42 | 1.3.3 | **Error & Debug Information** | 90.57d? | 2008-02-18 A | 2008-06-24 |  | 94% | 5.66d? | 246.01d | 0d |  | 64h | 60h | P1 |
| 43 | 1.3.3.1 | Design/Define common interface for Accessing Error Log system | 2.86d? | 2008-02-18 A | 2008-02-21 A | 27 | 100% |  |  |  | Anurag [70%] | 16h | 16h |  |
| 44 | 1.3.3.2 | Implement Common Error Log system | 5.71d? | 2008-06-11 A | 2008-06-19 A | 34 | 100% |  |  |  | Himanshu [70%] | 32h | 32h |  |
| 45 | 1.3.3.3 | Unit Testing & Code Review | 2.86d? | 2008-06-19 A | 2008-06-24 | 44 | 75% | 0.71d? | 246.01d |  | Himanshu [70%] | 16h | 12h |  |
| 46 | 1.3.4 | **Define interface for All Major Component** | 104.42d? | 2008-02-21 A | 2008-07-17 |  | 78% | 22.97d? | 229.88d |  |  | 112h | 84h | P1 |
| 47 | 1.3.4.1 | AML Interface | 5d? | 2008-02-21 A | 2008-02-28 A | 36 | 100% |  |  |  | RKB [70%] | 28h | 28h |  |
| 48 | 1.3.4.2 | Instrument Interface | 6.36d? | 2008-03-10 A | 2008-03-18 A |  | 100% |  |  |  | Gowie [55%] | 28h | 28h |  |
| 49 | 1.3.4.3 | AutoMation interface | 6.36d? | 2008-03-18 A | 2008-03-27 A | 48 | 100% |  |  |  | Gowie [55%] | 28h | 28h |  |
| 50 | 1.3.4.4 | File Formatting Component | 5d? | 2008-03-05 | 2008-07-17 | 47 |  |  | 229.88d |  | RKB [70%] | 28h |  |  |
| 51 | 1.3.5 | **Start/Shut down activity** | 94.86d? | 2008-02-21 A | 2008-07-03 |  | 93% | 6.78d? | 58.14d |  |  | 56h | 52h | P1 |
| 52 | 1.3.5.1 | Design Start/Shut down framework | 2.86d? | 2008-02-21 A | 2008-02-26 A | 43 | 100% |  |  |  | Anurag [70%] | 16h | 16h |  |
| 53 | 1.3.5.2 | Implementation & Unit testing | 5.71d? | 2008-06-24 A | 2008-07-01 A | 45 | 100% |  |  |  | Anurag [70%] | 32h | 32h |  |
| 54 | 1.3.5.3 | Code Review/ Unit test case review/Design screen/ Screen usability reviews with Jan Ryles | 1.43d | 2008-07-01 A | 2008-07-03 | 53 | 50% | 0.71d | 58.14d | 0d | Anurag [70%] | 8h | 4h |  |

| ID | WBS | Task | Duration | Start | Finish | Predecessors | Complete | Remaining | Total slack | Free slack | Resources | Work | Actual work | Text1 |
| --- | --- | --- | --- | --- | --- | --- | --- | --- | --- | --- | --- | --- | --- | --- |
| 55 | 1.3.6 | **Splash Screen** | 100.57d? | 2008-02-26 | 2008-07-15 |  |  |  | 150.14d | 229.76d |  | 64h |  | P1 |
| 56 | 1.3.6.1 | Design framework & splash screen, Review with Jan Ryles | 2.86d? | 2008-02-26 | 2008-02-29 | 52 |  |  | 328.01d |  | Anurag [70%] | 16h |  |  |
| 57 | 1.3.6.2 | Implement Framework | 2.86d? | 2008-07-03 | 2008-07-08 | 54 |  |  | 58.14d | 0d | Himanshu [70%] | 16h |  |  |
| 58 | 1.3.6.3 | Incorporate the Intilization Events to show progress | 1.43d? | 2008-07-08 | 2008-07-09 | 57 |  |  | 58.14d | 0d | Himanshu [70%] | 8h |  |  |
| 59 | 1.3.6.4 | Integrate splash screen with Start Shut down activity | 1.43d? | 2008-07-09 | 2008-07-11 | 58 |  |  | 58.14d | 0d | Himanshu [70%] | 8h |  |  |
| 60 | 1.3.6.5 | Unit test case,Design review/Code review | 2.86d? | 2008-07-11 | 2008-07-15 | 59 |  |  | 58.14d | 0.14d | Himanshu [70%] | 16h |  |  |
| 61 | 1.3.7 | **Display layout Management** | 327.76d? | 2008-02-28 A | 2009-06-02 |  | 6% | 307.47d? | 0.54d | 0d |  | 96h | 4.8h | P2 |
| 62 | 1.3.7.1 | Design Display Layout | 4d? | 2008-02-28 A | 2008-03-05 | 47 | 30% | 2.8d? | 0.3d | 0d | RKB [50%] | 16h | 4.8h |  |
| 63 | 1.3.7.2 | Change Active Display | 3.08d? | 2008-03-05 | 2008-03-10 | 62 |  |  | 0.3d | 0d | 1ETW [65%] | 16h |  |  |
| 64 | 1.3.7.3 | Configure Layout/Number of Display | 4.62d? | 2008-03-10 | 2008-03-17 | 63 |  |  | 0.3d | 0d | 1ETW [65%] | 24h |  |  |
| 65 | 1.3.7.4 | Display Traversing | 3.08d? | 2008-03-17 | 2008-03-20 | 64 |  |  | 0.3d | 0d | 1ETW [65%] | 16h |  |  |
| 66 | 1.3.7.5 | Show/Hide Status & Softkey bar | 1.54d? | 2008-03-20 | 2008-03-25 | 65 |  |  | 0.3d | 0d | 1ETW [65%] | 8h |  |  |
| 67 | 1.3.7.6 | Full screen Graph Mode | 1.54d? | 2008-03-25 | 2008-03-26 | 66 |  |  | 0.3d | 0d | 1ETW [65%] | 8h |  |  |
| 68 | 1.3.7.7 | Code Review | 1.54d | 2009-06-01 | 2009-06-02 | 67 |  |  | 0.54d |  | 1ETW [65%] | 8h |  |  |
| 69 | 1.3.8 | **XML Based Menu Tree Framework** | 44.86d? | 2008-02-04 A | 2008-04-04 |  | 15% | 38.3d? | 302.3d | 301.76d |  | 116h | 18h | P2 |
| 70 | 1.3.8.1 | Design XML schema | 2.14d? | 2008-03-05 A | 2008-03-07 A | 62 | 100% |  |  |  | RKB [70%] | 12h | 12h |  |
| 71 | 1.3.8.2 | Desgin SoftKey handling Framework | 2.14d? | 2008-03-07 A | 2008-03-12 | 70 | 50% | 1.07d? | 8.64d | 0d | RKB [70%] | 12h | 6h |  |
| 72 | 1.3.8.3 | Populate Softkey handler memory objects from XML File | 2.31d? | 2008-03-12 | 2008-03-17 | 71, 41 |  |  | 47.1d | 0d | Pallavi [65%] | 12h |  |  |
| 73 | 1.3.8.4 | Implement Softkey ( 4/7 ) More key Traversing mechansim | 2.31d? | 2008-03-17 | 2008-03-19 | 72 |  |  | 47.1d | 0d | Pallavi [65%] | 12h |  |  |
| 74 | 1.3.8.5 | Implement Back Key functionality | 2.31d? | 2008-03-19 | 2008-03-24 | 73 |  |  | 46.1d | 0d | Pallavi [65%] | 12h |  |  |
| 75 | 1.3.8.6 | Implement Combo Box based Selection Mechansim | 2.31d? | 2008-03-24 | 2008-03-26 | 74 |  |  | 46.1d | 0d | Pallavi [65%] | 12h |  |  |
| 76 | 1.3.8.7 | Implement bi-value based selection ( Show/Hide, AC/DC etc) | 2.31d? | 2008-03-26 | 2008-03-31 | 75 |  |  | 46.1d | 0d | Pallavi [65%] | 12h |  |  |
| 77 | 1.3.8.8 | Unit test case for validating Menu State & Code review | 3.08d? | 2008-03-31 | 2008-04-03 | 76 |  |  | 46.1d | 0d | Pallavi [65%] | 16h |  |  |
| 78 | 1.3.8.9 | Lighten the respected Hard key's | 1.54d? | 2008-04-03 | 2008-04-04 | 77 |  |  | 46.1d | 3.29d | Pallavi [65%] | 8h |  |  |
| 79 | 1.3.8.10 | Code Review | 1.54d | 2008-02-04 | 2008-02-05 |  |  |  | 345.62d |  | Pallavi [65%] | 8h |  |  |

| ID | WBS | Task | Duration | Start | Finish | Predecessors | Total slack | Free slack | Resources | Work | Text1 |
| --- | --- | --- | --- | --- | --- | --- | --- | --- | --- | --- | --- |
| 80 | 1.3.9 | **Screen Header Panel** | 317.94d? | 2008-03-12 | 2009-06-01 |  | 2.08d | 1.54d |  | 56h | P2 |
| 81 | 1.3.9.1 | Design screen header layouts/ Class/ Exposed function | 4d? | 2008-03-12 | 2008-03-18 | 71 | 8.64d | 0d | RKB [50%] | 16h |  |
| 82 | 1.3.9.2 | Implementation | 4.62d? | 2008-03-26 | 2008-04-02 | 81, 67 | 2.08d | 0d | 1ETW [65%] | 24h |  |
| 83 | 1.3.9.3 | Unit test case | 1.54d? | 2008-04-02 | 2008-04-03 | 82 | 2.08d | 0d | 1ETW [65%] | 8h |  |
| 84 | 1.3.9.4 | Code reviews/unit test case reviews | 1.54d | 2009-05-28 | 2009-06-01 | 83 | 2.08d |  | 1ETW [65%] | 8h |  |
| 85 | 1.3.10 | **Status Panel** | 312.4d? | 2008-03-18 | 2009-05-28 |  | 3.62d | 3.08d |  | 48h | P2 |
| 86 | 1.3.10.1 | Design Status Panel layout/ Exposed classes/ Functions | 4d? | 2008-03-18 | 2008-03-25 | 81 | 9.41d | 0d | RKB [50%] | 16h |  |
| 87 | 1.3.10.2 | Implementation of status panel | 3.08d? | 2008-04-03 | 2008-04-08 | 86, 83 | 2.53d | 0d | 1ETW [65%] | 16h |  |
| 88 | 1.3.10.3 | Unit test case | 1.54d? | 2008-04-08 | 2008-04-10 | 87 | 2.53d | 0d | 1ETW [65%] | 8h |  |
| 89 | 1.3.10.4 | Code reviews/unit test case reviews | 1.54d | 2009-05-27 | 2009-05-28 | 88 | 3.62d |  | 1ETW [65%] | 8h |  |
| 90 | 1.3.11 | **Analyser Mode Management : FFT** | 305.86d? | 2008-03-25 | 2009-05-27 |  | 5.15d | 0d |  | 44h | P2 |
| 91 | 1.3.11.1 | Design | 2d? | 2008-03-25 | 2008-03-27 | 86 | 9.41d | 0d | RKB [50%] | 8h |  |
| 92 | 1.3.11.2 | Implementation | 3.85d? | 2008-04-10 | 2008-04-17 | 91, 88 | 6.14d | 0d | 1ETW [65%] | 20h |  |
| 93 | 1.3.11.3 | Unit Testing | 1.54d? | 2008-04-17 | 2008-04-21 | 92 | 5.14d | 0d | 1ETW [65%] | 8h |  |
| 94 | 1.3.11.4 | Code Review | 1.54d? | 2009-05-25 | 2009-05-27 | 93 | 5.15d |  | 1ETW [65%] | 8h |  |
| 95 | 1.3.12 | **Module Integration** | 8d? | 2008-03-27 | 2008-04-08 |  | 9.41d | 300.48d |  | 32h | P2 |
| 96 | 1.3.12.1 | Module Integration GUI - Inst Interface | 4d? | 2008-03-27 | 2008-04-02 | 91 | 9.41d | 0d | RKB [50%] | 16h |  |
| 97 | 1.3.12.2 | Module integration GUI - AML | 4d? | 2008-04-02 | 2008-04-08 | 96 | 10.41d | 0d | RKB [50%] | 16h |  |
| 98 | 1.3.13 | **Configure Analyzer Frequency** | 227.4d? | 2008-04-08 | 2009-02-19 |  | 11.41d | 68.46d |  | 48h | P2 |
| 99 | 1.3.13.1 | Design | 2d? | 2008-04-08 | 2008-04-10 | 97 | 11.41d | 0d | RKB [50%] | 8h |  |
| 100 | 1.3.13.2 | Implementation | 4.62d? | 2008-04-10 | 2008-04-17 | 99, 78 | 41.82d | 0d | Pallavi [65%] | 24h |  |
| 101 | 1.3.13.3 | Unit Testing | 1.54d? | 2008-04-17 | 2008-04-22 | 100 | 40.82d | 0d | Pallavi [65%] | 8h |  |
| 102 | 1.3.13.4 | Code reviews/unit test case reviews | 1.54d | 2008-06-02 | 2009-02-19 | 101 | 73.61d |  | Pallavi [65%] | 8h |  |
| 103 | 1.3.14 | **Configure Triggering : Free Run** | 292.32d? | 2008-04-10 | 2009-05-25 |  | 6.69d | 6.15d |  | 32h | P2 |
| 104 | 1.3.14.1 | Design | 2d? | 2008-04-10 | 2008-04-15 | 99 | 10.41d | 0d | RKB [50%] | 8h |  |
| 105 | 1.3.14.2 | Implementation | 3.08d? | 2008-04-21 | 2008-04-24 | 104, 93 | 5.69d | 0d | 1ETW [65%] | 16h |  |
| 106 | 1.3.14.3 | Code/unit test Review | 1.54d? | 2009-05-21 | 2009-05-25 | 105 | 6.69d |  | 1ETW [65%] | 8h |  |

| ID | WBS | Task | Duration | Start | Finish | Predecessors | Total slack | Free slack | Resources | Work | Text1 |
| --- | --- | --- | --- | --- | --- | --- | --- | --- | --- | --- | --- |
| 107 | 1.3.15 | **Configure ARM : Automatic** | 287.78d? | 2008-04-15 | 2009-05-21 |  | 8.23d | 7.69d |  | 28h | P2 |
| 108 | 1.3.15.1 | Design | 1d? | 2008-04-15 | 2008-04-16 | 104 | 13.48d | 0d | RKB [50%] | 4h |  |
| 109 | 1.3.15.2 | Implementation | 3.08d? | 2008-04-24 | 2008-04-30 | 105, 108 | 8.36d | 0d | 1ETW [65%] | 16h |  |
| 110 | 1.3.15.3 | Code/unit test Review | 1.54d? | 2009-05-20 | 2009-05-21 | 109 | 8.23d |  | 1ETW [65%] | 8h |  |
| 111 | 1.3.16 | **Start/Pause/Run** | 30.4d? | 2008-04-16 | 2008-05-28 |  | 13.48d | 259.46d |  | 48h | P2 |
| 112 | 1.3.16.1 | Design the framework | 3d? | 2008-04-16 | 2008-04-22 | 108 | 12.48d | 0d | RKB [50%] | 12h |  |
| 113 | 1.3.16.2 | Implementation of Run Behaviour | 3.08d? | 2008-04-22 | 2008-04-25 | 112, 101 | 40.82d | 0d | Pallavi [65%] | 16h |  |
| 114 | 1.3.16.3 | Unit testing | 2.31d? | 2008-04-25 | 2008-04-29 | 113 | 40.82d | 0d | Pallavi [65%] | 12h |  |
| 115 | 1.3.16.4 | Code Review/ Unit test case review | 1.54d | 2008-05-27 | 2008-05-28 | 114 | 264.62d |  | Pallavi [65%] | 8h |  |
| 116 | 1.3.17 | **Configure Measurements: THD** | 280.4d? | 2008-04-22 | 2009-05-19 |  | 10.62d | 10.08d |  | 100h | P2 |
| 117 | 1.3.17.1 | Design Framework for THD configuration | 3d? | 2008-04-22 | 2008-04-25 | 112 | 12.48d | 0d | RKB [50%] | 12h |  |
| 118 | 1.3.17.2 | Design Framework for Temporary Measurement flow | 5d? | 2008-04-25 | 2008-05-05 | 117 | 11.48d | 0d | RKB [50%] | 20h |  |
| 119 | 1.3.17.3 | Implement screen ( With Live Chart) | 3.85d? | 2008-05-05 | 2008-05-08 | 118, 109 | 11.48d | 0d | 1ETW [65%] | 20h |  |
| 120 | 1.3.17.4 | Hooks the value change on screen with Temporary Measurement flow | 2.31d? | 2008-05-08 | 2008-05-13 | 119 | 11.48d | 0d | 1ETW [65%] | 12h |  |
| 121 | 1.3.17.5 | Display THD Measurement Value on Status bar | 2.31d? | 2008-05-13 | 2008-05-15 | 120 | 11.48d | 0d | 1ETW [65%] | 12h |  |
| 122 | 1.3.17.6 | Unit test case | 3.08d? | 2008-05-15 | 2008-05-20 | 121 | 11.48d | 0d | 1ETW [65%] | 16h |  |
| 123 | 1.3.17.7 | Code Review/ Unit test case review/Design screen/ Screen usability reviews with Jan Ryles | 1.54d | 2009-05-18 | 2009-05-19 | 122 | 10.62d |  | 1ETW [65%] | 8h |  |
| 124 | 1.3.18 | **Configure Measurements : Harmonic Power Value** | 20.36d? | 2008-04-29 | 2008-05-28 |  | 40.82d | 259.97d |  | 60h | P2 |
| 125 | 1.3.18.1 | Design Framework for Harmonic Power configuration | 1.54d? | 2008-04-29 | 2008-05-02 | 114 | 39.82d | 0d | Pallavi [65%] | 8h |  |
| 126 | 1.3.18.2 | Design Framework for Temporary Measurement flow | 2.31d? | 2008-05-02 | 2008-05-06 | 125 | 39.82d | 0d | Pallavi [65%] | 12h |  |
| 127 | 1.3.18.3 | Implement screen ( With Live Chart) | 1.54d? | 2008-05-06 | 2008-05-08 | 126, 109 | 39.82d | 0d | Pallavi [65%] | 8h |  |
| 128 | 1.3.18.4 | Hooks the value change on screen with Temporary Measurement flow | 1.54d? | 2008-05-08 | 2008-05-09 | 127 | 39.82d | 0d | Pallavi [65%] | 8h |  |
| 129 | 1.3.18.5 | Display Harmonic power value Measurement Value on Status bar | 1.54d | 2008-05-09 | 2008-05-13 | 128 | 39.82d | 0d | Pallavi [65%] | 8h |  |
| 130 | 1.3.18.6 | Unit test case | 1.54d? | 2008-05-13 | 2008-05-14 | 129 | 39.82d | 0d | Pallavi [65%] | 8h |  |
| 131 | 1.3.18.7 | Code Review/ Unit test case review/Design screen/ Screen usability reviews with Jan Ryles | 1.54d | 2008-05-26 | 2008-05-28 | 130 | 265.12d |  | Pallavi [65%] | 8h |  |

| ID | WBS | Task | Duration | Start | Finish | Predecessors | Total slack | Free slack | Resources | Work | Text1 |
| --- | --- | --- | --- | --- | --- | --- | --- | --- | --- | --- | --- |
| 132 | 1.3.19 | **Configure Measurements : Side band power** | 15.23d? | 2008-05-05 | 2008-05-26 |  | 14.69d | 261.63d |  | 60h | P2 |
| 133 | 1.3.19.1 | Design Framework for Side band power configuration | 2d? | 2008-05-05 | 2008-05-07 | 118 | 14.69d | 0d | RKB [50%] | 8h |  |
| 134 | 1.3.19.2 | Design Framework for Temporary Measurement flow | 3d? | 2008-05-07 | 2008-05-12 | 133 | 14.69d | 0d | RKB [50%] | 12h |  |
| 135 | 1.3.19.3 | Implement screen ( With Live Chart) | 1.54d? | 2008-05-14 | 2008-05-16 | 134, 130 | 39.82d | 0d | Pallavi [65%] | 8h |  |
| 136 | 1.3.19.4 | Hooks the value change on screen with Temporary Measurement flow | 1.54d? | 2008-05-16 | 2008-05-19 | 135 | 39.82d | 0d | Pallavi [65%] | 8h |  |
| 137 | 1.3.19.5 | Display side band power Measurement Value on Status bar | 1.54d | 2008-05-19 | 2008-05-21 | 136 | 39.82d | 0d | Pallavi [65%] | 8h |  |
| 138 | 1.3.19.6 | Unit test case | 1.54d? | 2008-05-21 | 2008-05-22 | 137 | 39.82d | 0d | Pallavi [65%] | 8h |  |
| 139 | 1.3.19.7 | Code Review/ Unit test case review/Design screen/ Screen usability reviews with Jan Ryles | 1.54d | 2008-05-22 | 2008-05-26 | 138 | 266.78d |  | Pallavi [65%] | 8h |  |
| 140 | 1.3.20 | **Configure Measurements : Band power value** | 263.9d? | 2008-05-12 | 2009-05-15 |  | 13.12d | 7.96d |  | 60h | P2 |
| 141 | 1.3.20.1 | Design framework for band power configuration | 2d? | 2008-05-12 | 2008-05-14 | 134 | 14.69d | 0d | RKB [50%] | 8h |  |
| 142 | 1.3.20.2 | Design Framework for Temporary Measurement flow | 3d? | 2008-05-14 | 2008-05-19 | 141 | 14.69d | 0d | RKB [50%] | 12h |  |
| 143 | 1.3.20.3 | Implement screen ( With Live Chart) | 1.54d? | 2008-05-20 | 2008-05-22 | 142, 122 | 13.15d | 0d | 1ETW [65%] | 8h |  |
| 144 | 1.3.20.4 | Hooks the value change on screen with Temporary Measurement flow | 1.54d? | 2008-05-22 | 2008-05-23 | 143 | 13.15d | 0d | 1ETW [65%] | 8h |  |
| 145 | 1.3.20.5 | Display band power Measurement Value on Status bar | 1.54d | 2008-05-23 | 2008-05-27 | 144 | 13.15d | 0d | 1ETW [65%] | 8h |  |
| 146 | 1.3.20.6 | Unit test case | 1.54d? | 2008-05-27 | 2008-05-28 | 145 | 13.15d | 0d | 1ETW [65%] | 8h |  |
| 147 | 1.3.20.7 | Code Review/ Unit test case review/Design screen/ Screen usability reviews with Jan Ryles | 1.54d | 2009-05-13 | 2009-05-15 | 146 | 13.12d |  | 1ETW [65%] | 8h |  |
| 148 | 1.3.21 | **File Service** | 5d? | 2008-05-19 | 2008-05-26 |  | 16.64d | 261.86d |  | 20h | P2 |
| 149 | 1.3.21.1 | Define File/Directory structure hierarchy | 4d? | 2008-05-19 | 2008-05-23 | 142 | 16.64d | 0d | RKB [50%] | 16h |  |
| 150 | 1.3.21.2 | Review with team | 1d? | 2008-05-23 | 2008-05-26 | 149 | 16.64d | 0d | RKB [50%] | 4h |  |
| 151 | 1.3.22 | **Linear spectrum Chart** | 158.14d? | 2008-08-05 | 2009-03-13 |  | 58.01d | 57.48d |  | 104h | P2 |
| 152 | 1.3.22.1 | Implement Chart View Object | 3.57d? | 2008-08-05 | 2008-08-08 | 30 | 59.43d | 0d | Anurag [70%] | 20h |  |
| 153 | 1.3.22.2 | Support multiple X-Axis Type ( Lin, Log) | 2.86d? | 2008-08-12 | 2008-08-18 | 152 | 59.43d | 0d | Anurag [70%] | 16h |  |
| 154 | 1.3.22.3 | Support multiple Data point units | 1.43d? | 2008-08-22 | 2008-08-26 | 153 | 58.86d | 0.43d | Anurag [70%] | 8h |  |
| 155 | 1.3.22.4 | Y-Axis Scaling ( Auto Sclaing) Display only | 1.43d? | 2008-08-29 | 2008-09-01 | 154 | 56.84d | 0.57d | Anurag [70%] | 8h |  |
| 156 | 1.3.22.5 | Multiple channels support | 2.86d? | 2008-09-04 | 2008-09-08 | 155 | 56.41d | 0.14d | Anurag [70%] | 16h |  |
| 157 | 1.3.22.6 | Integrate with data push mechnaism | 1.43d? | 2008-09-10 | 2008-09-11 | 156 | 56.57d | 0d | Anurag [70%] | 8h |  |
| 158 | 1.3.22.7 | unit testing | 2.86d? | 2008-09-15 | 2008-09-18 | 157 | 57.57d | 0d | Anurag [70%] | 16h |  |
| 159 | 1.3.22.8 | Code Review/ Unit test case review/Design screen/ Screen usability reviews with Jan Ryles | 2.14d | 2009-03-10 | 2009-03-13 | 158 | 58.01d |  | Anurag [70%] | 12h |  |

| ID | WBS | Task | Duration | Start | Finish | Predecessors | Total slack | Free slack | Resources | Work | Text1 |
| --- | --- | --- | --- | --- | --- | --- | --- | --- | --- | --- | --- |
| 160 | 1.3.23 | **Common Graph Cordinate implementation** | 123d? | 2008-09-18 | 2009-03-10 |  | 60.14d | 60.19d |  | 64h | p2 |
| 161 | 1.3.23.1 | Linear Magnitude | 1.43d? | 2008-09-18 | 2008-09-19 | 158 | 60.14d | 0d | Anurag [70%] | 8h |  |
| 162 | 1.3.23.2 | Log Magnitude | 1.43d? | 2008-09-29 | 2008-09-30 | 161 | 60.41d | 0d | Anurag [70%] | 8h |  |
| 163 | 1.3.23.3 | DB Magnitude | 1.43d? | 2008-10-01 | 2008-10-03 | 162 | 60.29d | 0d | Anurag [70%] | 8h |  |
| 164 | 1.3.23.4 | Real Imagainary | 1.43d? | 2008-10-07 | 2008-10-08 | 163 | 62.43d | 0.43d | Anurag [70%] | 8h |  |
| 165 | 1.3.23.5 | Phase, UnWrapped Phase | 1.43d? | 2008-10-10 | 2008-10-13 | 164 | 61.71d | 0d | Anurag [70%] | 8h |  |
| 166 | 1.3.23.6 | Group Delay | 1.43d? | 2008-10-14 | 2008-10-16 | 165 | 61.71d | 0d | Anurag [70%] | 8h |  |
| 167 | 1.3.23.7 | Polar | 1.43d? | 2008-10-17 | 2008-10-21 | 166 | 61.16d | 0d | Anurag [70%] | 8h |  |
| 168 | 1.3.23.8 | Code Review/ Unit test case review/Design screen/ Screen usability reviews with Jan Ryles | 1.43d? | 2009-03-09 | 2009-03-10 | 167 | 60.73d |  | Anurag [70%] | 8h |  |
| 169 | 1.3.24 | **Nyquist Chart** | 98d? | 2008-10-22 | 2009-03-09 |  | 61.59d | 61.05d |  | 40h | P2 |
| 170 | 1.3.24.1 | Implement Chart View Object | 1.43d? | 2008-10-22 | 2008-10-23 | 167 | 65d | 0d | Anurag [70%] | 8h |  |
| 171 | 1.3.24.2 | Support multiple X-Axis Type ( Lin, Log) & Y-Axis scaling | 1.43d? | 2008-10-27 | 2008-10-29 | 170 | 64.14d | 0d | Anurag [70%] | 8h |  |
| 172 | 1.3.24.3 | Support multiple Data point units | 1.43d? | 2008-10-31 | 2008-11-03 | 171 | 64.29d | 0d | Anurag [70%] | 8h |  |
| 173 | 1.3.24.4 | Multiple channels support\Marker support | 0.71d? | 2008-11-05 | 2008-11-05 | 172 | 63.14d | 0d | Anurag [70%] | 4h |  |
| 174 | 1.3.24.5 | Unit test case | 1.43d? | 2008-11-07 | 2008-11-10 | 173 | 63.59d | 0d | Anurag [70%] | 8h |  |
| 175 | 1.3.24.6 | Code Review/ Unit test case review/Design screen/ Screen usability reviews with Jan Ryles | 0.71d? | 2009-03-06 | 2009-03-09 | 174 | 61.59d |  | Anurag [70%] | 4h |  |
| 176 | 1.3.25 | **Nichols chart** | 82.71d? | 2008-11-12 | 2009-03-06 |  | 62.3d | 61.76d |  | 40h | P2 |
| 177 | 1.3.25.1 | Implement Chart View Object | 1.43d? | 2008-11-12 | 2008-11-13 | 174 | 64.41d | 0d | Anurag [70%] | 8h |  |
| 178 | 1.3.25.2 | Support multiple X-Axis Type ( Lin, Log) & Y-Axis scaling | 1.43d? | 2008-11-14 | 2008-11-17 | 177 | 64.29d | 0d | Anurag [70%] | 8h |  |
| 179 | 1.3.25.3 | Support multiple Data point units | 0.71d? | 2008-11-19 | 2008-11-19 | 178 | 62.86d | 0d | Anurag [70%] | 4h |  |
| 180 | 1.3.25.4 | Multiple channels support\Marker support | 1.43d? | 2008-11-21 | 2008-11-24 | 179 | 62.86d | 0d | Anurag [70%] | 8h |  |
| 181 | 1.3.25.5 | Unit test case | 1.43d? | 2008-11-24 | 2008-11-26 | 180 | 62.86d | 0d | Anurag [70%] | 8h |  |
| 182 | 1.3.25.6 | Code Review/ Unit test case review/Design screen/ Screen usability reviews with Jan Ryles | 0.71d? | 2009-03-06 | 2009-03-06 | 181 | 62.3d |  | Anurag [70%] | 4h |  |
| 183 | 1.3.26 | **WaterFall** | 66.86d? | 2008-12-04 | 2009-03-09 |  | 62.16d | 61.62d |  | 96h | P2 |
| 184 | 1.3.26.1 | Implement Chart View Object | 4.29d? | 2008-12-04 | 2008-12-11 | 181 | 64.43d | 0d | Anurag [70%] | 24h |  |
| 185 | 1.3.26.2 | Z-Axis Range support | 3.57d? | 2008-12-16 | 2008-12-19 | 184 | 64.43d | 0d | Anurag [70%] | 20h |  |
| 186 | 1.3.26.3 | Skew angle | 2.86d? | 2008-12-24 | 2008-12-30 | 185 | 63.43d | 0d | Anurag [70%] | 16h |  |
| 187 | 1.3.26.4 | Line clipping | 2.86d? | 2009-01-01 | 2009-01-06 | 186 | 63.43d | 1.93d | Anurag [70%] | 16h |  |
| 188 | 1.3.26.5 | Unit test case | 2.86d? | 2009-01-12 | 2009-01-14 | 187 | 62.14d | 0d | Anurag [70%] | 16h |  |
| 189 | 1.3.26.6 | Code Review/ Unit test case review/Design screen/ Screen usability reviews with Jan Ryles | 0.71d? | 2009-03-06 | 2009-03-09 | 188 | 62.16d |  | Anurag [70%] | 4h |  |

| ID | WBS | Task | Duration | Start | Finish | Predecessors | Total slack | Free slack | Resources | Work | Text1 |
| --- | --- | --- | --- | --- | --- | --- | --- | --- | --- | --- | --- |
| 190 | 1.3.27 | **Spectrogram** | 20.71d? | 2009-01-21 | 2009-02-19 |  | 73.59d | 73.05d |  | 72h | P2 |
| 191 | 1.3.27.1 | Implement Chart View Object | 5.71d? | 2009-01-21 | 2009-01-29 | 188 | 76.43d | 1.43d | Anurag [70%] | 32h |  |
| 192 | 1.3.27.2 | multiple color intensity | 1.43d? | 2009-02-02 | 2009-02-03 | 191 | 75d | 0d | Anurag [70%] | 8h |  |
| 193 | 1.3.27.3 | Z-Axis Range , Top, Bottom | 2.14d? | 2009-02-04 | 2009-02-06 | 192 | 75d | 2.14d | Anurag [70%] | 12h |  |
| 194 | 1.3.27.4 | Unit test case | 2.14d? | 2009-02-16 | 2009-02-18 | 193 | 73.59d | 0d | Anurag [70%] | 12h |  |
| 195 | 1.3.27.5 | Code Review/ Unit test case review/Design screen/ Screen usability reviews with Jan Ryles | 1.43d? | 2009-02-18 | 2009-02-19 | 194 | 73.59d |  | Anurag [70%] | 8h |  |
| 196 | 1.3.28 | **Display Error Log** | 232.16d? | 2008-05-26 | 2009-04-15 |  | 16.64d |  |  | 104h | P3 |
| 197 | 1.3.28.1 | Design Framework for showing Error Log | 4d? | 2008-05-26 | 2008-05-30 | 150 | 16.64d | 0d | RKB [50%] | 16h |  |
| 198 | 1.3.28.2 | Implementation | 4.62d? | 2008-05-30 | 2008-06-05 | 197, 138 | 34.51d | 0d | Pallavi [65%] | 24h |  |
| 199 | 1.3.28.3 | Save Error Log in different format | 3.08d? | 2008-06-05 | 2008-06-10 | 198 | 34.51d | 0d | Pallavi [65%] | 16h |  |
| 200 | 1.3.28.4 | Filter Error log | 3.08d? | 2008-06-10 | 2008-06-13 | 199 | 34.51d | 0d | Pallavi [65%] | 16h |  |
| 201 | 1.3.28.5 | Enable/Show/Clear/Save Debug Error log | 4.62d? | 2008-06-13 | 2008-06-20 | 200 | 34.51d | 0d | Pallavi [65%] | 24h |  |
| 202 | 1.3.28.6 | Code reviews/unit test case reviews | 1.54d | 2009-04-13 | 2009-04-15 | 201 | 35.85d |  | Pallavi [65%] | 8h |  |
| 203 | 1.3.29 | **Configure Analyzer Channels** | 5.38d? | 2008-05-28 | 2008-06-05 |  | 14.56d |  |  | 28h | P3 |
| 204 | 1.3.29.1 | Implementation | 3.85d? | 2008-05-28 | 2008-06-03 | 146 | 14.56d | 0d | 1ETW [65%] | 20h |  |
| 205 | 1.3.29.2 | Unit Testing/Code Review | 1.54d? | 2008-06-03 | 2008-06-05 | 204 | 14.56d | 0d | 1ETW [65%] | 8h |  |
| 206 | 1.3.30 | **Configure Measurements : THD+n** | 248.45d? | 2008-05-30 | 2009-05-13 |  | 14.56d | 14.02d |  | 68h | P3 |
| 207 | 1.3.30.1 | Design Framework for THD+n configuration | 2d? | 2008-05-30 | 2008-06-03 | 197 | 16.64d | 0d | RKB [50%] | 8h |  |
| 208 | 1.3.30.2 | Implement Framework for Temporary Measurement flow | 3.08d? | 2008-06-05 | 2008-06-10 | 207, 205 | 14.56d | 0d | 1ETW [65%] | 16h |  |
| 209 | 1.3.30.3 | Implement screen ( With Live Chart) | 1.54d? | 2008-06-10 | 2008-06-11 | 208 | 14.56d | 0d | 1ETW [65%] | 8h |  |
| 210 | 1.3.30.4 | Hooks the value change on screen with Temporary Measurement flow | 1.54d? | 2008-06-11 | 2008-06-13 | 209 | 14.56d | 0d | 1ETW [65%] | 8h |  |
| 211 | 1.3.30.5 | Display THD+n Measurement Value on Status bar | 2.31d | 2008-06-13 | 2008-06-17 | 210 | 14.56d | 0d | 1ETW [65%] | 12h |  |
| 212 | 1.3.30.6 | Unit test case | 1.54d? | 2008-06-17 | 2008-06-19 | 211 | 14.56d | 0d | 1ETW [65%] | 8h |  |
| 213 | 1.3.30.7 | Code Review/ Unit test case review/Design screen/ Screen usability reviews with Jan Ryles | 1.54d | 2009-05-12 | 2009-05-13 | 212 | 14.56d |  | 1ETW [65%] | 8h |  |

| ID | WBS | Task | Duration | Start | Finish | Predecessors | Total slack | Free slack | Resources | Work | Text1 |
| --- | --- | --- | --- | --- | --- | --- | --- | --- | --- | --- | --- |
| 214 | 1.3.31 | **Configure Measurements : SNR** | 226.4d? | 2008-06-03 | 2009-04-15 |  | 26.1d |  |  | 60h | P3 |
| 215 | 1.3.31.1 | Design Framework for SNR configuration | 2d? | 2008-06-03 | 2008-06-05 | 207 | 26.1d | 0d | RKB [50%] | 8h |  |
| 216 | 1.3.31.2 | Implement Framework for Temporary Measurement flow | 2.31d? | 2008-06-20 | 2008-06-24 | 215, 201 | 34.51d | 0d | Pallavi [65%] | 12h |  |
| 217 | 1.3.31.3 | Implement screen ( With Live Chart) | 1.54d? | 2008-06-24 | 2008-06-26 | 216 | 34.51d | 0d | Pallavi [65%] | 8h |  |
| 218 | 1.3.31.4 | Hooks the value change on screen with Temporary Measurement flow | 1.54d? | 2008-06-26 | 2008-06-27 | 217 | 34.51d | 0d | Pallavi [65%] | 8h |  |
| 219 | 1.3.31.5 | Display SNR Measurement Value on Status bar | 1.54d | 2008-06-27 | 2008-07-01 | 218 | 35.51d | 0d | Pallavi [65%] | 8h |  |
| 220 | 1.3.31.6 | Unit test case | 1.54d? | 2008-07-01 | 2008-07-02 | 219 | 35.51d | 0d | Pallavi [65%] | 8h |  |
| 221 | 1.3.31.7 | Code Review/ Unit test case review/Design screen/ Screen usability reviews with Jan Ryles | 1.54d | 2009-04-14 | 2009-04-15 | 220 | 35.62d |  | Pallavi [65%] | 8h |  |
| 222 | 1.3.32 | **Configure Measurements : SFDR** | 238.4d? | 2008-06-05 | 2009-05-05 |  | 21.62d |  |  | 60h | P3 |
| 223 | 1.3.32.1 | Design Framework for SFDR configuration | 2d? | 2008-06-05 | 2008-06-09 | 215 | 26.1d | 0d | RKB [50%] | 8h |  |
| 224 | 1.3.32.2 | Implement Framework for Temporary Measurement flow | 2.31d? | 2008-06-19 | 2008-06-23 | 223, 212 | 23.25d | 0d | 1ETW [65%] | 12h |  |
| 225 | 1.3.32.3 | Implement screen ( With Live Chart) | 1.54d? | 2008-06-23 | 2008-06-25 | 224 | 23.25d | 0d | 1ETW [65%] | 8h |  |
| 226 | 1.3.32.4 | Hooks the value change on screen with Temporary Measurement flow | 1.54d? | 2008-06-25 | 2008-06-26 | 225 | 23.25d | 0d | 1ETW [65%] | 8h |  |
| 227 | 1.3.32.5 | Display SFDR Measurement Value on Status bar | 1.54d | 2008-06-26 | 2008-06-30 | 226 | 23.25d | 0d | 1ETW [65%] | 8h |  |
| 228 | 1.3.32.6 | Unit test case | 1.54d? | 2008-06-30 | 2008-07-01 | 227 | 23.25d | 0d | 1ETW [65%] | 8h |  |
| 229 | 1.3.32.7 | Code Review/ Unit test case review/Design screen/ Screen usability reviews with Jan Ryles | 1.54d | 2009-05-04 | 2009-05-05 | 228 | 21.62d |  | 1ETW [65%] | 8h |  |
| 230 | 1.3.33 | **Configure Measurements : SINAD** | 233.4d? | 2008-06-09 | 2009-04-30 |  | 24.62d |  |  | 60h | P3 |
| 231 | 1.3.33.1 | Design framework for SINAD configuration | 2d? | 2008-06-09 | 2008-06-11 | 223 | 26.1d | 0d | RKB [50%] | 8h |  |
| 232 | 1.3.33.2 | Implement Framework for Temporary Measurement flow | 2.31d? | 2008-07-01 | 2008-07-03 | 231, 228 | 23.86d | 0d | 1ETW [65%] | 12h |  |
| 233 | 1.3.33.3 | Implement screen ( With Live Chart) | 1.54d? | 2008-07-03 | 2008-07-07 | 232 | 23.86d | 0d | 1ETW [65%] | 8h |  |
| 234 | 1.3.33.4 | Hooks the value change on screen with Temporary Measurement flow | 1.54d? | 2008-07-07 | 2008-07-09 | 233 | 23.86d | 0d | 1ETW [65%] | 8h |  |
| 235 | 1.3.33.5 | Display SINAD Measurement Value on Status bar | 1.54d | 2008-07-09 | 2008-07-10 | 234 | 23.86d | 0d | 1ETW [65%] | 8h |  |
| 236 | 1.3.33.6 | Unit test case | 1.54d? | 2008-07-10 | 2008-07-14 | 235 | 23.86d | 0d | 1ETW [65%] | 8h |  |
| 237 | 1.3.33.7 | Code Review/ Unit test case review/Design screen/ Screen usability reviews with Jan Ryles | 1.54d | 2009-04-29 | 2009-04-30 | 236 | 24.62d |  | 1ETW [65%] | 8h |  |

| ID | WBS | Task | Duration | Start | Finish | Predecessors | Total slack | Free slack | Resources | Work | Text1 |
| --- | --- | --- | --- | --- | --- | --- | --- | --- | --- | --- | --- |
| 238 | 1.3.34 | **Configure Measurements : ENOB** | 229.4d? | 2008-06-11 | 2009-04-28 |  | 25.62d | 20.46d |  | 64h | P3 |
| 239 | 1.3.34.1 | Design framework for ENOB configuration | 2d? | 2008-06-11 | 2008-06-13 | 231 | 26.1d | 0d | RKB [50%] | 8h |  |
| 240 | 1.3.34.2 | Implement Framework for Temporary Measurement flow | 2.31d? | 2008-07-14 | 2008-07-16 | 239, 236 | 25.62d | 0d | 1ETW [65%] | 12h |  |
| 241 | 1.3.34.3 | Implement screen ( With Live Chart) | 1.54d? | 2008-07-16 | 2008-07-17 | 240 | 25.62d | 0d | 1ETW [65%] | 8h |  |
| 242 | 1.3.34.4 | Hooks the value change on screen with Temporary Measurement flow | 1.54d? | 2008-07-17 | 2008-07-21 | 241 | 25.62d | 0d | 1ETW [65%] | 8h |  |
| 243 | 1.3.34.5 | Display ENOB Measurement Value on Status bar | 2.31d | 2008-07-21 | 2008-07-23 | 242 | 25.62d | 0d | 1ETW [65%] | 12h |  |
| 244 | 1.3.34.6 | Unit test case | 1.54d? | 2008-07-23 | 2008-07-25 | 243 | 25.62d | 0d | 1ETW [65%] | 8h |  |
| 245 | 1.3.34.7 | Code Review/ Unit test case review/Design screen/ Screen usability reviews with Jan Ryles | 1.54d | 2009-04-27 | 2009-04-28 | 244 | 25.62d | 20.46d | 1ETW [65%] | 8h |  |
| 246 | 1.3.35 | **Local/Remote Mode Implication** | 6d? | 2008-06-13 | 2008-06-23 |  | 26.1d |  |  | 24h | P3 |
| 247 | 1.3.35.1 | Configuring all FP components in Local & Remote mode | 3d? | 2008-06-13 | 2008-06-18 | 239 | 26.1d | 0d | RKB [50%] | 12h |  |
| 248 | 1.3.35.2 | Unit testing | 3d? | 2008-06-18 | 2008-06-23 | 247 | 26.1d | 0d | RKB [50%] | 12h |  |
| 249 | 1.3.36 | **Auto Power spectrum Chart** | 7.14d? | 2008-06-05 | 2008-06-16 |  | 55.92d |  |  | 40h | P3 |
| 250 | 1.3.36.1 | Implement Chart View Object | 2.14d? | 2008-06-05 | 2008-06-09 | 205 | 55.92d | 0d | Anurag [70%] | 12h |  |
| 251 | 1.3.36.2 | Support multiple X-Axis Type ( Lin, Log) & Y-Axis scaling | 1.43d? | 2008-06-09 | 2008-06-10 | 250 | 55.92d | 0d | Anurag [70%] | 8h |  |
| 252 | 1.3.36.3 | Support multiple Data point units and Multiple channels support\Marker support | 1.43d? | 2008-06-10 | 2008-06-12 | 251 | 55.92d | 0d | Anurag [70%] | 8h |  |
| 253 | 1.3.36.4 | Unit test case | 1.43d? | 2008-06-12 | 2008-06-13 | 252 | 55.92d | 0d | Anurag [70%] | 8h |  |
| 254 | 1.3.36.5 | Code Review/ Unit test case review/Design screen/ Screen usability reviews with Jan Ryles | 0.71d | 2008-06-13 | 2008-06-16 | 253 | 55.92d | 0d | Anurag [70%] | 4h |  |
| 255 | 1.3.37 | **Cross Power spectrum Chart** | 17.86d? | 2008-06-16 | 2008-07-10 |  | 55.92d |  |  | 100h | P3 |
| 256 | 1.3.37.1 | Implement Chart View Object | 5.71d? | 2008-06-16 | 2008-06-24 | 254 | 55.92d | 0d | Anurag [70%] | 32h |  |
| 257 | 1.3.37.2 | Support multiple X-Axis Type ( Lin, Log) | 1.43d? | 2008-06-24 | 2008-06-25 | 256 | 56.92d | 0d | Anurag [70%] | 8h |  |
| 258 | 1.3.37.3 | Support multiple Data point units | 1.43d? | 2008-06-25 | 2008-06-26 | 257 | 56.92d | 0d | Anurag [70%] | 8h |  |
| 259 | 1.3.37.4 | Y-Axis Scaling ( Auto Sclaing) Display only | 1.43d? | 2008-06-26 | 2008-06-30 | 258 | 56.92d | 0d | Anurag [70%] | 8h |  |
| 260 | 1.3.37.5 | Multiple channels support | 1.43d? | 2008-06-30 | 2008-07-01 | 259 | 56.92d | 0d | Anurag [70%] | 8h |  |
| 261 | 1.3.37.6 | Marker support | 1.43d? | 2008-07-01 | 2008-07-03 | 260 | 56.92d | 0d | Anurag [70%] | 8h |  |
| 262 | 1.3.37.7 | Integrate with data push mechnaism | 1.43d? | 2008-07-03 | 2008-07-04 | 261 | 56.92d | 0d | Anurag [70%] | 8h |  |
| 263 | 1.3.37.8 | unit test case | 2.14d? | 2008-07-04 | 2008-07-08 | 262 | 56.92d | 0d | Anurag [70%] | 12h |  |
| 264 | 1.3.37.9 | Code Review/ Unit test case review/Design screen/ Screen usability reviews with Jan Ryles | 1.43d | 2008-07-08 | 2008-07-10 | 263 | 56.92d | 0d | Anurag [70%] | 8h |  |

| ID | WBS | Task | Duration | Start | Finish | Predecessors | Total slack | Free slack | Resources | Work | Text1 |
| --- | --- | --- | --- | --- | --- | --- | --- | --- | --- | --- | --- |
| 265 | 1.3.38 | **Frequency Response Chart** | 6.43d? | 2008-07-10 | 2008-07-18 |  | 56.92d | 226.97d |  | 36h | P3 |
| 266 | 1.3.38.1 | Implement Chart View Object | 1.43d? | 2008-07-10 | 2008-07-11 | 264 | 56.92d | 0d | Anurag [70%] | 8h |  |
| 267 | 1.3.38.2 | Support multiple X-Axis Type ( Lin, Log) & Y-Axis scaling | 0.71d? | 2008-07-11 | 2008-07-14 | 266 | 56.92d | 0d | Anurag [70%] | 4h |  |
| 268 | 1.3.38.3 | Support multiple Data point units | 0.71d? | 2008-07-14 | 2008-07-15 | 267 | 56.92d | 0d | Anurag [70%] | 4h |  |
| 269 | 1.3.38.4 | Multiple channels support\Marker support | 1.43d? | 2008-07-15 | 2008-07-16 | 268 | 56.92d | 0d | Anurag [70%] | 8h |  |
| 270 | 1.3.38.5 | Unit test case | 1.43d? | 2008-07-16 | 2008-07-17 | 269 | 57.92d | 0d | Anurag [70%] | 8h |  |
| 271 | 1.3.38.6 | Code Review/ Unit test case review/Design screen/ Screen usability reviews with Jan Ryles | 0.71d? | 2008-07-17 | 2008-07-18 | 270 | 57.92d | 0d | Anurag [70%] | 4h |  |
| 272 | 1.3.39 | **Coherence Chart** | 168.06d? | 2008-07-18 | 2009-03-11 |  | 57.92d |  |  | 28h | P3 |
| 273 | 1.3.39.1 | Implement Chart View Object | 0.71d? | 2008-07-18 | 2008-07-21 | 271 | 57.92d | 0d | Anurag [70%] | 4h |  |
| 274 | 1.3.39.2 | Support multiple X-Axis Type ( Lin, Log) & Y-Axis scaling | 0.71d? | 2008-07-21 | 2008-07-22 | 273 | 58.92d | 1.07d | Anurag [70%] | 4h |  |
| 275 | 1.3.39.3 | Support multiple Data point units | 1.43d? | 2008-07-28 | 2008-07-29 | 274 | 58.64d | 0d | Anurag [70%] | 8h |  |
| 276 | 1.3.39.4 | Multiple channels support\Marker support | 0.71d? | 2008-07-29 | 2008-07-30 | 275 | 58.64d | 0d | Anurag [70%] | 4h |  |
| 277 | 1.3.39.5 | Unit test case | 0.71d? | 2008-07-30 | 2008-07-30 | 276 | 58.64d | 0d | Anurag [70%] | 4h |  |
| 278 | 1.3.39.6 | Code Review/ Unit test case review/Design screen/ Screen usability reviews with Jan Ryles | 0.71d? | 2009-03-10 | 2009-03-11 | 277 | 60.44d |  | Anurag [70%] | 4h |  |
| 279 | 1.3.40 | **Save Trace** | 210.63d? | 2008-06-23 | 2009-04-13 |  | 26.1d |  |  | 48h | P3 |
| 280 | 1.3.40.1 | Design framework for Saving trace | 3d? | 2008-06-23 | 2008-06-26 | 248 | 26.1d | 0d | RKB [50%] | 12h |  |
| 281 | 1.3.40.2 | Design & implement screen to trigger saving mechanism | 3.85d? | 2008-07-02 | 2008-07-08 | 280, 220 | 36.7d | 0d | Pallavi [65%] | 20h |  |
| 282 | 1.3.40.3 | unit testing | 2.31d? | 2008-07-08 | 2008-07-11 | 281 | 36.7d | 0d | Pallavi [65%] | 12h |  |
| 283 | 1.3.40.4 | design review/unit test review/usability review | 0.77d? | 2009-04-13 | 2009-04-13 | 282 | 37.39d |  | Pallavi [65%] | 4h |  |
| 284 | 1.3.41 | **Recall trace** | 207.63d? | 2008-06-26 | 2009-04-13 |  | 26.1d |  |  | 24h | P3 |
| 285 | 1.3.41.1 | Design framework for Loading trace | 1d? | 2008-06-26 | 2008-06-27 | 280 | 26.1d | 0d | RKB [50%] | 4h |  |
| 286 | 1.3.41.2 | Design & implement screen to trigger Loading mechanism | 1.54d? | 2008-07-11 | 2008-07-14 | 285, 282 | 36.7d | 0d | Pallavi [65%] | 8h |  |
| 287 | 1.3.41.3 | unit testing | 1.54d? | 2008-07-14 | 2008-07-16 | 286 | 37.7d | 0d | Pallavi [65%] | 8h |  |
| 288 | 1.3.41.4 | design review/unit test review/usability review | 0.77d? | 2009-04-13 | 2009-04-13 | 287 | 37.39d |  | Pallavi [65%] | 4h |  |

| ID | WBS | Task | Duration | Start | Finish | Predecessors | Total slack | Free slack | Resources | Work | Text1 |
| --- | --- | --- | --- | --- | --- | --- | --- | --- | --- | --- | --- |
| 289 | 1.3.42 | **Averaging** | 10d? | 2008-06-27 | 2008-07-11 |  | 26.1d |  |  | 40h | P3 |
| 290 | 1.3.42.1 | Configure different type of Averaging | 4d? | 2008-06-27 | 2008-07-03 | 285 | 26.1d | 0d | RKB [50%] | 16h |  |
| 291 | 1.3.42.2 | Implement Hooks for Manual Averaging (Accept /Reject) | 6d? | 2008-07-03 | 2008-07-11 | 290 | 26.1d | 0d | RKB [50%] | 24h |  |
| 292 | 1.3.43 | **Configure Measurements : Frequency damping** | 195.4d? | 2008-07-11 | 2009-04-10 |  | 27.1d |  |  | 60h | P4 |
| 293 | 1.3.43.1 | Design framework for Frequency dumping configuration | 2d? | 2008-07-11 | 2008-07-15 | 291 | 27.1d | 0d | RKB [50%] | 8h |  |
| 294 | 1.3.43.2 | Implement Framework for Temporary Measurement flow | 2.31d? | 2008-07-16 | 2008-07-18 | 293, 287 | 39.32d | 0d | Pallavi [65%] | 12h |  |
| 295 | 1.3.43.3 | Implement screen ( With Live Chart) | 1.54d? | 2008-07-18 | 2008-07-22 | 294 | 39.32d | 0d | Pallavi [65%] | 8h |  |
| 296 | 1.3.43.4 | Hooks the value change on screen with Temporary Measurement flow | 1.54d? | 2008-07-22 | 2008-07-23 | 295 | 39.32d | 0d | Pallavi [65%] | 8h |  |
| 297 | 1.3.43.5 | Display frequency dumping Value on Status bar | 1.54d | 2008-07-23 | 2008-07-25 | 296 | 39.32d | 0d | Pallavi [65%] | 8h |  |
| 298 | 1.3.43.6 | Unit test case | 1.54d? | 2008-07-25 | 2008-07-28 | 297 | 39.32d | 0d | Pallavi [65%] | 8h |  |
| 299 | 1.3.43.7 | Code Review/ Unit test case review/Design screen/ Screen usability reviews with Jan Ryles | 1.54d | 2009-04-09 | 2009-04-10 | 298 | 37.62d | 37.08d | Pallavi [65%] | 8h |  |
| 300 | 1.3.44 | **Scope View Chart** | 153.71d? | 2008-08-06 | 2009-03-09 |  | 58.79d |  |  | 48h | P4 |
| 301 | 1.3.44.1 | Implement Chart View Object | 2.86d? | 2008-08-06 | 2008-08-08 | 277 | 58.79d | 0d | Anurag [70%] | 16h |  |
| 302 | 1.3.44.2 | Support multiple X-Axis Type ( Lin, Log) & Y-Axis scaling | 1.43d? | 2008-08-08 | 2008-08-12 | 301 | 59.79d | 0d | Anurag [70%] | 8h |  |
| 303 | 1.3.44.3 | Support multiple Data point units | 1.43d? | 2008-08-12 | 2008-08-13 | 302 | 59.79d | 0d | Anurag [70%] | 8h |  |
| 304 | 1.3.44.4 | Multiple channels support\Marker support | 0.71d? | 2008-08-20 | 2008-08-20 | 303 | 59.71d | 0d | Anurag [70%] | 4h |  |
| 305 | 1.3.44.5 | Unit test case | 1.43d? | 2008-08-21 | 2008-08-22 | 304 | 59.71d | 0d | Anurag [70%] | 8h |  |
| 306 | 1.3.44.6 | Code Review/ Unit test case review/Design screen/ Screen usability reviews with Jan Ryles | 0.71d? | 2009-03-09 | 2009-03-09 | 305 | 62.44d |  | Anurag [70%] | 4h |  |
| 307 | 1.3.45 | **Save Configuration** | 190.4d? | 2008-07-15 | 2009-04-07 |  | 27.1d |  |  | 64h | P4 |
| 308 | 1.3.45.1 | Save & Recall stratgies | 1d? | 2008-07-15 | 2008-07-16 | 293 | 27.1d | 0d | RKB [50%] | 4h |  |
| 309 | 1.3.45.2 | Design framework for Saving configuration | 2d? | 2008-07-16 | 2008-07-18 | 308 | 27.1d | 0d | RKB [50%] | 8h |  |
| 310 | 1.3.45.3 | Implement exposed interface in each searlizable objects | 3.85d? | 2008-07-28 | 2008-08-01 | 309, 298 | 39.86d | 0d | Pallavi [65%] | 20h |  |
| 311 | 1.3.45.4 | Design & implement screen to trigger Saving mechanism | 1.54d? | 2008-08-01 | 2008-08-05 | 310 | 39.86d | 0d | Pallavi [65%] | 8h |  |
| 312 | 1.3.45.5 | unit testing | 3.08d? | 2008-08-05 | 2008-08-08 | 311 | 39.86d | 0d | Pallavi [65%] | 16h |  |
| 313 | 1.3.45.6 | design review/unit test review/usability review | 1.54d? | 2009-04-06 | 2009-04-07 | 312 | 41.62d |  | Pallavi [65%] | 8h |  |

| ID | WBS | Task | Duration | Start | Finish | Predecessors | Total slack | Free slack | Resources | Work | Text1 |
| --- | --- | --- | --- | --- | --- | --- | --- | --- | --- | --- | --- |
| 314 | 1.3.46 | **Load Configuration** | 187.47d? | 2008-07-18 | 2009-04-07 |  | 27.1d |  |  | 40h | P4 |
| 315 | 1.3.46.1 | Design framework for loading configuration | 1d? | 2008-07-18 | 2008-07-21 | 309 | 27.1d | 0d | RKB [50%] | 4h |  |
| 316 | 1.3.46.2 | Implement exposed interface in each searlizable objects | 1.54d? | 2008-08-08 | 2008-08-11 | 315, 312 | 41.7d | 0d | Pallavi [65%] | 8h |  |
| 317 | 1.3.46.3 | Design & implement screen to trigger loading mechanism | 1.54d? | 2008-08-11 | 2008-08-13 | 316 | 41.7d | 0d | Pallavi [65%] | 8h |  |
| 318 | 1.3.46.4 | unit testing | 3.08d? | 2008-08-13 | 2008-08-19 | 317 | 41.7d | 0d | Pallavi [65%] | 16h |  |
| 319 | 1.3.46.5 | design review/unit test review/usability review | 0.77d? | 2009-04-06 | 2009-04-07 | 318 | 41.55d |  | Pallavi [65%] | 4h |  |
| 320 | 1.3.47 | **View Configuration** | 185.63d? | 2008-07-21 | 2009-04-06 |  | 27.1d |  |  | 24h | P4 |
| 321 | 1.3.47.1 | Design & implement screen to trigger loading mechanism | 3d? | 2008-07-21 | 2008-07-24 | 315 | 27.1d | 0d | RKB [50%] | 12h |  |
| 322 | 1.3.47.2 | unit testing | 1.54d? | 2008-08-19 | 2008-08-20 | 321, 318 | 42.08d | 0d | Pallavi [65%] | 8h |  |
| 323 | 1.3.47.3 | design review/unit test review/usability review | 0.77d? | 2009-04-06 | 2009-04-06 | 322 | 42.39d |  | Pallavi [65%] | 4h |  |
| 324 | 1.3.48 | **CSV Data Writer** | 197.13d? | 2008-07-24 | 2009-04-27 |  | 27.1d |  |  | 32h | P4 |
| 325 | 1.3.48.1 | Design CSV Data Writer | 1d? | 2008-07-24 | 2008-07-25 | 321 | 27.1d | 0d | RKB [50%] | 4h |  |
| 326 | 1.3.48.2 | Implement Data Writer | 3.08d? | 2008-07-25 | 2008-07-30 | 325, 244 | 26.87d | 0d | 1ETW [65%] | 16h |  |
| 327 | 1.3.48.3 | unit testing | 1.54d? | 2008-07-30 | 2008-07-31 | 326 | 27.87d | 0d | 1ETW [65%] | 8h |  |
| 328 | 1.3.48.4 | design review/unit test review | 0.77d? | 2009-04-24 | 2009-04-27 | 327 | 27.89d |  | 1ETW [65%] | 4h |  |
| 329 | 1.3.49 | **CSV Data Reader** | 195.38d? | 2008-07-25 | 2009-04-24 |  | 28.64d |  |  | 32h | P4 |
| 330 | 1.3.49.1 | Design CSV Data Reader | 1d? | 2008-07-25 | 2008-07-28 | 325 | 32.49d | 0d | RKB [50%] | 4h |  |
| 331 | 1.3.49.2 | Implement Data Reader | 3.08d? | 2008-07-31 | 2008-08-06 | 330, 327 | 28.64d | 0d | 1ETW [65%] | 16h |  |
| 332 | 1.3.49.3 | unit testing | 1.54d? | 2008-08-06 | 2008-08-07 | 331 | 28.64d | 0d | 1ETW [65%] | 8h |  |
| 333 | 1.3.49.4 | design review/unit test review | 0.77d? | 2009-04-23 | 2009-04-24 | 332 | 28.64d |  | 1ETW [65%] | 4h |  |
| 334 | 1.3.50 | **Configure Analyzer Source** | 5.38d? | 2008-08-07 | 2008-08-14 |  | 30.32d |  |  | 28h | P5 |
| 335 | 1.3.50.1 | Implementation | 3.85d? | 2008-08-07 | 2008-08-13 | 332 | 30.32d | 0d | 1ETW [65%] | 20h |  |
| 336 | 1.3.50.2 | Unit Testing/Code Review | 1.54d? | 2008-08-13 | 2008-08-14 | 335 | 30.32d | 0d | 1ETW [65%] | 8h |  |
| 337 | 1.3.51 | **Configure Triggering : External Source** | 191.4d? | 2008-07-28 | 2009-04-21 |  | 31.62d |  |  | 40h | P5 |
| 338 | 1.3.51.1 | Design | 2d? | 2008-07-28 | 2008-07-30 | 330 | 42.16d | 0d | RKB [50%] | 8h |  |
| 339 | 1.3.51.2 | Implementation | 4.62d? | 2008-08-14 | 2008-08-22 | 336, 338 | 30.32d | 0d | 1ETW [65%] | 24h |  |
| 340 | 1.3.51.3 | Code/unit test Review | 1.54d? | 2009-04-20 | 2009-04-21 | 339 | 31.62d |  | 1ETW [65%] | 8h |  |

| ID | WBS | Task | Duration | Start | Finish | Predecessors | Total slack | Free slack | Resources | Work | Text1 |
| --- | --- | --- | --- | --- | --- | --- | --- | --- | --- | --- | --- |
| 341 | 1.3.52 | **Configure Triggering : Internal Source** | 190.07d? | 2008-07-30 | 2009-04-22 |  | 30.95d |  |  | 32h | P5 |
| 342 | 1.3.52.1 | Design | 2d? | 2008-07-30 | 2008-08-01 | 338 | 43.78d | 0d | RKB [50%] | 8h |  |
| 343 | 1.3.52.2 | Implementation | 3.08d? | 2008-08-22 | 2008-08-27 | 339, 342 | 30.32d | 0d | 1ETW [65%] | 16h |  |
| 344 | 1.3.52.3 | Code/unit test Review | 1.54d? | 2009-04-20 | 2009-04-22 | 343 | 30.95d |  | 1ETW [65%] | 8h |  |
| 345 | 1.3.53 | **Configure Triggering : Channel** | 187.4d? | 2008-08-01 | 2009-04-21 |  | 30.62d | 30.08d |  | 32h | P5 |
| 346 | 1.3.53.1 | Design | 2d? | 2008-08-01 | 2008-08-05 | 342 | 43.78d | 0d | RKB [50%] | 8h |  |
| 347 | 1.3.53.2 | Implementation | 3.08d? | 2008-08-27 | 2008-09-01 | 343, 346 | 32.48d | 1.47d | 1ETW [65%] | 16h |  |
| 348 | 1.3.53.3 | Code/unit test Review | 1.54d? | 2009-04-20 | 2009-04-21 | 347 | 30.62d |  | 1ETW [65%] | 8h |  |
| 349 | 1.3.54 | **Configure ARM : Manual** | 183.46d? | 2008-08-05 | 2009-04-17 |  | 33.55d |  |  | 32h | P5 |
| 350 | 1.3.54.1 | Design | 2d? | 2008-08-05 | 2008-08-07 | 346 | 44.78d | 0d | RKB [50%] | 8h |  |
| 351 | 1.3.54.2 | Implementation | 3.08d? | 2008-09-08 | 2008-09-11 | 347, 350 | 32.92d | 0d | 1ETW [65%] | 16h |  |
| 352 | 1.3.54.3 | Code/unit test Review | 1.54d? | 2009-04-16 | 2009-04-17 | 351 | 33.55d |  | 1ETW [65%] | 8h |  |
| 353 | 1.3.55 | **Configure ARM : Time Step** | 179.92d? | 2008-08-07 | 2009-04-16 |  | 34.09d |  |  | 32h | P5 |
| 354 | 1.3.55.1 | Design | 2d? | 2008-08-07 | 2008-08-11 | 350 | 44.78d | 0d | RKB [50%] | 8h |  |
| 355 | 1.3.55.2 | Implementation | 3.08d? | 2008-09-11 | 2008-09-16 | 351, 354 | 34.09d | 0d | 1ETW [65%] | 16h |  |
| 356 | 1.3.55.3 | Code/unit test Review | 1.54d? | 2009-04-14 | 2009-04-16 | 355 | 34.09d | 33.55d | 1ETW [65%] | 8h |  |
| 357 | 1.3.56 | **Configure ARM : RPM Step** | 176.4d? | 2008-08-11 | 2009-04-14 |  | 36.62d |  |  | 32h | P5 |
| 358 | 1.3.56.1 | Design | 2d? | 2008-08-11 | 2008-08-13 | 354 | 45.78d | 0d | RKB [50%] | 8h |  |
| 359 | 1.3.56.2 | Implementation | 3.08d? | 2008-09-23 | 2008-09-26 | 355, 358 | 36.42d | 0d | 1ETW [65%] | 16h |  |
| 360 | 1.3.56.3 | Code/unit test Review | 1.54d? | 2009-04-13 | 2009-04-14 | 359 | 36.62d |  | 1ETW [65%] | 8h |  |
| 361 | 1.3.57 | **Configure Measurements : Delay Time** | 168.93d? | 2008-08-13 | 2009-04-07 |  | 41.08d |  |  | 56h | P5 |
| 362 | 1.3.57.1 | Design framework for Delay time configuration | 2d? | 2008-08-13 | 2008-08-18 | 358 | 44.78d | 0d | RKB [50%] | 8h |  |
| 363 | 1.3.57.2 | Implement Framework for Temporary Measurement flow | 1.54d? | 2008-08-20 | 2008-08-22 | 362, 322 | 42.08d | 0d | Pallavi [65%] | 8h |  |
| 364 | 1.3.57.3 | Implement screen ( With Live Chart) | 1.54d? | 2008-08-22 | 2008-08-25 | 363 | 42.08d | 0d | Pallavi [65%] | 8h |  |
| 365 | 1.3.57.4 | Hooks the value change on screen with Temporary Measurement flow | 1.54d? | 2008-08-25 | 2008-08-27 | 364 | 42.08d | 0d | Pallavi [65%] | 8h |  |
| 366 | 1.3.57.5 | Display Delay time Value on Status bar | 1.54d | 2008-08-27 | 2008-08-28 | 365 | 42.08d | 0d | Pallavi [65%] | 8h |  |
| 367 | 1.3.57.6 | Unit test case | 1.54d? | 2008-08-28 | 2008-09-01 | 366 | 43.08d | 0d | Pallavi [65%] | 8h |  |
| 368 | 1.3.57.7 | Code Review/ Unit test case review/Design screen/ Screen usability reviews with Jan Ryles | 1.54d | 2009-04-03 | 2009-04-07 | 367 | 41.08d | 40.55d | Pallavi [65%] | 8h |  |

| ID | WBS | Task | Duration | Start | Finish | Predecessors | Total slack | Free slack | Resources | Work | Text1 |
| --- | --- | --- | --- | --- | --- | --- | --- | --- | --- | --- | --- |
| 369 | 1.3.58 | **Configure Measurements : Maximum overshoot** | 161.4d? | 2008-08-18 | 2009-03-31 |  | 46.62d |  |  | 56h | P5 |
| 370 | 1.3.58.1 | Design framework for maximum overshoot configuration | 2d? | 2008-08-18 | 2008-08-20 | 362 | 50d | 0d | RKB [50%] | 8h |  |
| 371 | 1.3.58.2 | Implement Framework for Temporary Measurement flow | 1.54d? | 2008-09-01 | 2008-09-04 | 370, 367 | 45.78d | 0d | Pallavi [65%] | 8h |  |
| 372 | 1.3.58.3 | Implement screen | 1.54d? | 2008-09-04 | 2008-09-05 | 371 | 45.78d | 0d | Pallavi [65%] | 8h |  |
| 373 | 1.3.58.4 | Hooks the value change on screen with Temporary Measurement flow | 1.54d? | 2008-09-05 | 2008-09-09 | 372 | 45.78d | 0d | Pallavi [65%] | 8h |  |
| 374 | 1.3.58.5 | Display maximum overshoot Value on Status bar | 1.54d | 2008-09-09 | 2008-09-10 | 373 | 45.78d | 0d | Pallavi [65%] | 8h |  |
| 375 | 1.3.58.6 | Unit test case | 1.54d? | 2008-09-10 | 2008-09-12 | 374 | 45.78d | 0d | Pallavi [65%] | 8h |  |
| 376 | 1.3.58.7 | Code Review/ Unit test case review/Design screen/ Screen usability reviews with Jan Ryles | 1.54d | 2009-03-30 | 2009-03-31 | 375 | 46.62d |  | Pallavi [65%] | 8h |  |
| 377 | 1.3.59 | **Configure Measurements : Rise time** | 159.85d? | 2008-08-20 | 2009-03-31 |  | 46.16d |  |  | 56h | P5 |
| 378 | 1.3.59.1 | Design framework for Rise time configuration | 2d? | 2008-08-20 | 2008-08-22 | 370 | 51d | 0d | RKB [50%] | 8h |  |
| 379 | 1.3.59.2 | Implement Framework for Temporary Measurement flow | 1.54d? | 2008-09-12 | 2008-09-15 | 378, 375 | 46.09d | 0d | Pallavi [65%] | 8h |  |
| 380 | 1.3.59.3 | Implement screen | 1.54d? | 2008-09-15 | 2008-09-17 | 379 | 46.09d | 0d | Pallavi [65%] | 8h |  |
| 381 | 1.3.59.4 | Hooks the value change on screen with Temporary Measurement flow | 1.54d? | 2008-09-17 | 2008-09-18 | 380 | 46.09d | 0d | Pallavi [65%] | 8h |  |
| 382 | 1.3.59.5 | Display rise time Value on Status bar | 1.54d | 2008-09-18 | 2008-09-22 | 381 | 46.09d | 0d | Pallavi [65%] | 8h |  |
| 383 | 1.3.59.6 | Unit test case | 1.54d? | 2008-09-22 | 2008-09-23 | 382 | 46.09d | 0d | Pallavi [65%] | 8h |  |
| 384 | 1.3.59.7 | Code Review/ Unit test case review/Design screen/ Screen usability reviews with Jan Ryles | 1.54d | 2009-03-30 | 2009-03-31 | 383 | 46.16d |  | Pallavi [65%] | 8h |  |
| 385 | 1.3.60 | **Configure Measurements : Setting time** | 157.4d | 2008-08-22 | 2009-03-31 |  | 46.62d |  |  | 56h | P5 |
| 386 | 1.3.60.1 | Design screen for Setting time configuration | 2d | 2008-08-22 | 2008-08-26 | 378 | 51d | 0d | RKB [50%] | 8h |  |
| 387 | 1.3.60.2 | Implement Framework for Temporary Measurement flow | 1.54d | 2008-09-23 | 2008-09-25 | 386, 383 | 47.7d | 0d | Pallavi [65%] | 8h |  |
| 388 | 1.3.60.3 | Implement screen | 1.54d | 2008-09-25 | 2008-09-26 | 387 | 47.7d | 0d | Pallavi [65%] | 8h |  |
| 389 | 1.3.60.4 | Hooks the value change on screen with Temporary Measurement flow | 1.54d | 2008-09-26 | 2008-09-30 | 388 | 47.7d | 0d | Pallavi [65%] | 8h |  |
| 390 | 1.3.60.5 | Display setting time Value on Status bar | 1.54d | 2008-09-30 | 2008-10-03 | 389 | 46.7d | 0d | Pallavi [65%] | 8h |  |
| 391 | 1.3.60.6 | Unit test case | 1.54d | 2008-10-03 | 2008-10-06 | 390 | 46.7d | 0d | Pallavi [65%] | 8h |  |
| 392 | 1.3.60.7 | Code Review/ Unit test case review/Design screen/ Screen usability reviews with Jan Ryles | 1.54d | 2009-03-30 | 2009-03-31 | 391 | 46.62d |  | Pallavi [65%] | 8h |  |

| ID | WBS | Task | Duration | Start | Finish | Predecessors | Total slack | Free slack | Constraint | Resources | Work | Text1 |
| --- | --- | --- | --- | --- | --- | --- | --- | --- | --- | --- | --- | --- |
| 393 | 1.3.61 | **Configure Measurements : Decay Time** | 150.78d? | 2008-08-26 | 2009-03-24 |  | 51d |  |  |  | 59.43h | P5 |
| 394 | 1.3.61.1 | Design screen for decay time configuration | 2.86d? | 2008-08-26 | 2008-08-28 | 386 | 51d | 0d | start no earlier than 2008-03-03 | RKB [50%] | 11.43h |  |
| 395 | 1.3.61.2 | Implement Framework for Temporary Measurement flow | 1.54d? | 2008-10-06 | 2008-10-08 | 394, 391 | 50.7d | 0d |  | Pallavi [65%] | 8h |  |
| 396 | 1.3.61.3 | Implement screen | 1.54d? | 2008-10-08 | 2008-10-10 | 395 | 49.7d | 0d |  | Pallavi [65%] | 8h |  |
| 397 | 1.3.61.4 | Hooks the value change on screen with Temporary Measurement flow | 1.54d? | 2008-10-10 | 2008-10-14 | 396 | 49.7d | 0d |  | Pallavi [65%] | 8h |  |
| 398 | 1.3.61.5 | Display decay time Value on Status bar | 1.54d | 2008-10-14 | 2008-10-15 | 397 | 49.7d | 0d |  | Pallavi [65%] | 8h |  |
| 399 | 1.3.61.6 | Unit test case | 1.54d? | 2008-10-15 | 2008-10-17 | 398 | 49.7d | 0d |  | Pallavi [65%] | 8h |  |
| 400 | 1.3.61.7 | Code Review/ Unit test case review/Design screen/ Screen usability reviews with Jan Ryles | 1.54d | 2009-03-23 | 2009-03-24 | 399 | 51.24d |  |  | Pallavi [65%] | 8h |  |
| 401 | 1.3.62 | **Configure Measurements : Pulse width** | 148.38d? | 2008-08-28 | 2009-03-25 |  | 49.78d |  |  |  | 56h | P5 |
| 402 | 1.3.62.1 | Design screen for pulse width configuration | 2d? | 2008-08-28 | 2008-09-01 | 394 | 51d | 0d |  | RKB [50%] | 8h |  |
| 403 | 1.3.62.2 | Implement Framework for Temporary Measurement flow | 1.54d? | 2008-10-17 | 2008-10-20 | 402, 399 | 50.78d | 0d |  | Pallavi [65%] | 8h |  |
| 404 | 1.3.62.3 | Implement screen | 1.54d? | 2008-10-20 | 2008-10-22 | 403 | 50.78d | 0d |  | Pallavi [65%] | 8h |  |
| 405 | 1.3.62.4 | Hooks the value change on screen with Temporary Measurement flow | 1.54d? | 2008-10-22 | 2008-10-23 | 404 | 50.78d | 0d |  | Pallavi [65%] | 8h |  |
| 406 | 1.3.62.5 | Display pulse width Value on Status bar | 1.54d | 2008-10-23 | 2008-10-27 | 405 | 50.78d | 0d |  | Pallavi [65%] | 8h |  |
| 407 | 1.3.62.6 | Unit test case | 1.54d? | 2008-10-27 | 2008-10-29 | 406 | 49.78d | 0d |  | Pallavi [65%] | 8h |  |
| 408 | 1.3.62.7 | Code Review/ Unit test case review/Design screen/ Screen usability reviews with Jan Ryles | 1.54d | 2009-03-23 | 2009-03-25 | 407 | 49.78d | 49.24d |  | Pallavi [65%] | 8h |  |
| 409 | 1.3.63 | **Configure Measurements : Voltage Max** | 145.54d? | 2008-09-01 | 2009-03-24 |  | 50.62d | 50.08d |  |  | 56h | P5 |
| 410 | 1.3.63.1 | Design screen for voltage max configuration | 2d? | 2008-09-01 | 2008-09-04 | 402 | 50d | 0d |  | RKB [50%] | 8h |  |
| 411 | 1.3.63.2 | Implement Framework for Temporary Measurement flow | 1.54d? | 2008-10-29 | 2008-10-31 | 410, 407 | 51.31d | 0d |  | Pallavi [65%] | 8h |  |
| 412 | 1.3.63.3 | Implement screen | 1.54d? | 2008-10-31 | 2008-11-04 | 411 | 51.31d | 0d |  | Pallavi [65%] | 8h |  |
| 413 | 1.3.63.4 | Hooks the value change on screen with Temporary Measurement flow | 1.54d? | 2008-11-04 | 2008-11-05 | 412 | 51.31d | 0d |  | Pallavi [65%] | 8h |  |
| 414 | 1.3.63.5 | Display voltage max value on Status bar | 1.54d | 2008-11-05 | 2008-11-07 | 413 | 51.31d | 0d |  | Pallavi [65%] | 8h |  |
| 415 | 1.3.63.6 | Unit test case | 1.54d? | 2008-11-07 | 2008-11-10 | 414 | 51.31d | 0d |  | Pallavi [65%] | 8h |  |
| 416 | 1.3.63.7 | Code Review/ Unit test case review/Design screen/ Screen usability reviews with Jan Ryles | 1.54d | 2009-03-23 | 2009-03-24 | 415 | 50.62d |  |  | Pallavi [65%] | 8h |  |

| ID | WBS | Task | Duration | Start | Finish | Predecessors | Total slack | Free slack | Resources | Work | Text1 |
| --- | --- | --- | --- | --- | --- | --- | --- | --- | --- | --- | --- |
| 417 | 1.3.64 | **Configure Measurements : Voltage Min** | 138.18d? | 2008-09-04 | 2009-03-18 |  | 50d |  |  | 56h | P5 |
| 418 | 1.3.64.1 | Design screen for voltage max configuration | 2d? | 2008-09-04 | 2008-09-08 | 410 | 50d | 0d | RKB [50%] | 8h |  |
| 419 | 1.3.64.2 | Implement Framework for Temporary Measurement flow | 1.54d? | 2008-11-10 | 2008-11-12 | 418, 415 | 54.98d | 0d | Pallavi [65%] | 8h |  |
| 420 | 1.3.64.3 | Implement screen | 1.54d? | 2008-11-12 | 2008-11-13 | 419 | 54.98d | 0d | Pallavi [65%] | 8h |  |
| 421 | 1.3.64.4 | Hooks the value change on screen with Temporary Measurement flow | 1.54d? | 2008-11-13 | 2008-11-17 | 420 | 54.98d | 0d | Pallavi [65%] | 8h |  |
| 422 | 1.3.64.5 | Display voltage min value on Status bar | 1.54d | 2008-11-17 | 2008-11-18 | 421 | 54.98d | 0d | Pallavi [65%] | 8h |  |
| 423 | 1.3.64.6 | Unit test case | 1.54d? | 2008-11-18 | 2008-11-20 | 422 | 54.98d | 0d | Pallavi [65%] | 8h |  |
| 424 | 1.3.64.7 | Code Review/ Unit test case review/Design screen/ Screen usability reviews with Jan Ryles | 1.54d | 2009-03-16 | 2009-03-18 | 423 | 54.98d | 54.44d | Pallavi [65%] | 8h |  |
| 425 | 1.3.65 | **Orbit Chart** | 141.43d? | 2008-08-25 | 2009-03-10 |  | 59.71d |  |  | 44h | P5 |
| 426 | 1.3.65.1 | Implement Chart View Object | 2.14d? | 2008-08-25 | 2008-08-27 | 305 | 59.71d | 0d | Anurag [70%] | 12h |  |
| 427 | 1.3.65.2 | Support multiple X-Axis Type ( Lin, Log) & Y-Axis scaling | 1.43d? | 2008-08-28 | 2008-09-01 | 426 | 59.71d | 0d | Anurag [70%] | 8h |  |
| 428 | 1.3.65.3 | Support multiple Data point units | 1.43d? | 2008-09-04 | 2008-09-08 | 427 | 59.14d | 0d | Anurag [70%] | 8h |  |
| 429 | 1.3.65.4 | Multiple channels support\Marker support | 0.71d? | 2008-09-08 | 2008-09-08 | 428 | 59.14d | 1.29d | Anurag [70%] | 4h |  |
| 430 | 1.3.65.5 | Unit test case | 1.43d? | 2008-09-15 | 2008-09-16 | 429 | 59.57d | 0.14d | Anurag [70%] | 8h |  |
| 431 | 1.3.65.6 | Code Review/ Unit test case review/Design screen/ Screen usability reviews with Jan Ryles | 0.71d? | 2009-03-10 | 2009-03-10 | 430 | 60.44d | 59.9d | Anurag [70%] | 4h |  |
| 432 | 1.3.66 | **Common Marker Development** | 123.02d? | 2008-09-18 | 2009-03-10 |  | 60.43d |  |  | 112h | P5 |
| 433 | 1.3.66.1 | Design Marker Framework | 2.14d? | 2008-09-18 | 2008-09-22 | 430 | 60.43d | 0d | Anurag [70%] | 12h |  |
| 434 | 1.3.66.2 | Implementation | 4.29d? | 2008-09-26 | 2008-10-03 | 433 | 60.43d | 0.29d | Anurag [70%] | 24h |  |
| 435 | 1.3.66.3 | Support Different shape | 0.71d? | 2008-10-06 | 2008-10-06 | 434 | 61.57d | 1.29d | Anurag [70%] | 4h |  |
| 436 | 1.3.66.4 | Support XY Marker | 1.43d? | 2008-10-10 | 2008-10-13 | 435 | 60.71d | 0d | Anurag [70%] | 8h |  |
| 437 | 1.3.66.5 | Support Marker Format Phase | 1.43d? | 2008-10-14 | 2008-10-16 | 436 | 60.71d | 0.29d | Anurag [70%] | 8h |  |
| 438 | 1.3.66.6 | Support Marker Format Magnitude | 1.43d? | 2008-10-20 | 2008-10-21 | 437 | 60.57d | 0.14d | Anurag [70%] | 8h |  |
| 439 | 1.3.66.7 | Support Marker Format DB | 1.43d? | 2008-10-23 | 2008-10-24 | 438 | 60.57d | 0.14d | Anurag [70%] | 8h |  |
| 440 | 1.3.66.8 | Support Peak Trace Marker | 1.43d? | 2008-10-29 | 2008-10-30 | 439 | 62.07d | 0d | Anurag [70%] | 8h |  |
| 441 | 1.3.66.9 | Support Next Peak | 1.43d? | 2008-10-31 | 2008-11-04 | 440 | 62.14d | 0d | Anurag [70%] | 8h |  |
| 442 | 1.3.66.10 | Support Next Largest Peak | 1.43d? | 2008-11-05 | 2008-11-07 | 441 | 62.14d | 0d | Anurag [70%] | 8h |  |
| 443 | 1.3.66.11 | Code Review/ Unit test case review/Design screen/ Screen usability reviews with Jan Ryles | 2.86d? | 2009-03-05 | 2009-03-10 | 442 | 62.14d |  | Anurag [70%] | 16h |  |

| ID | WBS | Task | Duration | Start | Finish | Predecessors | Total slack | Free slack | Resources | Work | Text1 |
| --- | --- | --- | --- | --- | --- | --- | --- | --- | --- | --- | --- |
| 444 | 1.3.67 | **Screen Capture** | 27.08d? | 2008-09-08 | 2008-10-16 |  | 41.92d |  |  | 48h | P5 |
| 445 | 1.3.67.1 | Design | 4d? | 2008-09-08 | 2008-09-12 | 418 | 50d | 0d | RKB [50%] | 16h |  |
| 446 | 1.3.67.2 | Implementation for JPEG format | 3.08d? | 2008-09-30 | 2008-10-06 | 445, 359 | 41.86d | 1.01d | 1ETW [65%] | 16h |  |
| 447 | 1.3.67.3 | Implementation for BMP File format | 3.08d? | 2008-10-13 | 2008-10-16 | 446 | 40.92d | 0d | 1ETW [65%] | 16h |  |
| 448 | 1.3.68 | **Menu Map** | 40.58d? | 2008-09-12 | 2008-11-10 |  | 42.97d |  |  | 64h | P5 |
| 449 | 1.3.68.1 | Design | 4d? | 2008-09-12 | 2008-09-18 | 445 | 60d | 0d | RKB [50%] | 16h |  |
| 450 | 1.3.68.2 | Implement Traversing mechanism ( hook with FP events) | 6.15d? | 2008-10-20 | 2008-10-29 | 447, 449 | 42.88d | 0.04d | 1ETW [65%] | 32h |  |
| 451 | 1.3.68.3 | Print Menu Map | 3.08d? | 2008-11-05 | 2008-11-10 | 450 | 42.97d | 0d | 1ETW [65%] | 16h |  |
| 452 | 1.3.69 | **HDF5 Data Writer** | 144.15d? | 2008-09-18 | 2009-04-09 |  | 40d |  |  | 88h | P5 |
| 453 | 1.3.69.1 | Design HDF5 Data Writer | 5d? | 2008-09-18 | 2008-09-25 | 449 | 67d | 0d | RKB [50%] | 20h |  |
| 454 | 1.3.69.2 | Implement Data Writer | 3.08d? | 2008-11-10 | 2008-11-13 | 453, 451 | 42.97d | 0d | 1ETW [65%] | 16h |  |
| 455 | 1.3.69.3 | unit testing | 3.08d? | 2008-11-13 | 2008-11-18 | 454 | 42.97d | 1.96d | 1ETW [65%] | 16h |  |
| 456 | 1.3.69.4 | MathLab Compatbility test | 6.15d? | 2008-12-08 | 2008-12-17 | 455 | 40d | 0d | 1ETW [65%] | 32h |  |
| 457 | 1.3.69.5 | design review/unit test review | 0.77d? | 2009-04-08 | 2009-04-09 | 456 | 40d |  | 1ETW [65%] | 4h |  |
| 458 | 1.3.70 | **HDF5 Data Reader** | 138.38d? | 2008-09-25 | 2009-04-08 |  | 40.77d |  |  | 52h | P5 |
| 459 | 1.3.70.1 | Design HDF5 Data Reader | 1d? | 2008-09-25 | 2008-09-26 | 453 | 68d | 0d | RKB [50%] | 4h |  |
| 460 | 1.3.70.2 | Implement Data Reader | 3.08d? | 2008-12-17 | 2008-12-22 | 459, 456 | 41.77d | 0d | 1ETW [65%] | 16h |  |
| 461 | 1.3.70.3 | unit testing | 1.54d? | 2008-12-22 | 2008-12-23 | 460 | 41.77d | 0d | 1ETW [65%] | 8h |  |
| 462 | 1.3.70.4 | Corrupt file handling | 3.08d? | 2008-12-23 | 2008-12-29 | 461 | 40.77d | 0d | 1ETW [65%] | 16h |  |
| 463 | 1.3.70.5 | design review/unit test review | 1.54d? | 2009-04-06 | 2009-04-08 | 462 | 40.77d |  | 1ETW [65%] | 8h |  |
| 464 | 1.3.71 | **Configure Measurements : Gain & Phase margin** | 122.54d? | 2008-09-26 | 2009-03-18 |  | 55.62d |  |  | 60h | p6 |
| 465 | 1.3.71.1 | Design screen for band power configuration | 2d? | 2008-09-26 | 2008-09-30 | 459 | 68d | 0d | RKB [50%] | 8h |  |
| 466 | 1.3.71.2 | Implement Framework for Temporary Measurement flow | 2.31d? | 2008-11-20 | 2008-11-24 | 465, 423 | 55.52d | 0d | Pallavi [65%] | 12h |  |
| 467 | 1.3.71.3 | Implement screen ( With Live Chart) | 1.54d? | 2008-11-24 | 2008-11-26 | 466 | 55.52d | 0d | Pallavi [65%] | 8h |  |
| 468 | 1.3.71.4 | Hooks the value change on screen with Temporary Measurement flow | 1.54d? | 2008-11-26 | 2008-11-27 | 467 | 55.52d | 0d | Pallavi [65%] | 8h |  |
| 469 | 1.3.71.5 | Display band power Measurement Value on Status bar | 1.54d | 2008-11-27 | 2008-12-01 | 468 | 55.52d | 0d | Pallavi [65%] | 8h |  |
| 470 | 1.3.71.6 | Unit test case | 1.54d? | 2008-12-01 | 2008-12-02 | 469 | 55.52d | 0d | Pallavi [65%] | 8h |  |
| 471 | 1.3.71.7 | Code Review/ Unit test case review/Design screen/ Screen usability reviews with Jan Ryles | 1.54d | 2009-03-17 | 2009-03-18 | 470 | 55.62d |  | Pallavi [65%] | 8h |  |

| ID | WBS | Task | Duration | Start | Finish | Predecessors | Total slack | Free slack | Resources | Work | Text1 |
| --- | --- | --- | --- | --- | --- | --- | --- | --- | --- | --- | --- |
| 472 | 1.3.72 | **Configure Analyzer Type: Swept Sine** | 133.85d? | 2008-09-30 | 2009-04-06 |  | 42.31d |  |  | 36h | P6 |
| 473 | 1.3.72.1 | Design | 2d? | 2008-09-30 | 2008-10-03 | 465 | 67d | 0d | RKB [50%] | 8h |  |
| 474 | 1.3.72.2 | Implementation | 3.85d? | 2008-12-29 | 2009-01-02 | 462, 473 | 42.31d | 0d | 1ETW [65%] | 20h |  |
| 475 | 1.3.72.3 | Unit Testing/Code Review | 1.54d? | 2009-04-03 | 2009-04-06 | 474 | 42.31d |  | 1ETW [65%] | 8h |  |
| 476 | 1.3.73 | **LAN Configuration** | 262.69d? | 2008-02-04 | 2009-02-04 |  | 85.47d |  |  | 60h | P6 |
| 477 | 1.3.73.1 | Design | 3d? | 2008-10-03 | 2008-10-08 | 473 | 67d | 0d | RKB [50%] | 12h |  |
| 478 | 1.3.73.2 | Implementation | 4.62d? | 2009-01-26 | 2009-01-30 | 477, 474 | 45.31d | 0d | 1ETW [65%] | 24h |  |
| 479 | 1.3.73.3 | Unit test case for Changing configuration | 3.08d? | 2009-01-30 | 2009-02-04 | 478 | 45.31d | 0.15d | 1ETW [65%] | 16h |  |
| 480 | 1.3.73.4 | Unit Testing review/Code Review | 1.54d? | 2008-02-04 | 2008-02-05 |  | 346.62d |  | 1ETW [65%] | 8h |  |
| 481 | 1.3.74 | **Display System Information** | 276.54d? | 2008-02-05 | 2009-02-26 |  | 70.08d |  |  | 60h | P6 |
| 482 | 1.3.74.1 | Design System information | 3d? | 2008-10-08 | 2008-10-14 | 477 | 66d | 0d | RKB [50%] | 12h |  |
| 483 | 1.3.74.2 | Implementation | 4.62d? | 2009-02-13 | 2009-02-19 | 482, 479 | 45.54d | 0.38d | 1ETW [65%] | 24h |  |
| 484 | 1.3.74.3 | Unit test case | 3.08d? | 2009-02-23 | 2009-02-26 | 483 | 45.23d | 0d | 1ETW [65%] | 16h |  |
| 485 | 1.3.74.4 | Unit Testing review/Code Review | 1.54d? | 2008-02-05 | 2008-02-07 |  | 345.08d |  | 1ETW [65%] | 8h |  |
| 486 | 1.3.75 | **Display Hardware information** | 282.69d? | 2008-02-07 | 2009-03-09 |  | 62.39d |  |  | 40h | P6 |
| 487 | 1.3.75.1 | design for Hardware information | 2d? | 2008-10-14 | 2008-10-16 | 482 | 66d | 0d | RKB [50%] | 8h |  |
| 488 | 1.3.75.2 | Implementation | 3.08d? | 2009-03-03 | 2009-03-06 | 487, 484 | 45.23d | 0d | 1ETW [65%] | 16h |  |
| 489 | 1.3.75.3 | Unit Test cases | 1.54d? | 2009-03-06 | 2009-03-09 | 488 | 45.23d | 0.12d | 1ETW [65%] | 8h |  |
| 490 | 1.3.75.4 | Unit Testing review/Code Review | 1.54d? | 2008-02-07 | 2008-09-29 |  | 177.31d |  | 1ETW [65%] | 8h |  |
| 491 | 1.3.76 | **Software Licensing** | 237.3d? | 2008-02-05 | 2009-01-01 |  | 109.32d |  |  | 128h | P6 |
| 492 | 1.3.76.1 | design | 4d? | 2008-10-16 | 2008-10-22 | 487 | 66d | 0d | RKB [50%] | 16h |  |
| 493 | 1.3.76.2 | Implementation for Display License | 3.08d? | 2008-12-02 | 2008-12-05 | 470, 492 | 59.05d | 0d | Pallavi [65%] | 16h |  |
| 494 | 1.3.76.3 | Implementation for License Activation | 3.08d? | 2008-12-05 | 2008-12-11 | 493 | 58.05d | 0d | Pallavi [65%] | 16h |  |
| 495 | 1.3.76.4 | Implementation for License De-Activation | 3.08d? | 2008-12-11 | 2008-12-17 | 494 | 58.05d | 0d | Pallavi [65%] | 16h |  |
| 496 | 1.3.76.5 | Integrate Mirage Lic framework with CDF Licensing Capability | 4.62d? | 2008-12-17 | 2008-12-23 | 495 | 58.05d | 0d | Pallavi [65%] | 24h |  |
| 497 | 1.3.76.6 | Unit test case for Lic verification (GUI, Measurement, SCPI etc) | 6.15d? | 2008-12-23 | 2009-01-01 | 496 | 57.05d | 0d | Pallavi [65%] | 32h |  |
| 498 | 1.3.76.7 | Unit Testing review/Code Review | 1.54d? | 2008-02-05 | 2008-02-07 |  | 345.08d |  | Pallavi [65%] | 8h |  |

| ID | WBS | Task | Duration | Start | Finish | Predecessors | Total slack | Free slack | Resources | Work | Text1 |
| --- | --- | --- | --- | --- | --- | --- | --- | --- | --- | --- | --- |
| 499 | 1.3.77 | **Self Test** | 103.1d? | 2008-10-22 | 2009-03-17 |  | 57.06d |  |  | 40h | P6 |
| 500 | 1.3.77.1 | design | 2d? | 2008-10-22 | 2008-10-24 | 492 | 66d | 0d | RKB [50%] | 8h |  |
| 501 | 1.3.77.2 | Implementation | 3.08d? | 2009-01-01 | 2009-01-06 | 500, 497 | 57.05d | 0d | Pallavi [65%] | 16h |  |
| 502 | 1.3.77.3 | Unit testing | 1.54d? | 2009-01-06 | 2009-01-08 | 501 | 57.05d | 0d | Pallavi [65%] | 8h |  |
| 503 | 1.3.77.4 | Unit Testing review/Code Review | 1.54d? | 2009-03-13 | 2009-03-17 | 502 | 57.06d |  | Pallavi [65%] | 8h |  |
| 504 | 1.3.78 | **Calibration** | 99.69d? | 2008-10-24 | 2009-03-13 |  | 58.47d |  |  | 40h | P6 |
| 505 | 1.3.78.1 | design | 2d? | 2008-10-24 | 2008-10-29 | 500 | 65d | 0d | RKB [50%] | 8h |  |
| 506 | 1.3.78.2 | Auto Calibration | 3.08d? | 2009-01-08 | 2009-01-13 | 502, 505 | 58.47d | 0d | Pallavi [65%] | 16h |  |
| 507 | 1.3.78.3 | Calibrate once | 1.54d? | 2009-01-13 | 2009-01-15 | 506 | 58.47d | 0d | Pallavi [65%] | 8h |  |
| 508 | 1.3.78.4 | Unit Testing review/Code Review | 1.54d? | 2009-03-12 | 2009-03-13 | 507 | 58.47d |  | Pallavi [65%] | 8h |  |
| 509 | 1.3.79 | **User Preference** | 95.04d? | 2008-10-29 | 2009-03-12 |  | 60.12d |  |  | 80h | P6 |
| 510 | 1.3.79.1 | design | 2d? | 2008-10-29 | 2008-10-31 | 505 | 65d | 0d | RKB [50%] | 8h |  |
| 511 | 1.3.79.2 | Warning Beap | 1.54d? | 2009-01-15 | 2009-01-16 | 507, 510 | 60.12d | 0d | Pallavi [65%] | 8h |  |
| 512 | 1.3.79.3 | Front Panel lock out | 1.54d? | 2009-01-16 | 2009-01-20 | 511 | 60.12d | 0d | Pallavi [65%] | 8h |  |
| 513 | 1.3.79.4 | Date/Time Format | 1.54d? | 2009-01-20 | 2009-01-21 | 512 | 60.12d | 0d | Pallavi [65%] | 8h |  |
| 514 | 1.3.79.5 | Color Schema | 3.08d? | 2009-01-21 | 2009-01-26 | 513 | 60.12d | 0d | Pallavi [65%] | 16h |  |
| 515 | 1.3.79.6 | Power ON & Preset State | 4.62d? | 2009-01-26 | 2009-02-02 | 514 | 60.12d | 0d | Pallavi [65%] | 24h |  |
| 516 | 1.3.79.7 | Unit Testing review/Code Review | 1.54d? | 2009-03-10 | 2009-03-12 | 515 | 60.12d |  | Pallavi [65%] | 8h |  |
| 517 | 1.3.80 | **Normal Variance Chart** | 82.21d? | 2008-11-10 | 2009-03-04 |  | 65.07d |  |  | 40h | P6 |
| 518 | 1.3.80.1 | Implement Chart View Object | 1.43d? | 2008-11-10 | 2008-11-11 | 442 | 65.07d | 0.07d | Anurag [70%] | 8h |  |
| 519 | 1.3.80.2 | Support multiple X-Axis Type ( Lin, Log) & Y-Axis scaling | 1.43d? | 2008-11-12 | 2008-11-13 | 518 | 65.71d | 0.57d | Anurag [70%] | 8h |  |
| 520 | 1.3.80.3 | Support multiple Data point units | 1.43d? | 2008-11-17 | 2008-11-18 | 519 | 65.57d | 0d | Anurag [70%] | 8h |  |
| 521 | 1.3.80.4 | Multiple channels support\Marker support | 0.71d? | 2008-11-19 | 2008-11-20 | 520 | 65.57d | 0.43d | Anurag [70%] | 4h |  |
| 522 | 1.3.80.5 | Unit test case | 1.43d? | 2008-11-24 | 2008-11-25 | 521 | 65.57d | 0d | Anurag [70%] | 8h |  |
| 523 | 1.3.80.6 | Code Review/ Unit test case review/Design screen/ Screen usability reviews with Jan Ryles | 0.71d? | 2009-03-03 | 2009-03-04 | 522 | 65.44d |  | Anurag [70%] | 4h |  |

| ID | WBS | Task | Duration | Start | Finish | Predecessors | Total slack | Free slack | Resources | Work | Text1 |
| --- | --- | --- | --- | --- | --- | --- | --- | --- | --- | --- | --- |
| 524 | 1.3.81 | **Backward comptability** | 68.71d? | 2008-11-26 | 2009-03-02 |  | 66.57d |  |  | 56h | P6 |
| 525 | 1.3.81.1 | SDF Data Reader | 1.43d? | 2008-11-26 | 2008-11-27 | 522 | 66.57d | 0d | Anurag [70%] | 8h |  |
| 526 | 1.3.81.2 | Design SDF Data Reader | 2.86d? | 2008-12-02 | 2008-12-05 | 525 | 67.71d | 0d | Anurag [70%] | 16h |  |
| 527 | 1.3.81.3 | Implement Data Reader | 2.14d? | 2008-12-05 | 2008-12-10 | 526 | 66.71d | 0.05d | Anurag [70%] | 12h |  |
| 528 | 1.3.81.4 | unit testing | 2.86d? | 2008-12-16 | 2008-12-19 | 527 | 66.64d | 0d | Anurag [70%] | 16h |  |
| 529 | 1.3.81.5 | design review/unit test review | 0.71d? | 2009-03-02 | 2009-03-02 | 528 | 67.44d |  | Anurag [70%] | 4h |  |
| 530 | 1.3.82 | **Refactor at Swept sine mode** | 18d? | 2008-10-31 | 2008-11-26 |  | 65d | 133.62d |  | 72h | P6 |
| 531 | 1.3.82.1 | GUI | 6d? | 2008-10-31 | 2008-11-10 | 510 | 65d | 0d | RKB [50%] | 24h |  |
| 532 | 1.3.82.2 | Automation Interface | 6d? | 2008-11-10 | 2008-11-18 | 531 | 65d | 0d | RKB [50%] | 24h |  |
| 533 | 1.3.82.3 | Analysis and Measurement Layer | 6d? | 2008-11-18 | 2008-11-26 | 532 | 65d | 0d | RKB [50%] | 24h |  |
| 534 | 1.3.83 | **Configure Analyzer Type: Octave** | 67.76d? | 2008-11-26 | 2009-03-02 |  | 65d |  |  | 36h | P7 |
| 535 | 1.3.83.1 | Design | 2d? | 2008-11-26 | 2008-11-28 | 533 | 65d | 0d | RKB [50%] | 8h |  |
| 536 | 1.3.83.2 | Implementation | 3.85d? | 2009-02-23 | 2009-02-27 | 535 | 67.39d | 0d | Pallavi [65%] | 20h |  |
| 537 | 1.3.83.3 | Unit Testing/Code Review | 1.54d? | 2009-02-27 | 2009-03-02 | 536 | 67.39d |  | Pallavi [65%] | 8h |  |
| 538 | 1.3.84 | **Configure Math Analysis** | 66.43d? | 2008-11-28 | 2009-03-03 |  | 66.73d |  |  | 64h | P7 |
| 539 | 1.3.84.1 | Design | 2d? | 2008-11-28 | 2008-12-02 | 535 | 81.07d | 0d | RKB [50%] | 8h |  |
| 540 | 1.3.84.2 | Implement Framework for Temporary Measurement flow to display Complex conjugate result | 2.86d? | 2008-12-23 | 2008-12-29 | 539, 528 | 67.71d | 1.36d | Anurag [70%] | 16h |  |
| 541 | 1.3.84.3 | Implement screen | 2.14d? | 2009-01-05 | 2009-01-07 | 540 | 66.36d | 0d | Anurag [70%] | 12h |  |
| 542 | 1.3.84.4 | Hooks the value change on screen with Temporary Measurement flow | 2.14d? | 2009-01-12 | 2009-01-14 | 541 | 66.43d | 0d | Anurag [70%] | 12h |  |
| 543 | 1.3.84.5 | Unit test case | 1.43d? | 2009-01-14 | 2009-01-15 | 542 | 66.43d | 0.43d | Anurag [70%] | 8h |  |
| 544 | 1.3.84.6 | Code Review/ Unit test case review/Design screen/ Screen usability reviews with Jan Ryles | 1.43d | 2009-03-02 | 2009-03-03 | 543 | 66.73d |  | Anurag [70%] | 8h |  |
| 545 | 1.3.85 | **Configure Limit line Analysis** | 54.15d? | 2008-12-02 | 2009-02-17 |  | 77.01d |  |  | 64h | P7 |
| 546 | 1.3.85.1 | Design | 2d? | 2008-12-02 | 2008-12-04 | 539 | 94d | 0d | RKB [50%] | 8h |  |
| 547 | 1.3.85.2 | Implement Framework for Temporary Measurement flow to display Complex conjugate result | 3.08d? | 2009-02-02 | 2009-02-05 | 546, 515 | 66.31d | 0d | Pallavi [65%] | 16h |  |
| 548 | 1.3.85.3 | Implement screen | 2.31d? | 2009-02-05 | 2009-02-09 | 547 | 66.31d | 0d | Pallavi [65%] | 12h |  |
| 549 | 1.3.85.4 | Hooks the value change on screen with Temporary Measurement flow | 2.31d? | 2009-02-09 | 2009-02-12 | 548 | 66.31d | 0d | Pallavi [65%] | 12h |  |
| 550 | 1.3.85.5 | Unit test case | 1.54d? | 2009-02-12 | 2009-02-13 | 549 | 66.31d | 0d | Pallavi [65%] | 8h |  |
| 551 | 1.3.85.6 | Code Review/ Unit test case review/Design screen/ Screen usability reviews with Jan Ryles | 1.54d | 2009-02-13 | 2009-02-17 | 550 | 77.01d |  | Pallavi [65%] | 8h |  |

| ID | WBS | Task | Duration | Start | Finish | Predecessors | Total slack | Free slack | Resources | Work | Text1 |
| --- | --- | --- | --- | --- | --- | --- | --- | --- | --- | --- | --- |
| 552 | 1.3.86 | **Configure Complex Conjugate** | 61.43d? | 2008-12-04 | 2009-03-02 |  | 67.73d |  |  | 64h | P7 |
| 553 | 1.3.86.1 | Design | 2d? | 2008-12-04 | 2008-12-08 | 546 | 94d | 0d | RKB [50%] | 8h |  |
| 554 | 1.3.86.2 | Implement Framework for Temporary Measurement flow to display Complex conjugate result | 2.86d? | 2009-01-20 | 2009-01-22 | 553, 543 | 66d | 0d | Anurag [70%] | 16h |  |
| 555 | 1.3.86.3 | Implement screen | 2.14d? | 2009-01-22 | 2009-01-26 | 554 | 66d | 0.29d | Anurag [70%] | 12h |  |
| 556 | 1.3.86.4 | Hooks the value change on screen with Temporary Measurement flow | 2.14d? | 2009-02-04 | 2009-02-06 | 555 | 65.86d | 0.43d | Anurag [70%] | 12h |  |
| 557 | 1.3.86.5 | Unit test case | 1.43d? | 2009-02-10 | 2009-02-11 | 556 | 67.57d | 0.05d | Anurag [70%] | 8h |  |
| 558 | 1.3.86.6 | Code Review/ Unit test case review/Design screen/ Screen usability reviews with Jan Ryles | 1.43d | 2009-02-27 | 2009-03-02 | 557 | 67.73d |  | Anurag [70%] | 8h |  |
| 559 | 1.3.87 | **Software Version Display / Install update** | 127.16d? | 2008-12-08 | 2009-06-04 |  | 0d |  |  | 64h | P7 |
| 560 | 1.3.87.1 | Design | 2d? | 2008-12-08 | 2008-12-11 | 553 | 106.16d | 0d | RKB [50%] | 8h |  |
| 561 | 1.3.87.2 | Design screen for Installing software update | 2.31d? | 2009-03-16 | 2009-03-18 | 560, 489 | 45.35d | 0d | 1ETW [65%] | 12h |  |
| 562 | 1.3.87.3 | Implemenation ( Display Software version) | 2.31d? | 2009-03-23 | 2009-03-26 | 561 | 45.35d | 0d | 1ETW [65%] | 12h |  |
| 563 | 1.3.87.4 | Implementation ( Install updates) | 2.31d? | 2009-03-26 | 2009-03-30 | 562 | 45.35d | 0d | 1ETW [65%] | 12h |  |
| 564 | 1.3.87.5 | Unit test case | 2.31d? | 2009-03-30 | 2009-04-01 | 563 | 45.35d |  | 1ETW [65%] | 12h |  |
| 565 | 1.3.87.6 | Code Review/ Unit test case review/Design screen/ Screen usability reviews with Jan Ryles | 1.54d | 2009-06-02 | 2009-06-04 |  | 0d |  | 1ETW [65%] | 8h |  |
| 566 | 1.3.88 | **Refactor at Octave Mode** | 19d? | 2008-12-11 | 2009-01-07 |  | 105.16d |  |  | 72h | P7 |
| 567 | 1.3.88.1 | GUI | 6d? | 2008-12-11 | 2008-12-19 | 560 | 106.16d | 0d | RKB [50%] | 24h |  |
| 568 | 1.3.88.2 | Automation Interface | 6d? | 2008-12-19 | 2008-12-30 | 567 | 105.16d | 0d | RKB [50%] | 24h |  |
| 569 | 1.3.88.3 | Analysis and Measurement Layer | 6d? | 2008-12-30 | 2009-01-07 | 568 | 105.16d |  | RKB [50%] | 24h |  |
| 570 | 1.3.89 | **Web service** | 9.36d? | 2009-02-13 | 2009-02-26 |  | 69.3d |  |  | 32h | P8 |
| 571 | 1.3.89.1 | Basix LXI support pages | 2.86d? | 2009-02-13 | 2009-02-18 | 557 | 69.37d | 0.14d | Anurag [70%] | 16h |  |
| 572 | 1.3.89.2 | With in Device Testing | 2.86d? | 2009-02-24 | 2009-02-26 | 571 | 69.3d |  | Anurag [70%] | 16h |  |
| 573 | 1.3.90 | **Help** | 14.49d? | 2009-02-17 | 2009-03-10 |  | 61.62d |  |  | 48h | P8 |
| 574 | 1.3.90.1 | Access online manual help & Display version | 2.31d? | 2009-02-17 | 2009-02-20 | 515 | 61.62d | 0d | Pallavi [65%] | 12h |  |
| 575 | 1.3.90.2 | Installed localized help file | 1.54d? | 2009-02-20 | 2009-02-23 | 574, 550 | 61.62d | 0d | Pallavi [65%] | 8h |  |
| 576 | 1.3.90.3 | Print Help in different format | 1.54d? | 2009-02-23 | 2009-02-25 | 575 | 61.62d | 0d | Pallavi [65%] | 8h |  |
| 577 | 1.3.90.4 | Link each help button with its page | 3.85d? | 2009-03-04 | 2009-03-10 | 576 | 61.67d |  | Pallavi [65%] | 20h |  |

| ID | WBS | Task | Duration | Start | Finish | Predecessors | Complete | Remaining | Total slack | Free slack | Constraint | Resources | Work | Actual work | Text1 |
| --- | --- | --- | --- | --- | --- | --- | --- | --- | --- | --- | --- | --- | --- | --- | --- |
| 578 | 1.4 | **Analysis Measurement Layer** | 78.8d? | 2008-02-04 A | 2008-05-22 |  | 39% | 47.8d? | 269.36d |  |  |  | 806h | 217.28h |  |
| 579 | 1.4.1 | **Error & Exception** | 2.86d? | 2008-02-18 A | 2008-02-20 A |  | 100% |  |  |  |  |  | 16h | 16h | P1 |
| 580 | 1.4.1.1 | Define Error code for AL | 1.43d? | 2008-02-18 A | 2008-02-19 A |  | 100% |  |  |  | start no earlier than 2008-02-18 | Himanshu [70%] | 8h | 8h |  |
| 581 | 1.4.1.2 | Provide Error code Vs Description string | 1.43d? | 2008-02-19 A | 2008-02-20 A | 580 | 100% |  |  |  |  | Himanshu [70%] | 8h | 8h |  |
| 582 | 1.4.2 | **Analyzer mode management :: FFT Analyzer** | 34.39d? | 2008-04-04 A | 2008-05-22 |  | 79% | 7.3d? | 269.36d |  |  |  | 136h | 101.28h | P2 |
| 583 | 1.4.2.1 | Design interface/Framework for mode change | 1.82d? | 2008-04-09 A | 2008-04-11 A |  | 100% |  |  |  |  | Gowie [55%] | 8h | 8h |  |
| 584 | 1.4.2.2 | Review with tech leads | 0.91d? | 2008-04-16 A | 2008-04-16 A | 583 | 100% |  |  |  |  | Gowie [55%] | 4h | 4h |  |
| 585 | 1.4.2.3 | Learn how to put stuff in Build system | 0.91d? | 2008-04-16 A | 2008-04-17 A | 584 | 100% |  |  |  |  | Gowie [55%] | 4h | 4h |  |
| 586 | 1.4.2.4 | Implement SET mode | 5.45d? | 2008-04-04 A | 2008-04-11 A |  | 100% |  |  |  |  | Gowie [55%] | 24h | 24h |  |
| 587 | 1.4.2.5 | implement trace types | 5.45d? | 2008-04-11 A | 2008-04-21 A | 586 | 100% |  |  |  |  | Gowie [55%] | 24h | 24h |  |
| 588 | 1.4.2.6 | Unit testing | 1.82d? | 2008-04-21 A | 2008-04-23 A | 587 | 100% |  |  |  |  | Gowie [55%] | 8h | 8h |  |
| 589 | 1.4.2.7 | Code Review | 0.91d | 2008-04-23 | 2008-04-24 | 588 |  |  | 290.11d |  |  | Gowie [55%] | 4h |  |  |
| 590 | 1.4.2.8 | **State Management** | 17.12d? | 2008-04-24 A | 2008-05-19 |  | 79% | 3.53d? | 269.36d |  |  |  | 44h | 29.28h |  |
| 591 | 1.4.2.8.1 | Design framework for state change event | 1.82d? | 2008-04-24 A | 2008-04-25 A | 589 | 100% |  |  |  |  | Gowie [55%] | 8h | 8h |  |
| 592 | 1.4.2.8.2 | implement mode change event | 8.57d? | 2008-04-25 A | 2008-05-08 A | 591 | 100% |  |  |  |  | Gowie [11.7%] | 8h | 8h |  |
| 593 | 1.4.2.8.3 | implement state change event | 2d? | 2008-05-08 A | 2008-05-12 A | 592 | 100% |  |  |  |  | Gowie [50%] | 8h | 8h |  |
| 594 | 1.4.2.8.4 | implement data available event | 2d? | 2008-05-12 | 2008-05-14 | 593 |  |  | 270.56d | 0d |  | Gowie [50%] | 8h |  |  |
| 595 | 1.4.2.8.5 | Unit testing | 1.82d? | 2008-05-14 A | 2008-05-16 | 594 | 66% | 0.62d? | 269.36d | 0d |  | Gowie [55%] | 8h | 5.28h |  |
| 596 | 1.4.2.8.6 | Code Review | 0.91d | 2008-05-16 | 2008-05-19 | 595 |  |  | 269.36d | 0d |  | Gowie [55%] | 4h |  |  |
| 597 | 1.4.2.9 | Available Status (Place Holder) | 3.64d? | 2008-05-19 | 2008-05-22 | 596 |  |  | 269.36d |  |  | Gowie [55%] | 16h |  |  |
| 598 | 1.4.3 | **Trace management** | 73.5d? | 2008-02-04 A | 2008-05-15 |  | 31% | 50.61d? | 274.66d |  |  |  | 522h | 100h | P2 |
| 599 | 1.4.3.1 | Design Interface | 3.64d? | 2008-04-22 A | 2008-04-28 A | 584 | 100% |  |  |  |  | Gowie [55%] | 16h | 16h |  |
| 600 | 1.4.3.2 | Review interface design with Team leads | 1.82d? | 2008-04-28 A | 2008-04-30 A | 599 | 100% |  |  |  |  | Gowie [55%] | 8h | 8h |  |
| 601 | 1.4.3.3 | Implement Create Trace | 7.27d? | 2008-04-24 A | 2008-05-05 A | 589 | 100% |  |  |  |  | Gowie [55%] | 32h | 32h |  |
| 602 | 1.4.3.4 | Implement Delete Trace | 7.27d? | 2008-05-05 A | 2008-05-14 A | 601 | 100% |  |  |  |  | Gowie [55%] | 32h | 32h |  |
| 603 | 1.4.3.5 | Code Review | 0.91d? | 2008-05-14 | 2008-05-15 | 602 |  |  | 274.66d |  |  | Gowie [55%] | 4h |  |  |

| ID | WBS | Task | Duration | Start | Finish | Complete | Remaining | Total slack | Resources | Work | Actual work |
| --- | --- | --- | --- | --- | --- | --- | --- | --- | --- | --- | --- |
| 604 | 1.4.3.6 | **Data Flow** | 6d? | 2008-02-04 A | 2008-02-11 | 23% | 4.61d? | 342.16d |  | 64h | 12h |
| 605 | 1.4.3.6.1 | Understand Signal Flow/Design Data Types | 6d? | 2008-02-04 A | 2008-02-11 | 50% | 3d? | 342.16d | Mike [50%] | 24h | 12h |
| 606 | 1.4.3.6.2 | design data flow through trace management | 4d? | 2008-02-04 | 2008-02-07 |  |  | 344.16d | Mike [50%] | 16h |  |
| 607 | 1.4.3.6.3 | design state flow with data | 0.95d? | 2008-02-04 | 2008-02-04 |  |  | 347.2d | Gowie [55%]; Mike [50%] | 8h |  |
| 608 | 1.4.3.6.4 | implement data flow through trace management | 1d? | 2008-02-04 | 2008-02-04 |  |  | 347.16d | Gowie [55%]; Mike [50%] | 8h |  |
| 609 | 1.4.3.6.5 | implement state flow with data | 1d? | 2008-02-04 | 2008-02-04 |  |  | 347.16d | Gowie [55%]; Mike [50%] | 8h |  |
| 610 | 1.4.3.7 | implement enable trace | 1d? | 2008-02-04 | 2008-02-04 |  |  | 347.16d |  |  |  |
| 611 | 1.4.3.8 | **Phase 2 Traces** | 3d? | 2008-02-04 | 2008-02-06 |  |  | 345.16d |  | 366h |  |
| 612 | 1.4.3.8.1 | **Linear Spectrum Trace** | 3d? | 2008-02-04 | 2008-02-06 |  |  | 345.16d |  | 48h |  |
| 613 | 1.4.3.8.1.1 | Implement Meas Data Transform | 0.5d? | 2008-02-04 | 2008-02-04 |  |  | 347.66d | Gowie [50%]; Mike [50%] | 4h |  |
| 614 | 1.4.3.8.1.2 | Implement Availablity Action | 3d? | 2008-02-04 | 2008-02-06 |  |  | 345.16d | Gowie [50%]; Mike [50%] | 24h |  |
| 615 | 1.4.3.8.1.3 | Unit testing | 0.5d? | 2008-02-04 | 2008-02-04 |  |  | 347.66d | Gowie [50%]; Mike [50%] | 4h |  |
| 616 | 1.4.3.8.1.4 | Enhance All Events for this data | 2d? | 2008-02-04 | 2008-02-05 |  |  | 346.16d | Gowie [50%]; Mike [50%] | 16h |  |
| 617 | 1.4.3.8.2 | **Cross Power Spectrum Trace** | 1d? | 2008-02-04 | 2008-02-04 |  |  | 347.16d |  | 38h |  |
| 618 | 1.4.3.8.2.1 | Implement Meas Data Transform | 1d? | 2008-02-04 | 2008-02-04 |  |  | 347.16d |  | 16h |  |
| 619 | 1.4.3.8.2.2 | Implement Availablity Action | 1d? | 2008-02-04 | 2008-02-04 |  |  | 347.16d |  | 12h |  |
| 620 | 1.4.3.8.2.3 | Unit testing | 1d? | 2008-02-04 | 2008-02-04 |  |  | 347.16d |  | 2h |  |
| 621 | 1.4.3.8.2.4 | Enhance All Events for this data | 1d? | 2008-02-04 | 2008-02-04 |  |  | 347.16d |  | 8h |  |
| 622 | 1.4.3.8.3 | **Time Sample Trace** | 1d? | 2008-02-04 | 2008-02-04 |  |  | 347.16d |  | 30h |  |
| 623 | 1.4.3.8.3.1 | Implement Meas Data Transform | 1d? | 2008-02-04 | 2008-02-04 |  |  | 347.16d |  | 8h |  |
| 624 | 1.4.3.8.3.2 | Implement Availablity Action | 1d? | 2008-02-04 | 2008-02-04 |  |  | 347.16d |  | 12h |  |
| 625 | 1.4.3.8.3.3 | Unit testing | 1d? | 2008-02-04 | 2008-02-04 |  |  | 347.16d |  | 2h |  |
| 626 | 1.4.3.8.3.4 | Enhance All Events for this data | 1d? | 2008-02-04 | 2008-02-04 |  |  | 347.16d |  | 8h |  |
| 627 | 1.4.3.8.4 | **THD Measurement Value** | 1d? | 2008-02-04 | 2008-02-04 |  |  | 347.16d |  | 30h |  |
| 628 | 1.4.3.8.4.1 | Implement Measurement Value Transform | 1d? | 2008-02-04 | 2008-02-04 |  |  | 347.16d |  | 8h |  |
| 629 | 1.4.3.8.4.2 | Implement Availablity Action | 1d? | 2008-02-04 | 2008-02-04 |  |  | 347.16d |  | 12h |  |
| 630 | 1.4.3.8.4.3 | Unit testing | 1d? | 2008-02-04 | 2008-02-04 |  |  | 347.16d |  | 2h |  |
| 631 | 1.4.3.8.4.4 | Enhance All Events for this data | 1d? | 2008-02-04 | 2008-02-04 |  |  | 347.16d |  | 8h |  |

| ID | WBS | Task | Duration | Start | Finish | Total slack | Work |
| --- | --- | --- | --- | --- | --- | --- | --- |
| 632 | 1.4.3.8.5 | **Time Band Power Measurement Value** | 1d? | 2008-02-04 | 2008-02-04 | 347.16d | 30h |
| 633 | 1.4.3.8.5.1 | Implement Measurement Value Transform | 1d? | 2008-02-04 | 2008-02-04 | 347.16d | 8h |
| 634 | 1.4.3.8.5.2 | Implement Availablity Action | 1d? | 2008-02-04 | 2008-02-04 | 347.16d | 12h |
| 635 | 1.4.3.8.5.3 | Unit testing | 1d? | 2008-02-04 | 2008-02-04 | 347.16d | 2h |
| 636 | 1.4.3.8.5.4 | Enhance All Events for this data | 1d? | 2008-02-04 | 2008-02-04 | 347.16d | 8h |
| 637 | 1.4.3.8.6 | **Linear Trace Coordinates** | 1d? | 2008-02-04 | 2008-02-04 | 347.16d | 48h |
| 638 | 1.4.3.8.6.1 | Implement Measurement Value Transform | 1d? | 2008-02-04 | 2008-02-04 | 347.16d | 4h |
| 639 | 1.4.3.8.6.2 | Implement Availablity Action | 1d? | 2008-02-04 | 2008-02-04 | 347.16d | 24h |
| 640 | 1.4.3.8.6.3 | Unit testing | 1d? | 2008-02-04 | 2008-02-04 | 347.16d | 4h |
| 641 | 1.4.3.8.6.4 | Enhance All Events for this data | 1d? | 2008-02-04 | 2008-02-04 | 347.16d | 16h |
| 642 | 1.4.3.8.7 | **Phase Trace Coordinates** | 1d? | 2008-02-04 | 2008-02-04 | 347.16d | 30h |
| 643 | 1.4.3.8.7.1 | Implement Measurement Value Transform | 1d? | 2008-02-04 | 2008-02-04 | 347.16d | 8h |
| 644 | 1.4.3.8.7.2 | Implement Availablity Action | 1d? | 2008-02-04 | 2008-02-04 | 347.16d | 12h |
| 645 | 1.4.3.8.7.3 | Unit testing | 1d? | 2008-02-04 | 2008-02-04 | 347.16d | 2h |
| 646 | 1.4.3.8.7.4 | Enhance All Events for this data | 1d? | 2008-02-04 | 2008-02-04 | 347.16d | 8h |
| 647 | 1.4.3.8.8 | **Testing** | 1d? | 2008-02-04 | 2008-02-04 | 347.16d | 96h |
| 648 | 1.4.3.8.8.1 | Test available status for all combinatioins of Meas Data, Meas Value, transducer units, trace coord | 1d? | 2008-02-04 | 2008-02-04 | 347.16d | 16h |
| 649 | 1.4.3.8.8.2 | Test mode change event for all combinations | 1d? | 2008-02-04 | 2008-02-04 | 347.16d | 16h |
| 650 | 1.4.3.8.8.3 | Test state change event for all combinations | 1d? | 2008-02-04 | 2008-02-04 | 347.16d | 16h |
| 651 | 1.4.3.8.8.4 | Test data available event for all combinations | 1d? | 2008-02-04 | 2008-02-04 | 347.16d | 16h |
| 652 | 1.4.3.8.8.5 | Understand perfomance tools | 1d? | 2008-02-04 | 2008-02-04 | 347.16d | 16h |
| 653 | 1.4.3.8.8.6 | Collect baseline performace | 1d? | 2008-02-04 | 2008-02-04 | 347.16d | 16h |
| 654 | 1.4.3.8.9 | **Code Review** | 1d? | 2008-02-04 | 2008-02-04 | 347.16d | 16h |
| 655 | 1.4.3.8.9.1 | Code review trace and meas values | 1d? | 2008-02-04 | 2008-02-04 | 347.16d | 8h |
| 656 | 1.4.3.8.9.2 | implement changes | 1d? | 2008-02-04 | 2008-02-04 | 347.16d | 8h |

| ID | WBS | Task | Duration | Start | Finish | Predecessors | Complete | Remaining | Total slack | Free slack | Resources | Work | Actual work | Text1 |
| --- | --- | --- | --- | --- | --- | --- | --- | --- | --- | --- | --- | --- | --- | --- |
| 657 | 1.4.3.9 | **Phase 3 traces** | 1d? | 2008-02-04 | 2008-02-04 |  |  |  | 347.16d |  |  |  |  | p3 |
| 658 | 1.4.3.9.1 | tbd | 1d? | 2008-02-04 | 2008-02-04 |  |  |  | 347.16d |  |  |  |  |  |
| 659 | 1.4.4 | **Unit Conversion** | 56.43d? | 2008-02-04 | 2008-04-22 |  |  |  | 291.73d |  |  | 132h |  | P2 |
| 660 | 1.4.4.1 | Design interface for unit conversion | 5.71d? | 2008-02-04 | 2008-02-12 |  |  |  | 293.29d | 0d | RKB1 [35%] | 16h |  |  |
| 661 | 1.4.4.2 | Review with tech leads | 1.43d? | 2008-02-12 | 2008-02-14 | 660 |  |  | 293.29d | 0d | RKB1 [35%] | 4h |  |  |
| 662 | 1.4.4.3 | Implementation | 5.71d? | 2008-02-14 | 2008-02-21 | 661 |  |  | 293.29d | 0d | Himanshu [70%] | 32h |  |  |
| 663 | 1.4.4.4 | Unit testing | 4.29d? | 2008-02-21 | 2008-02-28 | 662 |  |  | 293.29d | 0d | Himanshu [70%] | 24h |  |  |
| 664 | 1.4.4.5 | How unit will ripple down | 8.57d? | 2008-02-28 | 2008-03-11 | 663 |  |  | 293.29d | 3.29d | Himanshu [70%] | 48h |  |  |
| 665 | 1.4.4.6 | Code Review | 1.43d | 2008-04-21 | 2008-04-22 | 664 |  |  | 291.73d |  | Himanshu [70%] | 8h |  |  |
| 666 | 1.5 | **Measurement Layer** | 316.43d? | 2008-02-04 A | 2009-04-21 |  | 12% | 279.09d? | 31.73d |  |  | 5947.6h | 706h |  |
| 667 | 1.5.1 | **Managed interface definition** | 40.57d? | 2008-02-04 A | 2008-03-31 |  | 11% | 35.92d? | 307.58d |  |  | 312h | 36h |  |
| 668 | 1.5.1.1 | **Defining (first pass)interfaces for all MVP meas** | 2.86d | 2008-02-04 A | 2008-02-06 A |  | 100% |  |  |  |  | 16h | 16h | P1 |
| 669 | 1.5.1.1.1 | Review with team & Incorporate Review decisions | 2.86d | 2008-02-04 A | 2008-02-06 A |  | 100% |  |  |  | Kapil [70%] | 16h | 16h |  |
| 670 | 1.5.1.2 | **Transforms** | 6d? | 2008-02-06 A | 2008-02-14 |  | 57% | 2.57d? | 339.3d |  |  | 28h | 16h |  |
| 671 | 1.5.1.2.1 | FFT | 0.71d? | 2008-02-06 A | 2008-02-07 A | 669 | 100% |  |  |  | Kapil [70%] | 4h | 4h | P1 |
| 672 | 1.5.1.2.2 | STFT | 0.71d? | 2008-02-07 | 2008-02-08 | 671 |  |  | 343.87d |  | Kapil [70%] | 4h |  | P4 |
| 673 | 1.5.1.2.3 | Windowing | 0.71d | 2008-02-08 A | 2008-02-12 A | 672 | 100% |  |  |  | Kapil [70%] | 4h | 4h | P1 |
| 674 | 1.5.1.2.4 | Window coeff for IE needs, Managed & Unmanaged | 1.43d? | 2008-02-12 A | 2008-02-13 A | 673 | 100% |  |  |  | Kapil [70%] | 8h | 8h | P1 |
| 675 | 1.5.1.2.5 | Resampling | 0.71d | 2008-02-13 | 2008-02-14 | 674 |  |  | 339.3d | 0d | Kapil [70%] | 4h |  | P3 |
| 676 | 1.5.1.2.6 | ZoomFFT | 0.71d | 2008-02-14 | 2008-02-14 | 675 |  |  | 339.3d |  | Kapil [70%] | 4h |  | P3 |
| 677 | 1.5.1.3 | **Spectrums** | 2.86d? | 2008-02-28 | 2008-03-04 |  |  |  | 309.3d |  |  | 16h |  |  |
| 678 | 1.5.1.3.1 | Linear | 0.71d | 2008-02-28 | 2008-02-29 | 1422 |  |  | 309.3d | 0d | Kapil [70%] | 4h |  | P1 |
| 679 | 1.5.1.3.2 | Power | 0.71d? | 2008-02-29 | 2008-03-03 | 678 |  |  | 308.58d | 0d | Kapil [70%] | 4h |  | P1 |
| 680 | 1.5.1.3.3 | Phase | 0.71d? | 2008-03-03 | 2008-03-04 | 679 |  |  | 308.58d | 0d | Kapil [70%] | 4h |  | P2 |
| 681 | 1.5.1.3.4 | Cross power | 0.71d? | 2008-03-04 | 2008-03-04 | 680 |  |  | 309.3d | 0d | Kapil [70%] | 4h |  | P2 |

Notes:
- 668: MVP meas defined
- 674: Need to understand what IE needs

| ID | WBS | Task | Duration | Start | Finish | Predecessors | Complete | Remaining | Total slack | Free slack | Resources | Work | Actual work | Text1 |
| --- | --- | --- | --- | --- | --- | --- | --- | --- | --- | --- | --- | --- | --- | --- |
| 682 | 1.5.1.4 | **Filters** | 7.14d? | 2008-03-04 | 2008-03-13 |  |  |  | 309.3d |  |  | 40h |  | P5 |
| 683 | 1.5.1.4.1 | Weighting filters | 2.86d? | 2008-03-04 | 2008-03-07 | 681 |  |  | 309.3d | 0d | Kapil [70%] | 16h |  |  |
| 684 | 1.5.1.4.2 | CCIR | 2.14d? | 2008-03-07 | 2008-03-11 | 683 |  |  | 309.3d | 0d | Kapil [70%] | 12h |  |  |
| 685 | 1.5.1.4.3 | Low Pass, high pass, band pass, notch | 2.14d? | 2008-03-11 | 2008-03-13 | 684 |  |  | 309.3d | 0d | Kapil [70%] | 12h |  |  |
| 686 | 1.5.1.5 | **Distortion** | 4.29d? | 2008-03-13 | 2008-03-20 |  |  |  | 309.3d |  |  | 24h |  |  |
| 687 | 1.5.1.5.1 | THD | 0.71d? | 2008-03-13 | 2008-03-14 | 685 |  |  | 309.3d | 0d | Kapil [70%] | 4h |  | P1 |
| 688 | 1.5.1.5.2 | THD + Noise | 0.71d? | 2008-03-14 | 2008-03-17 | 687 |  |  | 309.3d | 0d | Kapil [70%] | 4h |  | P1 |
| 689 | 1.5.1.5.3 | SINAD | 0.71d? | 2008-03-17 | 2008-03-18 | 688 |  |  | 309.3d | 0d | Kapil [70%] | 4h |  | P3 |
| 690 | 1.5.1.5.4 | ENOB | 0.71d? | 2008-03-18 | 2008-03-18 | 689 |  |  | 309.3d | 0d | Kapil [70%] | 4h |  | P3 |
| 691 | 1.5.1.5.5 | SNR | 0.71d? | 2008-03-18 | 2008-03-19 | 690 |  |  | 309.3d | 0d | Kapil [70%] | 4h |  | P3 |
| 692 | 1.5.1.5.6 | SFDR | 0.71d? | 2008-03-19 | 2008-03-20 | 691 |  |  | 309.3d | 0d | Kapil [70%] | 4h |  | P3 |
| 693 | 1.5.1.6 | Averaging | 4.29d? | 2008-03-20 | 2008-03-27 | 692 |  |  | 308.3d | 0d | Kapil [70%] | 24h |  | P2 |
| 694 | 1.5.1.7 | Coherence | 1.43d? | 2008-03-27 | 2008-03-28 | 693 |  |  | 308.3d |  | Kapil [70%] | 8h |  | P2 |
| 695 | 1.5.1.8 | **Signal Generation** | 40.57d? | 2008-02-04 A | 2008-03-31 |  | 19% | 32.93d? | 283.19d |  |  | 20h | 4h |  |
| 696 | 1.5.1.8.1 | Sine | 0.71d? | 2008-03-28 A | 2008-03-31 A | 694 | 100% |  |  |  | Kapil [70%] | 4h | 4h | P2 |
| 697 | 1.5.1.8.2 | **Noise** | 3.08d? | 2008-02-04 | 2008-02-07 |  |  |  | 320.68d |  |  | 16h |  | P3 |
| 698 | 1.5.1.8.2.1 | Random | 0.77d? | 2008-02-04 | 2008-02-04 |  |  |  | 320.68d | 0d | Ramkumar [65%] | 4h |  |  |
| 699 | 1.5.1.8.2.2 | Pink | 0.77d? | 2008-02-04 | 2008-02-05 | 698 |  |  | 320.68d | 0d | Ramkumar [65%] | 4h |  |  |
| 700 | 1.5.1.8.2.3 | White | 0.77d? | 2008-02-05 | 2008-02-06 | 699 |  |  | 320.68d | 0d | Ramkumar [65%] | 4h |  |  |
| 701 | 1.5.1.8.2.4 | Gaussian | 0.77d? | 2008-02-06 | 2008-02-07 | 700 |  |  | 320.68d | 0d | Ramkumar [65%] | 4h |  |  |
| 702 | 1.5.1.9 | Octave | 1.54d? | 2008-02-07 | 2008-02-08 | 701 |  |  | 320.68d | 0d | Ramkumar [65%] | 8h |  | P6 |
| 703 | 1.5.1.10 | **Math** | 6.71d? | 2008-02-08 | 2008-02-19 |  |  |  | 319.68d |  |  | 32h |  | P6 |
| 704 | 1.5.1.10.1 | Cepstrum | 0.71d? | 2008-02-08 | 2008-02-12 | 702 |  |  | 319.68d | 0d | Kapil [70%] | 4h |  |  |
| 705 | 1.5.1.10.2 | Basic Complex math | 0.71d? | 2008-02-12 | 2008-02-13 | 704 |  |  | 319.68d | 0d | Kapil [70%] | 4h |  |  |
| 706 | 1.5.1.10.3 | Hilbert | 1.43d? | 2008-02-13 | 2008-02-14 | 705 |  |  | 319.68d | 0d | Kapil [70%] | 8h |  |  |
| 707 | 1.5.1.10.4 | Conversions | 1.43d? | 2008-02-14 | 2008-02-15 | 706 |  |  | 319.68d | 0d | Kapil [70%] | 8h |  |  |
| 708 | 1.5.1.10.5 | Differentiation/Integration | 0.71d? | 2008-02-15 | 2008-02-18 | 707 |  |  | 319.68d | 0d | Kapil [70%] | 4h |  |  |
| 709 | 1.5.1.10.6 | Statistical (mean,mode…) | 0.71d? | 2008-02-18 | 2008-02-19 | 708 |  |  | 319.68d | 0d | Kapil [70%] | 4h |  |  |

| ID | WBS | Task | Duration | Start | Finish | Predecessors | Total slack | Free slack | Resources | Work | Text1 |
| --- | --- | --- | --- | --- | --- | --- | --- | --- | --- | --- | --- |
| 710 | 1.5.1.11 | **Limit lines** | 1.43d? | 2008-02-19 | 2008-02-20 |  | 319.68d |  |  | 8h | P6 |
| 711 | 1.5.1.11.1 | Upper limit | 0.71d? | 2008-02-19 | 2008-02-20 | 709 | 319.68d | 0d | Kapil [70%] | 4h |  |
| 712 | 1.5.1.11.2 | Lower limit | 0.71d? | 2008-02-20 | 2008-02-20 | 711 | 319.68d | 0d | Kapil [70%] | 4h |  |
| 713 | 1.5.1.12 | **Swept Sine** | 5d? | 2008-02-20 | 2008-02-27 |  | 319.68d |  |  | 28h |  |
| 714 | 1.5.1.12.1 | Gain, Phase margins | 0.71d? | 2008-02-20 | 2008-02-21 | 712 | 319.68d | 0d | Kapil [70%] | 4h | P5 |
| 715 | 1.5.1.12.2 | Frequency, Damping | 0.71d? | 2008-02-21 | 2008-02-22 | 714 | 319.68d | 0d | Kapil [70%] | 4h | P5 |
| 716 | 1.5.1.12.3 | Frequency Response | 1.43d? | 2008-02-22 | 2008-02-25 | 715 | 319.68d | 0d | Kapil [70%] | 8h | P2 |
| 717 | 1.5.1.12.4 | Variance | 0.71d? | 2008-02-25 | 2008-02-26 | 716 | 319.68d | 0d | Kapil [70%] | 4h | P5 |
| 718 | 1.5.1.12.5 | Group Delay | 1.43d? | 2008-02-26 | 2008-02-27 | 717 | 319.68d | 0d | Kapil [70%] | 8h | P2 |
| 719 | 1.5.1.13 | **Marker Functions** | 4.29d? | 2008-02-27 | 2008-03-05 |  | 319.68d |  |  | 24h | P4 |
| 720 | 1.5.1.13.1 | Peak Search | 0.71d? | 2008-02-27 | 2008-02-28 | 718 | 319.68d | 0d | Kapil [70%] | 4h |  |
| 721 | 1.5.1.13.2 | Next Largest Peak | 0.71d? | 2008-02-28 | 2008-02-29 | 720 | 319.68d | 0d | Kapil [70%] | 4h |  |
| 722 | 1.5.1.13.3 | Next Peak Right | 0.71d? | 2008-02-29 | 2008-02-29 | 721 | 319.68d | 0d | Kapil [70%] | 4h |  |
| 723 | 1.5.1.13.4 | Next Peak Left | 0.71d? | 2008-02-29 | 2008-03-03 | 722 | 319.68d | 0d | Kapil [70%] | 4h |  |
| 724 | 1.5.1.13.5 | Peak Tracking | 0.71d? | 2008-03-03 | 2008-03-04 | 723 | 319.68d | 0d | Kapil [70%] | 4h |  |
| 725 | 1.5.1.13.6 | Marker to Center | 0.71d? | 2008-03-04 | 2008-03-05 | 724 | 319.68d | 0d | Kapil [70%] | 4h |  |
| 726 | 1.5.1.14 | Orbit | 0.71d? | 2008-03-05 | 2008-03-05 | 725 | 319.68d | 0d | Kapil [70%] | 4h | P3 |
| 727 | 1.5.1.15 | **Time measurements** | 5.71d? | 2008-03-05 | 2008-03-13 |  | 319.68d |  |  | 32h | P4 |
| 728 | 1.5.1.15.1 | Delay time function | 0.71d? | 2008-03-05 | 2008-03-06 | 726 | 319.68d | 0d | Kapil [70%] | 4h |  |
| 729 | 1.5.1.15.2 | Maximum overshoot | 0.71d? | 2008-03-06 | 2008-03-07 | 728 | 319.68d | 0d | Kapil [70%] | 4h |  |
| 730 | 1.5.1.15.3 | Rise time | 0.71d? | 2008-03-07 | 2008-03-07 | 729 | 319.68d | 0d | Kapil [70%] | 4h |  |
| 731 | 1.5.1.15.4 | Decay Time | 0.71d? | 2008-03-07 | 2008-03-10 | 730 | 319.68d | 0d | Kapil [70%] | 4h |  |
| 732 | 1.5.1.15.5 | Pulse Width | 0.71d? | 2008-03-10 | 2008-03-11 | 731 | 319.68d | 0d | Kapil [70%] | 4h |  |
| 733 | 1.5.1.15.6 | Voltage Max | 0.71d? | 2008-03-11 | 2008-03-12 | 732 | 319.68d | 0d | Kapil [70%] | 4h |  |
| 734 | 1.5.1.15.7 | Voltage Min | 0.71d? | 2008-03-12 | 2008-03-12 | 733 | 319.68d | 0d | Kapil [70%] | 4h |  |
| 735 | 1.5.1.15.8 | Settling time | 0.71d? | 2008-03-12 | 2008-03-13 | 734 | 319.68d |  | Kapil [70%] | 4h |  |

| ID | WBS | Task | Duration | Start | Finish | Predecessors | Complete | Remaining | Total slack | Free slack | Resources | Work | Actual work | Text1 |
| --- | --- | --- | --- | --- | --- | --- | --- | --- | --- | --- | --- | --- | --- | --- |
| 736 | 1.5.2 | **Data model design** | 6.43d? | 2008-05-14 A | 2008-05-22 A |  | 100% |  |  |  |  | 36h | 36h | P1 |
| 737 | 1.5.2.1 | Review the current design/implementation | 0.71d? | 2008-05-14 A | 2008-05-14 A | 735 | 100% |  |  |  | Kapil [70%] | 4h | 4h |  |
| 738 | 1.5.2.2 | Complete the implementation | 2.86d? | 2008-05-14 A | 2008-05-19 A | 737 | 100% |  |  |  | Kapil [70%] | 16h | 16h |  |
| 739 | 1.5.2.3 | Review with the team & update | 1.43d? | 2008-05-19 A | 2008-05-21 A | 738 | 100% |  |  |  | Kapil [70%] | 8h | 8h |  |
| 740 | 1.5.2.4 | Build some test cases | 1.43d? | 2008-05-21 A | 2008-05-22 A | 739 | 100% |  |  |  | Kapil [70%] | 8h | 8h |  |
| 741 | 1.5.3 | **Infrastrucutre development** | 12.14d? | 2008-05-22 A | 2008-06-09 A |  | 100% |  |  |  |  | 68h | 68h | P1 |
| 742 | 1.5.3.1 | VS Project setup and tuning | 2.86d? | 2008-05-22 A | 2008-05-27 A | 740 | 100% |  |  |  | Kapil [70%] | 16h | 16h |  |
| 743 | 1.5.3.2 | Performance test framework and setup | 2.86d? | 2008-05-27 A | 2008-05-30 A | 742 | 100% |  |  |  | Kapil [70%] | 16h | 16h |  |
| 744 | 1.5.3.3 | Verfication test process and guidelines | 3.57d? | 2008-05-30 A | 2008-06-04 A | 743 | 100% |  |  |  | Kapil [70%] | 20h | 20h |  |
| 745 | 1.5.3.4 | Documentation tool setup for library users | 0.71d? | 2008-06-04 A | 2008-06-05 A | 744 | 100% |  |  |  | Kapil [70%] | 4h | 4h |  |
| 746 | 1.5.3.5 | FxCop setup | 2.14d? | 2008-06-05 A | 2008-06-09 A | 745 | 100% |  |  |  | Kapil [70%] | 12h | 12h |  |
| 747 | 1.5.4 | **Research/Implementation** | 316.43d? | 2008-02-04 A | 2009-04-21 |  | 2% | 308.85d? | 31.73d |  |  | 3183.6h | 78h |  |
| 748 | 1.5.4.1 | **FFT** | 8.57d? | 2008-06-09 A | 2008-06-20 A |  | 100% |  |  |  |  | 48h | 48h | P2 |
| 749 | 1.5.4.1.1 | Review meas catalog & update | 0.71d? | 2008-06-09 A | 2008-06-10 A | 746 | 100% |  |  |  | Kapil [70%] | 4h | 4h |  |
| 750 | 1.5.4.1.2 | Review managed & Native interface definitions | 0.71d? | 2008-06-10 A | 2008-06-11 A | 749 | 100% |  |  |  | Kapil [70%] | 4h | 4h |  |
| 751 | 1.5.4.1.3 | Implementation | 2.14d? | 2008-06-11 A | 2008-06-13 A | 750 | 100% |  |  |  | Kapil [70%] | 12h | 12h |  |
| 752 | 1.5.4.1.4 | Unit test the code | 0.71d? | 2008-06-13 A | 2008-06-16 A | 751 | 100% |  |  |  | Kapil [70%] | 4h | 4h |  |
| 753 | 1.5.4.1.5 | **Verifcation** | 2.14d? | 2008-06-16 A | 2008-06-18 A |  | 100% |  |  |  |  | 12h | 12h |  |
| 754 | 1.5.4.1.5.1 | Develop the verification code in Matlab | 0.71d? | 2008-06-16 A | 2008-06-16 A | 752 | 100% |  |  |  | Kapil [70%] | 4h | 4h |  |
| 755 | 1.5.4.1.5.2 | Define the test input data & pass to ML & MATLAB | 0.71d? | 2008-06-16 A | 2008-06-17 A | 754 | 100% |  |  |  | Kapil [70%] | 4h | 4h |  |
| 756 | 1.5.4.1.5.3 | Compare the outputs | 0.71d? | 2008-06-17 A | 2008-06-18 A | 755 | 100% |  |  |  | Kapil [70%] | 4h | 4h |  |
| 757 | 1.5.4.1.6 | Measure performance & document mesaurements | 1.43d? | 2008-06-18 A | 2008-06-19 A | 756 | 100% |  |  |  | Kapil [70%] | 8h | 8h |  |
| 758 | 1.5.4.1.7 | Interface definition, code, Nunit , Result & Doc review | 0.71d? | 2008-06-19 A | 2008-06-20 A | 757 | 100% |  |  |  | Kapil [70%] | 4h | 4h |  |
| 759 | 1.5.4.2 | **STFT** | 10.71d? | 2008-06-20 | 2008-07-07 |  |  |  | 238.15d |  |  | 60h |  | P5 |
| 760 | 1.5.4.2.1 | Review meas catalog & update | 0.71d? | 2008-06-20 | 2008-06-23 | 758 |  |  | 31.73d | 0d | Kapil [70%] | 4h |  |  |
| 761 | 1.5.4.2.2 | Review managed & Native interface definitions | 0.71d? | 2008-06-23 | 2008-06-23 | 760 |  |  | 238.15d | 0d | Kapil [70%] | 4h |  |  |
| 762 | 1.5.4.2.3 | Implementation Write code | 5d? | 2008-06-23 | 2008-06-30 | 761 |  |  | 238.15d | 0d | Kapil [70%] | 28h |  |  |
| 763 | 1.5.4.2.4 | Unit test the code | 0.71d? | 2008-06-30 | 2008-07-01 | 762 |  |  | 238.15d | 0d | Kapil [70%] | 4h |  |  |

| ID | WBS | Task | Duration | Start | Finish | Predecessors | Complete | Remaining | Total slack | Free slack | Resources | Work | Actual work | Text1 |
| --- | --- | --- | --- | --- | --- | --- | --- | --- | --- | --- | --- | --- | --- | --- |
| 764 | 1.5.4.2.5 | **Verifcation** | 2.14d? | 2008-07-01 | 2008-07-03 |  |  |  | 238.15d |  |  | 12h |  |  |
| 765 | 1.5.4.2.5.1 | Develop the verification code in Matlab | 0.71d? | 2008-07-01 | 2008-07-02 | 763 |  |  | 238.15d | 0d | Kapil [70%] | 4h |  |  |
| 766 | 1.5.4.2.5.2 | Define the test input data & pass to ML & MATLAB | 0.71d? | 2008-07-02 | 2008-07-02 | 765 |  |  | 238.15d | 0d | Kapil [70%] | 4h |  |  |
| 767 | 1.5.4.2.5.3 | Compare the outputs | 0.71d? | 2008-07-02 | 2008-07-03 | 766 |  |  | 238.15d | 0d | Kapil [70%] | 4h |  |  |
| 768 | 1.5.4.2.6 | Measure performance & document mesaurements | 0.71d? | 2008-07-03 | 2008-07-04 | 767 |  |  | 238.15d | 0d | Kapil [70%] | 4h |  |  |
| 769 | 1.5.4.2.7 | Interface definition, code, Nunit , Result & Doc review | 0.71d? | 2008-07-04 | 2008-07-07 | 768 |  |  | 32.73d | 0d | Kapil [70%] | 4h |  |  |
| 770 | 1.5.4.3 | **Windowing** | 7.69d? | 2008-07-07 A | 2008-07-16 |  | 10% | 6.92d? | 189.74d |  |  | 40h | 4h | P2 |
| 771 | 1.5.4.3.1 | Review meas catalog & update | 0.77d? | 2008-07-07 A | 2008-07-07 A | 769 | 100% |  |  |  | ShashiP [65%] | 4h | 4h |  |
| 772 | 1.5.4.3.2 | Review managed & Native interface definitions | 0.77d? | 2008-07-07 | 2008-07-08 | 771 |  |  | 189.74d | 0d | ShashiP [65%] | 4h |  |  |
| 773 | 1.5.4.3.3 | Write code | 1.54d? | 2008-07-08 | 2008-07-10 | 772 |  |  | 189.74d | 0d | ShashiP [65%] | 8h |  |  |
| 774 | 1.5.4.3.4 | Unit test the code | 0.77d? | 2008-07-10 | 2008-07-10 | 773 |  |  | 189.74d | 0d | ShashiP [65%] | 4h |  |  |
| 775 | 1.5.4.3.5 | **Verifcation** | 2.31d? | 2008-07-10 | 2008-07-15 |  |  |  | 189.74d |  |  | 12h |  |  |
| 776 | 1.5.4.3.5.1 | Develop the verification code in Matlab | 0.77d? | 2008-07-10 | 2008-07-11 | 774 |  |  | 189.74d | 0d | ShashiP [65%] | 4h |  |  |
| 777 | 1.5.4.3.5.2 | Define the test input data & pass to ML & MATLAB | 0.77d? | 2008-07-11 | 2008-07-14 | 776 |  |  | 189.74d | 0d | ShashiP [65%] | 4h |  |  |
| 778 | 1.5.4.3.5.3 | Compare the outputs | 0.77d? | 2008-07-14 | 2008-07-15 | 777 |  |  | 189.74d | 0d | ShashiP [65%] | 4h |  |  |
| 779 | 1.5.4.3.6 | Measure performance & document mesaurements | 0.77d? | 2008-07-15 | 2008-07-15 | 778 |  |  | 189.74d | 0d | ShashiP [65%] | 4h |  |  |
| 780 | 1.5.4.3.7 | Interface definition, code, Nunit , Result & Doc review | 0.77d? | 2008-07-15 | 2008-07-16 | 779 |  |  | 189.74d | 0d | ShashiP [65%] | 4h |  |  |
| 781 | 1.5.4.4 | **Resampling** | 10d? | 2008-07-16 | 2008-07-30 |  |  |  | 189.74d |  |  | 56h |  | P4 |
| 782 | 1.5.4.4.1 | Review meas catalog & update | 1.43d? | 2008-07-16 | 2008-07-18 | 780 |  |  | 189.74d | 0d | Kapil [70%] | 8h |  |  |
| 783 | 1.5.4.4.2 | Review managed & Native interface definitions | 1.43d? | 2008-07-18 | 2008-07-21 | 782 |  |  | 189.74d | 0d | Kapil [70%] | 8h |  |  |
| 784 | 1.5.4.4.3 | Write code | 2.86d? | 2008-07-21 | 2008-07-24 | 783 |  |  | 189.74d | 0d | Kapil [70%] | 16h |  |  |
| 785 | 1.5.4.4.4 | Unit test the code | 0.71d? | 2008-07-24 | 2008-07-25 | 784 |  |  | 189.74d | 0d | Kapil [70%] | 4h |  |  |
| 786 | 1.5.4.4.5 | **Verifcation** | 2.14d? | 2008-07-25 | 2008-07-29 |  |  |  | 189.74d |  |  | 12h |  |  |
| 787 | 1.5.4.4.5.1 | Develop the verification code in Matlab | 0.71d? | 2008-07-25 | 2008-07-25 | 785 |  |  | 189.74d | 0d | Kapil [70%] | 4h |  |  |
| 788 | 1.5.4.4.5.2 | Define the test input data & pass to ML & MATLAB | 0.71d? | 2008-07-25 | 2008-07-28 | 787 |  |  | 189.74d | 0d | Kapil [70%] | 4h |  |  |
| 789 | 1.5.4.4.5.3 | Compare the outputs | 0.71d? | 2008-07-28 | 2008-07-29 | 788 |  |  | 189.74d | 0d | Kapil [70%] | 4h |  |  |
| 790 | 1.5.4.4.6 | Measure performance & document mesaurements | 0.71d? | 2008-07-29 | 2008-07-29 | 789 |  |  | 189.74d | 0d | Kapil [70%] | 4h |  |  |
| 791 | 1.5.4.4.7 | Interface definition, code, Nunit , Result & Doc review | 0.71d? | 2008-07-29 | 2008-07-30 | 790 |  |  | 189.74d | 0d | Kapil [70%] | 4h |  |  |

| ID | WBS | Task | Duration | Start | Finish | Predecessors | Complete | Remaining | Total slack | Free slack | Resources | Work | Actual work | Text1 |
| --- | --- | --- | --- | --- | --- | --- | --- | --- | --- | --- | --- | --- | --- | --- |
| 792 | 1.5.4.5 | **ZoomFFT** | 10d? | 2008-07-30 | 2008-08-13 |  |  |  | 189.74d |  |  | 56h |  | P4 |
| 793 | 1.5.4.5.1 | Review meas catalog & update | 0.71d? | 2008-07-30 | 2008-07-31 | 791 |  |  | 189.74d | 0d | Kapil [70%] | 4h |  |  |
| 794 | 1.5.4.5.2 | Review managed & Native interface definitions | 0.71d? | 2008-07-31 | 2008-08-01 | 793 |  |  | 189.74d | 0d | Kapil [70%] | 4h |  |  |
| 795 | 1.5.4.5.3 | Write code | 2.86d? | 2008-08-01 | 2008-08-05 | 794 |  |  | 189.74d | 0d | Kapil [70%] | 16h |  |  |
| 796 | 1.5.4.5.4 | Unit test the code | 1.43d? | 2008-08-05 | 2008-08-07 | 795 |  |  | 189.74d | 0d | Kapil [70%] | 8h |  |  |
| 797 | 1.5.4.5.5 | **Verifcation** | 2.86d? | 2008-08-07 | 2008-08-12 |  |  |  | 189.74d |  |  | 16h |  |  |
| 798 | 1.5.4.5.5.1 | Develop the verification code in Matlab | 1.43d? | 2008-08-07 | 2008-08-08 | 796 |  |  | 189.74d | 0d | Kapil [70%] | 8h |  |  |
| 799 | 1.5.4.5.5.2 | Define the test input data & pass to ML & MATLAB | 0.71d? | 2008-08-08 | 2008-08-11 | 798 |  |  | 189.74d | 0d | Kapil [70%] | 4h |  |  |
| 800 | 1.5.4.5.5.3 | Compare the outputs | 0.71d? | 2008-08-11 | 2008-08-12 | 799 |  |  | 189.74d | 0d | Kapil [70%] | 4h |  |  |
| 801 | 1.5.4.5.6 | Measure performance & document mesaurements | 0.71d? | 2008-08-12 | 2008-08-12 | 800 |  |  | 189.74d | 0d | Kapil [70%] | 4h |  |  |
| 802 | 1.5.4.5.7 | Interface definition, code, Nunit , Result & Doc review | 0.71d? | 2008-08-12 | 2008-08-13 | 801 |  |  | 189.74d | 0d | Kapil [70%] | 4h |  |  |
| 803 | 1.5.4.6 | **Spectrums** | 31.18d? | 2008-08-13 A | 2008-09-25 |  | 3% | 30.36d? | 179.28d |  |  | 160h | 4h |  |
| 804 | 1.5.4.6.1 | **Linear** | 7.43d? | 2008-08-13 | 2008-08-25 |  |  |  | 188.74d |  |  | 36h |  | P2 |
| 805 | 1.5.4.6.1.1 | Review meas catalog & update | 0.71d? | 2008-08-13 | 2008-08-14 | 802 |  |  | 189.74d | 0d | Kapil [70%] | 4h |  |  |
| 806 | 1.5.4.6.1.2 | Review managed & Native interface definitions | 0.71d? | 2008-08-14 | 2008-08-18 | 805 |  |  | 188.74d | 0d | Kapil [70%] | 4h |  |  |
| 807 | 1.5.4.6.1.3 | Write code | 0.71d? | 2008-08-18 | 2008-08-18 | 806 |  |  | 188.74d | 0d | Kapil [70%] | 4h |  |  |
| 808 | 1.5.4.6.1.4 | Unit test the code | 0.71d? | 2008-08-18 | 2008-08-19 | 807 |  |  | 188.74d | 0d | Kapil [70%] | 4h |  |  |
| 809 | 1.5.4.6.1.5 | **Verifcation** | 2.14d? | 2008-08-19 | 2008-08-21 |  |  |  | 188.74d |  |  | 12h |  |  |
| 810 | 1.5.4.6.1.5.1 | Develop the verification code in Matlab | 0.71d? | 2008-08-19 | 2008-08-20 | 808 |  |  | 188.74d | 0d | Kapil [70%] | 4h |  |  |
| 811 | 1.5.4.6.1.5.2 | Define the test input data & pass to ML & MATLAB | 0.71d? | 2008-08-20 | 2008-08-20 | 810 |  |  | 188.74d | 0d | Kapil [70%] | 4h |  |  |
| 812 | 1.5.4.6.1.5.3 | Compare the outputs | 0.71d? | 2008-08-20 | 2008-08-21 | 811 |  |  | 188.74d | 0d | Kapil [70%] | 4h |  |  |
| 813 | 1.5.4.6.1.6 | Measure performance & document mesaurements | 0.71d? | 2008-08-21 | 2008-08-22 | 812 |  |  | 188.74d | 0d | Kapil [70%] | 4h |  |  |
| 814 | 1.5.4.6.1.7 | Interface definition, code, Nunit , Result & Doc review | 0.71d? | 2008-08-22 | 2008-08-25 | 813 |  |  | 188.74d | 0d | Kapil [70%] | 4h |  |  |
| 815 | 1.5.4.6.2 | **Power** | 6.43d? | 2008-08-25 | 2008-09-02 |  |  |  | 188.74d |  |  | 36h |  | P2 |
| 816 | 1.5.4.6.2.1 | Review meas catalog & update | 0.71d? | 2008-08-25 | 2008-08-25 | 814 |  |  | 188.74d | 0d | Kapil [70%] | 4h |  |  |
| 817 | 1.5.4.6.2.2 | Review managed & Native interface definitions | 0.71d? | 2008-08-25 | 2008-08-26 | 816 |  |  | 188.74d | 0d | Kapil [70%] | 4h |  |  |
| 818 | 1.5.4.6.2.3 | Write code | 0.71d? | 2008-08-26 | 2008-08-27 | 817 |  |  | 188.74d | 0d | Kapil [70%] | 4h |  |  |
| 819 | 1.5.4.6.2.4 | Unit test the code | 0.71d? | 2008-08-27 | 2008-08-27 | 818 |  |  | 188.74d | 0d | Kapil [70%] | 4h |  |  |

| ID | WBS | Task | Duration | Start | Finish | Predecessors | Complete | Remaining | Total slack | Free slack | Resources | Work | Actual work | Text1 |
| --- | --- | --- | --- | --- | --- | --- | --- | --- | --- | --- | --- | --- | --- | --- |
| 820 | 1.5.4.6.2.5 | **Verifcation** | 2.14d? | 2008-08-27 | 2008-09-01 |  |  |  | 188.74d |  |  | 12h |  |  |
| 821 | 1.5.4.6.2.5.1 | Develop the verification code in Matlab | 0.71d? | 2008-08-27 | 2008-08-28 | 819 |  |  | 188.74d | 0d | Kapil [70%] | 4h |  |  |
| 822 | 1.5.4.6.2.5.2 | Define the test input data & pass to ML & MATLAB | 0.71d? | 2008-08-28 | 2008-08-29 | 821 |  |  | 188.74d | 0d | Kapil [70%] | 4h |  |  |
| 823 | 1.5.4.6.2.5.3 | Compare the outputs | 0.71d? | 2008-08-29 | 2008-09-01 | 822 |  |  | 188.74d | 0d | Kapil [70%] | 4h |  |  |
| 824 | 1.5.4.6.2.6 | Measure performance & document mesaurements | 0.71d? | 2008-09-01 | 2008-09-01 | 823 |  |  | 188.74d | 0d | Kapil [70%] | 4h |  |  |
| 825 | 1.5.4.6.2.7 | Interface definition, code, Nunit , Result & Doc review | 0.71d? | 2008-09-01 | 2008-09-02 | 824 |  |  | 188.74d | 0d | Kapil [70%] | 4h |  |  |
| 826 | 1.5.4.6.3 | **Phase** | 8.86d? | 2008-09-02 | 2008-09-15 |  |  |  | 187.74d |  |  | 44h |  | P3 |
| 827 | 1.5.4.6.3.1 | Review meas catalog & update | 0.71d? | 2008-09-02 | 2008-09-04 | 825 |  |  | 187.74d | 0d | Kapil [70%] | 4h |  |  |
| 828 | 1.5.4.6.3.2 | Review managed & Native interface definitions | 0.71d? | 2008-09-04 | 2008-09-04 | 827 |  |  | 187.74d | 0d | Kapil [70%] | 4h |  |  |
| 829 | 1.5.4.6.3.3 | Write code | 1.43d? | 2008-09-04 | 2008-09-08 | 828 |  |  | 187.74d | 0d | Kapil [70%] | 8h |  |  |
| 830 | 1.5.4.6.3.4 | Unit test the code | 0.71d? | 2008-09-08 | 2008-09-09 | 829 |  |  | 187.74d | 0d | Kapil [70%] | 4h |  |  |
| 831 | 1.5.4.6.3.5 | **Verifcation** | 2.86d? | 2008-09-09 | 2008-09-11 |  |  |  | 187.74d |  |  | 16h |  |  |
| 832 | 1.5.4.6.3.5.1 | Develop the verification code in Matlab | 1.43d? | 2008-09-09 | 2008-09-10 | 830 |  |  | 187.74d | 0d | Kapil [70%] | 8h |  |  |
| 833 | 1.5.4.6.3.5.2 | Define the test input data & pass to ML & MATLAB | 0.71d? | 2008-09-10 | 2008-09-11 | 832 |  |  | 187.74d | 0d | Kapil [70%] | 4h |  |  |
| 834 | 1.5.4.6.3.5.3 | Compare the outputs | 0.71d? | 2008-09-11 | 2008-09-11 | 833 |  |  | 187.74d | 0d | Kapil [70%] | 4h |  |  |
| 835 | 1.5.4.6.3.6 | Measure performance & document mesaurements | 0.71d? | 2008-09-11 | 2008-09-12 | 834 |  |  | 187.74d | 0d | Kapil [70%] | 4h |  |  |
| 836 | 1.5.4.6.3.7 | Interface definition, code, Nunit , Result & Doc review | 0.71d? | 2008-09-12 | 2008-09-15 | 835 |  |  | 187.74d |  | Kapil [70%] | 4h |  |  |
| 837 | 1.5.4.6.4 | **Cross power** | 8.46d? | 2008-09-15 A | 2008-09-25 |  | 9% | 7.69d? | 34.12d |  |  | 44h | 4h |  |
| 838 | 1.5.4.6.4.1 | Review meas catalog & update | 0.77d? | 2008-09-15 A | 2008-09-16 A | 836 | 100% |  |  |  | Ramkumar [65%] | 4h | 4h |  |
| 839 | 1.5.4.6.4.2 | Review managed & Native interface definitions | 0.77d? | 2008-09-16 | 2008-09-16 | 838 |  |  | 34.12d | 0d | Ramkumar [65%] | 4h |  |  |
| 840 | 1.5.4.6.4.3 | Write code | 1.54d? | 2008-09-16 | 2008-09-18 | 839 |  |  | 34.12d | 0d | Ramkumar [65%] | 8h |  |  |
| 841 | 1.5.4.6.4.4 | Unit test the code | 0.77d? | 2008-09-18 | 2008-09-19 | 840 |  |  | 34.12d | 0d | Ramkumar [65%] | 4h |  |  |
| 842 | 1.5.4.6.4.5 | **Verifcation** | 3.08d? | 2008-09-19 | 2008-09-24 |  |  |  | 34.12d |  |  | 16h |  |  |
| 843 | 1.5.4.6.4.5.1 | Develop the verification code in Matlab | 1.54d? | 2008-09-19 | 2008-09-22 | 841 |  |  | 34.12d | 0d | Ramkumar [65%] | 8h |  |  |
| 844 | 1.5.4.6.4.5.2 | Define the test input data & pass to ML & MATLAB | 0.77d? | 2008-09-22 | 2008-09-23 | 843 |  |  | 34.12d | 0d | Ramkumar [65%] | 4h |  |  |
| 845 | 1.5.4.6.4.5.3 | Compare the outputs | 0.77d? | 2008-09-23 | 2008-09-24 | 844 |  |  | 34.12d | 0d | Ramkumar [65%] | 4h |  |  |
| 846 | 1.5.4.6.4.6 | Measure performance & document mesaurements | 0.77d? | 2008-09-24 | 2008-09-25 | 845 |  |  | 34.12d | 0d | Ramkumar [65%] | 4h |  |  |
| 847 | 1.5.4.6.4.7 | Interface definition, code, Nunit , Result & Doc review | 0.77d? | 2008-09-25 | 2008-09-25 | 846 |  |  | 34.12d | 0d | Ramkumar [65%] | 4h |  |  |

| ID | WBS | Task | Duration | Start | Finish | Predecessors | Total slack | Free slack | Resources | Work | Text1 |
| --- | --- | --- | --- | --- | --- | --- | --- | --- | --- | --- | --- |
| 848 | 1.5.4.7 | **Limit lines** | 19.86d? | 2008-09-25 | 2008-10-23 |  | 32.12d |  |  | 100h | P7 |
| 849 | 1.5.4.7.1 | Review meas catalog & update | 0.71d? | 2008-09-25 | 2008-09-26 | 847 | 34.12d | 0d | Kapil [70%] | 4h |  |
| 850 | 1.5.4.7.2 | Review managed & Native interface definitions | 0.71d? | 2008-09-26 | 2008-09-29 | 849 | 34.12d | 0d | Kapil [70%] | 4h |  |
| 851 | 1.5.4.7.3 | Write code | 5d? | 2008-09-29 | 2008-10-07 | 850 | 33.12d | 0d | Kapil [70%] | 28h |  |
| 852 | 1.5.4.7.4 | Unit test the code | 2.14d? | 2008-10-07 | 2008-10-10 | 851 | 32.12d | 0d | Kapil [70%] | 12h |  |
| 853 | 1.5.4.7.5 | **Verifcation** | 3.57d? | 2008-10-10 | 2008-10-16 |  | 32.12d |  |  | 20h |  |
| 854 | 1.5.4.7.5.1 | Develop the verification code in Matlab | 1.43d? | 2008-10-10 | 2008-10-13 | 852 | 32.12d | 0d | Kapil [70%] | 8h |  |
| 855 | 1.5.4.7.5.2 | Define the test input data & pass to ML & MATLAB | 1.43d? | 2008-10-13 | 2008-10-15 | 854 | 32.12d | 0d | Kapil [70%] | 8h |  |
| 856 | 1.5.4.7.5.3 | Compare the outputs | 0.71d? | 2008-10-15 | 2008-10-16 | 855 | 32.12d | 0d | Kapil [70%] | 4h |  |
| 857 | 1.5.4.7.6 | Measure performance & document mesaurements | 0.71d? | 2008-10-16 | 2008-10-16 | 856 | 32.12d | 0d | Kapil [70%] | 4h |  |
| 858 | 1.5.4.7.7 | Interface definition, code, Nunit , Result & Doc review | 0.71d? | 2008-10-16 | 2008-10-17 | 857 | 32.12d | 0d | Kapil [70%] | 4h |  |
| 859 | 1.5.4.7.8 | Upper limit | 2.14d? | 2008-10-17 | 2008-10-21 | 858 | 32.12d | 0d | Kapil [70%] | 12h |  |
| 860 | 1.5.4.7.9 | Lower limit | 2.14d? | 2008-10-21 | 2008-10-23 | 859 | 32.12d | 0d | Kapil [70%] | 12h |  |
| 861 | 1.5.4.8 | **Swept Sine** | 15.29d? | 2008-10-23 | 2008-11-14 |  | 32.12d |  |  | 80h | P6 |
| 862 | 1.5.4.8.1 | Review meas catalog & update | 0.71d? | 2008-10-23 | 2008-10-24 | 860 | 32.12d | 0d | Kapil [70%] | 4h |  |
| 863 | 1.5.4.8.2 | Review managed & Native interface definitions | 1.43d? | 2008-10-24 | 2008-10-27 | 862 | 33.12d | 0d | Kapil [70%] | 8h |  |
| 864 | 1.5.4.8.3 | Write code | 5d? | 2008-10-27 | 2008-11-04 | 863 | 32.12d | 0d | Kapil [70%] | 28h |  |
| 865 | 1.5.4.8.4 | Unit test the code | 2.14d? | 2008-11-04 | 2008-11-07 | 864 | 32.12d | 0d | Kapil [70%] | 12h |  |
| 866 | 1.5.4.8.5 | **Verifcation** | 3.57d? | 2008-11-07 | 2008-11-12 |  | 32.12d |  |  | 20h |  |
| 867 | 1.5.4.8.5.1 | Develop the verification code in Matlab | 1.43d? | 2008-11-07 | 2008-11-10 | 865 | 32.12d | 0d | Kapil [70%] | 8h |  |
| 868 | 1.5.4.8.5.2 | Define the test input data & pass to ML & MATLAB | 1.43d? | 2008-11-10 | 2008-11-11 | 867 | 32.12d | 0d | Kapil [70%] | 8h |  |
| 869 | 1.5.4.8.5.3 | Compare the outputs | 0.71d? | 2008-11-11 | 2008-11-12 | 868 | 33.12d | 0d | Kapil [70%] | 4h |  |
| 870 | 1.5.4.8.6 | Measure performance & document mesaurements | 0.71d? | 2008-11-12 | 2008-11-13 | 869 | 33.12d | 0d | Kapil [70%] | 4h |  |
| 871 | 1.5.4.8.7 | Interface definition, code, Nunit , Result & Doc review | 0.71d? | 2008-11-13 | 2008-11-14 | 870 | 33.12d | 0d | Kapil [70%] | 4h |  |

| ID | WBS | Task | Duration | Start | Finish | Predecessors | Total slack | Free slack | Resources | Work | Text1 |
| --- | --- | --- | --- | --- | --- | --- | --- | --- | --- | --- | --- |
| 872 | 1.5.4.9 | **Gain, Phase margins** | 14.29d? | 2008-11-14 | 2008-12-04 |  | 33.12d |  |  | 80h | P6 |
| 873 | 1.5.4.9.1 | Review meas catalog & update | 0.71d? | 2008-11-14 | 2008-11-14 | 871 | 33.12d | 0d | Kapil [70%] | 4h |  |
| 874 | 1.5.4.9.2 | Review managed & Native interface definitions | 1.43d? | 2008-11-14 | 2008-11-18 | 873 | 33.12d | 0d | Kapil [70%] | 8h |  |
| 875 | 1.5.4.9.3 | Write code | 5d? | 2008-11-18 | 2008-11-25 | 874 | 33.12d | 0d | Kapil [70%] | 28h |  |
| 876 | 1.5.4.9.4 | Unit test the code | 2.14d? | 2008-11-25 | 2008-11-27 | 875 | 33.12d | 0d | Kapil [70%] | 12h |  |
| 877 | 1.5.4.9.5 | **Verifcation** | 3.57d? | 2008-11-27 | 2008-12-02 |  | 33.12d |  |  | 20h |  |
| 878 | 1.5.4.9.5.1 | Develop the verification code in Matlab | 1.43d? | 2008-11-27 | 2008-11-28 | 876 | 33.12d | 0d | Kapil [70%] | 8h |  |
| 879 | 1.5.4.9.5.2 | Define the test input data & pass to ML & MATLAB | 1.43d? | 2008-11-28 | 2008-12-02 | 878 | 33.12d | 0d | Kapil [70%] | 8h |  |
| 880 | 1.5.4.9.5.3 | Compare the outputs | 0.71d? | 2008-12-02 | 2008-12-02 | 879 | 33.12d | 0d | Kapil [70%] | 4h |  |
| 881 | 1.5.4.9.6 | Measure performance & document mesaurements | 0.71d? | 2008-12-02 | 2008-12-03 | 880 | 33.12d | 0d | Kapil [70%] | 4h |  |
| 882 | 1.5.4.9.7 | Interface definition, code, Nunit , Result & Doc review | 0.71d? | 2008-12-03 | 2008-12-04 | 881 | 33.12d | 0d | Kapil [70%] | 4h |  |
| 883 | 1.5.4.10 | **Frequency, Damping** | 16.29d? | 2008-12-04 | 2008-12-26 |  | 31.12d |  |  | 80h | P6 |
| 884 | 1.5.4.10.1 | Review meas catalog & update | 0.71d? | 2008-12-04 | 2008-12-05 | 882 | 33.12d | 0d | Kapil [70%] | 4h |  |
| 885 | 1.5.4.10.2 | Review managed & Native interface definitions | 1.43d? | 2008-12-05 | 2008-12-08 | 884 | 33.12d | 0d | Kapil [70%] | 8h |  |
| 886 | 1.5.4.10.3 | Write code | 5d? | 2008-12-08 | 2008-12-16 | 885 | 32.12d | 0d | Kapil [70%] | 28h |  |
| 887 | 1.5.4.10.4 | Unit test the code | 2.14d? | 2008-12-16 | 2008-12-18 | 886 | 32.12d | 0d | Kapil [70%] | 12h |  |
| 888 | 1.5.4.10.5 | **Verifcation** | 3.57d? | 2008-12-18 | 2008-12-24 |  | 32.12d |  |  | 20h |  |
| 889 | 1.5.4.10.5.1 | Develop the verification code in Matlab | 1.43d? | 2008-12-18 | 2008-12-22 | 887 | 32.12d | 0d | Kapil [70%] | 8h |  |
| 890 | 1.5.4.10.5.2 | Define the test input data & pass to ML & MATLAB | 1.43d? | 2008-12-22 | 2008-12-23 | 889 | 32.12d | 0d | Kapil [70%] | 8h |  |
| 891 | 1.5.4.10.5.3 | Compare the outputs | 0.71d? | 2008-12-23 | 2008-12-24 | 890 | 32.12d | 0d | Kapil [70%] | 4h |  |
| 892 | 1.5.4.10.6 | Measure performance & document mesaurements | 0.71d? | 2008-12-24 | 2008-12-24 | 891 | 32.12d | 0d | Kapil [70%] | 4h |  |
| 893 | 1.5.4.10.7 | Interface definition, code, Nunit , Result & Doc review | 0.71d? | 2008-12-24 | 2008-12-26 | 892 | 31.12d | 0d | Kapil [70%] | 4h |  |
| 894 | 1.5.4.11 | **Frequency Response** | 20d? | 2008-12-26 | 2009-01-23 |  | 31.12d |  |  | 112h | P3 |
| 895 | 1.5.4.11.1 | Review meas catalog & update | 0.71d? | 2008-12-26 | 2008-12-29 | 893 | 31.12d | 0d | Kapil [70%] | 4h |  |
| 896 | 1.5.4.11.2 | Review managed & Native interface definitions | 2.14d? | 2008-12-29 | 2008-12-31 | 895 | 31.12d | 0d | Kapil [70%] | 12h |  |
| 897 | 1.5.4.11.3 | Write code | 5.71d? | 2008-12-31 | 2009-01-08 | 896 | 31.12d | 0d | Kapil [70%] | 32h |  |
| 898 | 1.5.4.11.4 | Unit test the code | 3.57d? | 2009-01-08 | 2009-01-13 | 897 | 31.12d | 0d | Kapil [70%] | 20h |  |

| ID | WBS | Task | Duration | Start | Finish | Predecessors | Total slack | Free slack | Resources | Work | Text1 |
| --- | --- | --- | --- | --- | --- | --- | --- | --- | --- | --- | --- |
| 899 | 1.5.4.11.5 | **Verifcation** | 5.71d? | 2009-01-13 | 2009-01-21 |  | 31.12d |  |  | 32h |  |
| 900 | 1.5.4.11.5.1 | Develop the verification code in Matlab | 2.14d? | 2009-01-13 | 2009-01-15 | 898 | 31.12d | 0d | Kapil [70%] | 12h |  |
| 901 | 1.5.4.11.5.2 | Define the test input data & pass to ML & MATLAB | 2.14d? | 2009-01-15 | 2009-01-20 | 900 | 31.12d | 0d | Kapil [70%] | 12h |  |
| 902 | 1.5.4.11.5.3 | Compare the outputs | 1.43d? | 2009-01-20 | 2009-01-21 | 901 | 31.12d | 0d | Kapil [70%] | 8h |  |
| 903 | 1.5.4.11.6 | Measure performance & document mesaurements | 0.71d? | 2009-01-21 | 2009-01-22 | 902 | 31.12d | 0d | Kapil [70%] | 4h |  |
| 904 | 1.5.4.11.7 | Interface definition, code, Nunit , Result & Doc review | 1.43d? | 2009-01-22 | 2009-01-23 | 903 | 31.12d | 0d | Kapil [70%] | 8h |  |
| 905 | 1.5.4.12 | **Variance** | 11.43d? | 2009-01-23 | 2009-02-10 |  | 31.12d |  |  | 64h | P6 |
| 906 | 1.5.4.12.1 | Review meas catalog & update | 0.71d? | 2009-01-23 | 2009-01-26 | 904 | 31.12d | 0d | Kapil [70%] | 4h |  |
| 907 | 1.5.4.12.2 | Review managed & Native interface definitions | 1.43d? | 2009-01-26 | 2009-01-27 | 906 | 31.12d | 0d | Kapil [70%] | 8h |  |
| 908 | 1.5.4.12.3 | Write code | 2.14d? | 2009-01-27 | 2009-01-29 | 907 | 31.12d | 0d | Kapil [70%] | 12h |  |
| 909 | 1.5.4.12.4 | Unit test the code | 1.43d? | 2009-01-29 | 2009-02-02 | 908 | 31.12d | 0d | Kapil [70%] | 8h |  |
| 910 | 1.5.4.12.5 | **Verifcation** | 3.57d? | 2009-02-02 | 2009-02-05 |  | 31.12d |  |  | 20h |  |
| 911 | 1.5.4.12.5.1 | Develop the verification code in Matlab | 1.43d? | 2009-02-02 | 2009-02-03 | 909 | 31.12d | 0d | Kapil [70%] | 8h |  |
| 912 | 1.5.4.12.5.2 | Define the test input data & pass to ML & MATLAB | 1.43d? | 2009-02-03 | 2009-02-05 | 911 | 31.12d | 0d | Kapil [70%] | 8h |  |
| 913 | 1.5.4.12.5.3 | Compare the outputs | 0.71d? | 2009-02-05 | 2009-02-05 | 912 | 31.12d | 0d | Kapil [70%] | 4h |  |
| 914 | 1.5.4.12.6 | Measure performance & document mesaurements | 0.71d? | 2009-02-05 | 2009-02-06 | 913 | 31.12d | 0d | Kapil [70%] | 4h |  |
| 915 | 1.5.4.12.7 | Interface definition, code, Nunit , Result & Doc review | 1.43d? | 2009-02-06 | 2009-02-10 | 914 | 31.12d | 0d | Kapil [70%] | 8h |  |
| 916 | 1.5.4.13 | **Group Delay** | 50.41d? | 2009-02-10 | 2009-04-21 |  | 31.12d |  |  | 80h | P3 |
| 917 | 1.5.4.13.1 | Review meas catalog & update | 0.71d? | 2009-02-10 | 2009-02-10 | 915 | 31.12d | 0d | Kapil [70%] | 4h |  |
| 918 | 1.5.4.13.2 | Review managed & Native interface definitions | 1.43d? | 2009-02-10 | 2009-02-12 | 917 | 31.12d | 0d | Kapil [70%] | 8h |  |
| 919 | 1.5.4.13.3 | Write code | 4.29d? | 2009-02-12 | 2009-02-18 | 918 | 31.12d | 0d | Kapil [70%] | 24h |  |
| 920 | 1.5.4.13.4 | Unit test the code | 2.14d? | 2009-02-18 | 2009-02-20 | 919 | 31.12d | 0d | Kapil [70%] | 12h |  |
| 921 | 1.5.4.13.5 | **Verifcation** | 3.57d? | 2009-02-20 | 2009-02-26 |  | 31.12d |  |  | 20h |  |
| 922 | 1.5.4.13.5.1 | Develop the verification code in Matlab | 1.43d? | 2009-02-20 | 2009-02-24 | 920 | 31.12d | 0d | Kapil [70%] | 8h |  |
| 923 | 1.5.4.13.5.2 | Define the test input data & pass to ML & MATLAB | 1.43d? | 2009-02-24 | 2009-02-25 | 922 | 31.12d | 0d | Kapil [70%] | 8h |  |
| 924 | 1.5.4.13.5.3 | Compare the outputs | 0.71d? | 2009-02-25 | 2009-02-26 | 923 | 31.12d | 0d | Kapil [70%] | 4h |  |
| 925 | 1.5.4.13.6 | Measure performance & document mesaurements | 0.71d? | 2009-02-26 | 2009-02-26 | 924 | 31.12d | 0d | Kapil [70%] | 4h |  |
| 926 | 1.5.4.13.7 | Interface definition, code, Nunit , Result & Doc review | 1.43d? | 2009-04-20 | 2009-04-21 | 925 | 31.73d |  | Kapil [70%] | 8h |  |

| ID | WBS | Task | Duration | Start | Finish | Predecessors | Total slack | Free slack | Resources | Work | Text1 |
| --- | --- | --- | --- | --- | --- | --- | --- | --- | --- | --- | --- |
| 927 | 1.5.4.14 | **Distortion** | 277d? | 2008-02-27 | 2009-03-20 |  | 53.23d |  |  | 348h |  |
| 928 | 1.5.4.14.1 | **THD** | 11.44d? | 2008-08-04 | 2008-08-19 |  | 53.42d |  |  | 56h | P2 |
| 929 | 1.5.4.14.1.1 | Review meas catalog & update | 0.36d? | 2008-08-04 | 2008-08-04 | 1433 | 53.42d | 0d | Kapil [70%] | 2h |  |
| 930 | 1.5.4.14.1.2 | Review managed & Native interface definitions | 0.36d? | 2008-08-04 | 2008-08-04 | 929 | 53.42d | 0d | Kapil [70%] | 2h |  |
| 931 | 1.5.4.14.1.3 | Write code | 2.14d? | 2008-08-04 | 2008-08-06 | 930 | 53.42d | 0d | Kapil [70%] | 12h |  |
| 932 | 1.5.4.14.1.4 | Unit test the code | 1.43d? | 2008-08-06 | 2008-08-08 | 931 | 53.42d | 0d | Kapil [70%] | 8h |  |
| 933 | 1.5.4.14.1.5 | **Verifcation** | 5.62d? | 2008-08-08 | 2008-08-18 |  | 53.42d |  |  | 24h |  |
| 934 | 1.5.4.14.1.5.1 | Develop the verification code in Matlab | 3.08d? | 2008-08-08 | 2008-08-13 | 932 | 53.42d | 0d | Ramkumar [65%] | 16h |  |
| 935 | 1.5.4.14.1.5.2 | Define the test input data & pass to ML & MATLAB | 0.77d? | 2008-08-13 | 2008-08-14 | 934 | 53.42d | 0d | Ramkumar [65%] | 4h |  |
| 936 | 1.5.4.14.1.5.3 | Compare the outputs | 0.77d? | 2008-08-14 | 2008-08-18 | 935 | 53.42d | 0d | Ramkumar [65%] | 4h |  |
| 937 | 1.5.4.14.1.6 | Measure performance & document mesaurements | 0.77d? | 2008-08-18 | 2008-08-18 | 936 | 53.42d | 0d | Ramkumar [65%] | 4h |  |
| 938 | 1.5.4.14.1.7 | Interface definition, code, Nunit , Result & Doc review | 0.77d? | 2008-08-18 | 2008-08-19 | 937 | 53.42d | 1.42d | Ramkumar [65%] | 4h |  |
| 939 | 1.5.4.14.2 | **THD + Noise** | 34.92d? | 2009-02-02 | 2009-03-20 |  | 52.77d |  |  | 80h | P2 |
| 940 | 1.5.4.14.2.1 | Review meas catalog & update | 0.77d? | 2009-02-02 | 2009-02-02 | 938 | 52.77d | 0d | ShashiP [65%] | 4h |  |
| 941 | 1.5.4.14.2.2 | Review managed & Native interface definitions | 0.77d? | 2009-02-02 | 2009-02-03 | 940 | 52.77d | 0.46d | ShashiP [65%] | 4h |  |
| 942 | 1.5.4.14.2.3 | Write code | 5.38d? | 2009-02-16 | 2009-02-23 | 941 | 52.31d | 0d | ShashiP [65%] | 28h |  |
| 943 | 1.5.4.14.2.4 | Unit test the code | 1.54d? | 2009-02-25 | 2009-02-26 | 942 | 52.31d | 1.08d | ShashiP [65%] | 8h |  |
| 944 | 1.5.4.14.2.5 | **Verifcation** | 8.62d? | 2009-03-02 | 2009-03-12 |  | 53.23d |  |  | 24h |  |
| 945 | 1.5.4.14.2.5.1 | Develop the verification code in Matlab | 3.08d? | 2009-03-02 | 2009-03-05 | 943 | 53.23d | 0d | ShashiP [65%] | 16h |  |
| 946 | 1.5.4.14.2.5.2 | Define the test input data & pass to ML & MATLAB | 0.77d? | 2009-03-05 | 2009-03-05 | 945 | 53.23d | 0d | ShashiP [65%] | 4h |  |
| 947 | 1.5.4.14.2.5.3 | Compare the outputs | 0.77d? | 2009-03-11 | 2009-03-12 | 946 | 53.23d | 0d | ShashiP [65%] | 4h |  |
| 948 | 1.5.4.14.2.6 | Measure performance & document mesaurements | 0.77d? | 2009-03-12 | 2009-03-13 | 947 | 53.23d | 0d | ShashiP [65%] | 4h |  |
| 949 | 1.5.4.14.2.7 | Interface definition, code, Nunit , Result & Doc review | 1.54d? | 2009-03-19 | 2009-03-20 | 948 | 53.23d |  | ShashiP [65%] | 8h |  |
| 950 | 1.5.4.14.3 | **SINAD** | 10.77d? | 2008-02-27 | 2008-03-13 |  | 197.54d |  |  | 56h | P4 |
| 951 | 1.5.4.14.3.1 | Review meas catalog & update | 0.77d? | 2008-02-27 | 2008-02-28 | 1004 | 197.54d | 0d | ShashiP [65%] | 4h |  |
| 952 | 1.5.4.14.3.2 | Review managed & Native interface definitions | 0.77d? | 2008-02-28 | 2008-02-29 | 951 | 197.54d | 0d | ShashiP [65%] | 4h |  |
| 953 | 1.5.4.14.3.3 | Write code | 3.08d? | 2008-02-29 | 2008-03-05 | 952 | 197.54d | 0d | ShashiP [65%] | 16h |  |
| 954 | 1.5.4.14.3.4 | Unit test the code | 1.54d? | 2008-03-05 | 2008-03-07 | 953 | 197.54d | 0d | ShashiP [65%] | 8h |  |

| ID | WBS | Task | Duration | Start | Finish | Predecessors | Total slack | Free slack | Resources | Work | Text1 |
| --- | --- | --- | --- | --- | --- | --- | --- | --- | --- | --- | --- |
| 955 | 1.5.4.14.3.5 | **Verifcation** | 3.08d? | 2008-03-07 | 2008-03-12 |  | 198.54d |  |  | 16h |  |
| 956 | 1.5.4.14.3.5.1 | Develop the verification code in Matlab | 1.54d? | 2008-03-07 | 2008-03-10 | 954 | 198.54d | 0d | ShashiP [65%] | 8h |  |
| 957 | 1.5.4.14.3.5.2 | Define the test input data & pass to ML & MATLAB | 0.77d? | 2008-03-10 | 2008-03-11 | 956 | 198.54d | 0d | ShashiP [65%] | 4h |  |
| 958 | 1.5.4.14.3.5.3 | Compare the outputs | 0.77d? | 2008-03-11 | 2008-03-12 | 957 | 198.54d | 0d | ShashiP [65%] | 4h |  |
| 959 | 1.5.4.14.3.6 | Measure performance & document mesaurements | 0.77d? | 2008-03-12 | 2008-03-12 | 958 | 198.54d | 0d | ShashiP [65%] | 4h |  |
| 960 | 1.5.4.14.3.7 | Interface definition, code, Nunit , Result & Doc review | 0.77d? | 2008-03-12 | 2008-03-13 | 959 | 198.54d | 0d | ShashiP [65%] | 4h |  |
| 961 | 1.5.4.14.4 | **ENOB** | 11d? | 2008-03-13 | 2008-03-28 |  | 198.54d |  |  | 52h | P4 |
| 962 | 1.5.4.14.4.1 | Review meas catalog & update | 0.77d? | 2008-03-13 | 2008-03-14 | 960 | 198.54d | 0d | ShashiP [65%] | 4h |  |
| 963 | 1.5.4.14.4.2 | Review managed & Native interface definitions | 0.77d? | 2008-03-14 | 2008-03-17 | 962 | 198.54d | 0d | ShashiP [65%] | 4h |  |
| 964 | 1.5.4.14.4.3 | Write code | 1.54d? | 2008-03-17 | 2008-03-18 | 963 | 198.54d | 0d | ShashiP [65%] | 8h |  |
| 965 | 1.5.4.14.4.4 | Unit test the code | 1.54d? | 2008-03-18 | 2008-03-20 | 964 | 198.54d | 0d | ShashiP [65%] | 8h |  |
| 966 | 1.5.4.14.4.5 | **Verifcation** | 4.08d? | 2008-03-20 | 2008-03-26 |  | 198.54d |  |  | 16h |  |
| 967 | 1.5.4.14.4.5.1 | Develop the verification code in Matlab | 1.54d? | 2008-03-20 | 2008-03-24 | 965 | 198.54d | 0d | ShashiP [65%] | 8h |  |
| 968 | 1.5.4.14.4.5.2 | Define the test input data & pass to ML & MATLAB | 0.77d? | 2008-03-24 | 2008-03-25 | 967 | 198.54d | 0d | ShashiP [65%] | 4h |  |
| 969 | 1.5.4.14.4.5.3 | Compare the outputs | 0.77d? | 2008-03-25 | 2008-03-26 | 968 | 198.54d | 0d | ShashiP [65%] | 4h |  |
| 970 | 1.5.4.14.4.6 | Measure performance & document mesaurements | 0.77d? | 2008-03-26 | 2008-03-27 | 969 | 198.54d | 0d | ShashiP [65%] | 4h |  |
| 971 | 1.5.4.14.4.7 | Interface definition, code, Nunit , Result & Doc review | 1.54d? | 2008-03-27 | 2008-03-28 | 970 | 198.54d | 0d | ShashiP [65%] | 8h |  |
| 972 | 1.5.4.14.5 | **SNR** | 9.23d? | 2008-03-28 | 2008-04-10 |  | 198.54d |  |  | 48h | P4 |
| 973 | 1.5.4.14.5.1 | Review meas catalog & update | 0.77d? | 2008-03-28 | 2008-03-31 | 971 | 198.54d | 0d | ShashiP [65%] | 4h |  |
| 974 | 1.5.4.14.5.2 | Review managed & Native interface definitions | 0.77d? | 2008-03-31 | 2008-04-01 | 973 | 198.54d | 0d | ShashiP [65%] | 4h |  |
| 975 | 1.5.4.14.5.3 | Write code | 1.54d? | 2008-04-01 | 2008-04-02 | 974 | 198.54d | 0d | ShashiP [65%] | 8h |  |
| 976 | 1.5.4.14.5.4 | Unit test the code | 1.54d? | 2008-04-02 | 2008-04-04 | 975 | 198.54d | 0d | ShashiP [65%] | 8h |  |
| 977 | 1.5.4.14.5.5 | **Verifcation** | 3.08d? | 2008-04-04 | 2008-04-09 |  | 198.54d |  |  | 16h |  |
| 978 | 1.5.4.14.5.5.1 | Develop the verification code in Matlab | 1.54d? | 2008-04-04 | 2008-04-07 | 976 | 198.54d | 0d | ShashiP [65%] | 8h |  |
| 979 | 1.5.4.14.5.5.2 | Define the test input data & pass to ML & MATLAB | 0.77d? | 2008-04-07 | 2008-04-08 | 978 | 198.54d | 0d | ShashiP [65%] | 4h |  |
| 980 | 1.5.4.14.5.5.3 | Compare the outputs | 0.77d? | 2008-04-08 | 2008-04-09 | 979 | 198.54d | 0d | ShashiP [65%] | 4h |  |
| 981 | 1.5.4.14.5.6 | Measure performance & document mesaurements | 0.77d? | 2008-04-09 | 2008-04-10 | 980 | 198.54d | 0d | ShashiP [65%] | 4h |  |
| 982 | 1.5.4.14.5.7 | Interface definition, code, Nunit , Result & Doc review | 0.77d? | 2008-04-10 | 2008-04-10 | 981 | 198.54d | 0d | ShashiP [65%] | 4h |  |

| ID | WBS | Task | Duration | Start | Finish | Predecessors | Complete | Remaining | Total slack | Free slack | Resources | Work | Actual work | Text1 |
| --- | --- | --- | --- | --- | --- | --- | --- | --- | --- | --- | --- | --- | --- | --- |
| 983 | 1.5.4.14.6 | **SFDR** | 12.77d? | 2008-04-10 | 2008-04-29 |  |  |  | 196.54d |  |  | 56h |  | P4 |
| 984 | 1.5.4.14.6.1 | Review meas catalog & update | 0.77d? | 2008-04-10 | 2008-04-11 | 982 |  |  | 198.54d | 0d | ShashiP [65%] | 4h |  |  |
| 985 | 1.5.4.14.6.2 | Review managed & Native interface definitions | 0.77d? | 2008-04-11 | 2008-04-15 | 984 |  |  | 197.54d | 0d | ShashiP [65%] | 4h |  |  |
| 986 | 1.5.4.14.6.3 | Write code | 3.08d? | 2008-04-15 | 2008-04-21 | 985 |  |  | 196.54d | 0d | ShashiP [65%] | 16h |  |  |
| 987 | 1.5.4.14.6.4 | Unit test the code | 1.54d? | 2008-04-21 | 2008-04-23 | 986 |  |  | 196.54d | 0d | ShashiP [65%] | 8h |  |  |
| 988 | 1.5.4.14.6.5 | **Verifcation** | 3.08d? | 2008-04-23 | 2008-04-28 |  |  |  | 196.54d |  |  | 16h |  |  |
| 989 | 1.5.4.14.6.5.1 | Develop the verification code in Matlab | 1.54d? | 2008-04-23 | 2008-04-24 | 987 |  |  | 196.54d | 0d | ShashiP [65%] | 8h |  |  |
| 990 | 1.5.4.14.6.5.2 | Define the test input data & pass to ML & MATLAB | 0.77d? | 2008-04-24 | 2008-04-25 | 989 |  |  | 196.54d | 0d | ShashiP [65%] | 4h |  |  |
| 991 | 1.5.4.14.6.5.3 | Compare the outputs | 0.77d? | 2008-04-25 | 2008-04-28 | 990 |  |  | 196.54d | 0d | ShashiP [65%] | 4h |  |  |
| 992 | 1.5.4.14.6.6 | Measure performance & document mesaurements | 0.77d? | 2008-04-28 | 2008-04-28 | 991 |  |  | 196.54d | 0d | ShashiP [65%] | 4h |  |  |
| 993 | 1.5.4.14.6.7 | Interface definition, code, Nunit , Result & Doc review | 0.77d? | 2008-04-28 | 2008-04-29 | 992 |  |  | 196.54d | 0d | ShashiP [65%] | 4h |  |  |
| 994 | 1.5.4.15 | **Averaging** | 17.92d? | 2008-02-04 | 2008-02-27 |  |  |  | 44.08d |  |  | 88h |  | P3 |
| 995 | 1.5.4.15.1 | Review meas catalog & update | 1.54d? | 2008-02-04 | 2008-02-05 |  |  |  | 44.08d | 0d | ShashiP [65%] | 8h |  |  |
| 996 | 1.5.4.15.2 | Review managed & Native interface definitions | 0.77d? | 2008-02-05 | 2008-02-06 | 995 |  |  | 44.08d | 0d | ShashiP [65%] | 4h |  |  |
| 997 | 1.5.4.15.3 | Write code | 4.62d? | 2008-02-06 | 2008-02-13 | 996 |  |  | 44.08d | 0d | ShashiP [65%] | 24h |  |  |
| 998 | 1.5.4.15.4 | Unit test the code | 1.54d? | 2008-02-13 | 2008-02-15 | 997 |  |  | 44.08d | 0d | ShashiP [65%] | 8h |  |  |
| 999 | 1.5.4.15.5 | **Verifcation** | 6.15d? | 2008-02-15 | 2008-02-25 |  |  |  | 44.08d |  |  | 32h |  |  |
| 1000 | 1.5.4.15.5.1 | Develop the verification code in Matlab | 4.62d? | 2008-02-15 | 2008-02-22 | 998 |  |  | 44.08d | 0d | ShashiP [65%] | 24h |  |  |
| 1001 | 1.5.4.15.5.2 | Define the test input data & pass to ML & MATLAB | 0.77d? | 2008-02-22 | 2008-02-22 | 1000 |  |  | 45.08d | 0d | ShashiP [65%] | 4h |  |  |
| 1002 | 1.5.4.15.5.3 | Compare the outputs | 0.77d? | 2008-02-22 | 2008-02-25 | 1001 |  |  | 45.08d | 0d | ShashiP [65%] | 4h |  |  |
| 1003 | 1.5.4.15.6 | Measure performance & document mesaurements | 0.77d? | 2008-02-25 | 2008-02-26 | 1002 |  |  | 45.08d | 0d | ShashiP [65%] | 4h |  |  |
| 1004 | 1.5.4.15.7 | Interface definition, code, Nunit , Result & Doc review | 1.54d? | 2008-02-26 | 2008-02-27 | 1003 |  |  | 45.08d | 0d | ShashiP [65%] | 8h |  |  |
| 1005 | 1.5.4.16 | **Signal Generation** | 46.61d? | 2008-02-04 A | 2008-04-08 |  | 8% | 42.84d? | 301.54d |  |  | 272h | 22h |  |
| 1006 | 1.5.4.16.1 | **Sine** | 8.69d? | 2008-02-04 A | 2008-02-14 |  | 45% | 4.78d? | 339.47d |  |  | 40h | 18h | P2 |
| 1007 | 1.5.4.16.1.1 | Review meas catalog & update | 0.77d? | 2008-02-04 A | 2008-02-04 A |  | 100% |  |  |  | Ramkumar [65%] | 4h | 4h |  |
| 1008 | 1.5.4.16.1.2 | Review managed & Native interface definitions | 0.77d? | 2008-02-04 A | 2008-02-05 A | 1007 | 100% |  |  |  | Ramkumar [65%] | 4h | 4h |  |
| 1009 | 1.5.4.16.1.3 | Write code | 0.77d? | 2008-02-05 A | 2008-02-06 A | 1008 | 100% |  |  |  | Ramkumar [65%] | 4h | 4h |  |
| 1010 | 1.5.4.16.1.4 | Unit test the code | 0.77d? | 2008-02-06 A | 2008-02-07 A | 1009 | 100% |  |  |  | Ramkumar [65%] | 4h | 4h |  |

| ID | WBS | Task | Duration | Start | Finish | Predecessors | Complete | Remaining | Total slack | Free slack | Resources | Work | Actual work | Text1 |
| --- | --- | --- | --- | --- | --- | --- | --- | --- | --- | --- | --- | --- | --- | --- |
| 1011 | 1.5.4.16.1.5 | **Verifcation** | 4.08d? | 2008-02-07 | 2008-02-13 |  |  |  | 339.85d |  |  | 16h |  |  |
| 1012 | 1.5.4.16.1.5.1 | Develop the verification code in Matlab | 1.54d? | 2008-02-07 | 2008-02-08 | 1010 |  |  | 340.85d | 0d | Ramkumar [65%] | 8h |  |  |
| 1013 | 1.5.4.16.1.5.2 | Define the test input data & pass to ML & MATLAB | 0.77d? | 2008-02-08 | 2008-02-12 | 1012 |  |  | 339.85d | 0d | Ramkumar [65%] | 4h |  |  |
| 1014 | 1.5.4.16.1.5.3 | Compare the outputs | 0.77d? | 2008-02-12 | 2008-02-13 | 1013 |  |  | 339.85d | 0d | Ramkumar [65%] | 4h |  |  |
| 1015 | 1.5.4.16.1.6 | Measure performance & document mesaurements | 0.77d? | 2008-02-13 | 2008-02-13 | 1014 |  |  | 339.85d | 0d | Ramkumar [65%] | 4h |  |  |
| 1016 | 1.5.4.16.1.7 | Interface definition, code, Nunit , Result & Doc review | 0.77d? | 2008-02-13 A | 2008-02-14 | 1015 | 50% | 0.38d? | 339.47d |  | Ramkumar [65%] | 4h | 2h |  |
| 1017 | 1.5.4.16.2 | **Noise** | 46.61d? | 2008-02-04 A | 2008-04-08 |  | 2% | 45.81d? | 57.62d |  |  | 232h | 4h | P2-P4 |
| 1018 | 1.5.4.16.2.1 | **Random** | 10.23d? | 2008-02-04 A | 2008-02-18 |  | 8% | 9.38d? | 58.62d |  |  | 48h | 4h | P2 |
| 1019 | 1.5.4.16.2.1.1 | Review meas catalog & update | 0.77d? | 2008-02-04 A | 2008-02-04 A |  | 100% |  |  |  | Ramkumar [65%] | 4h | 4h |  |
| 1020 | 1.5.4.16.2.1.2 | Review managed & Native interface definitions | 0.77d? | 2008-02-04 | 2008-02-05 | 1019 |  |  | 58.62d | 0d | Ramkumar [65%] | 4h |  |  |
| 1021 | 1.5.4.16.2.1.3 | Write code | 0.77d? | 2008-02-05 | 2008-02-06 | 1020 |  |  | 58.62d | 0d | Ramkumar [65%] | 4h |  |  |
| 1022 | 1.5.4.16.2.1.4 | Unit test the code | 0.77d? | 2008-02-06 | 2008-02-07 | 1021 |  |  | 58.62d | 0d | Ramkumar [65%] | 4h |  |  |
| 1023 | 1.5.4.16.2.1.5 | **Verifcation** | 5.62d? | 2008-02-07 | 2008-02-14 |  |  |  | 58.62d |  |  | 24h |  |  |
| 1024 | 1.5.4.16.2.1.5.1 | Develop the verification code in Matlab | 3.08d? | 2008-02-07 | 2008-02-13 | 1022 |  |  | 58.62d | 0d | Ramkumar [65%] | 16h |  |  |
| 1025 | 1.5.4.16.2.1.5.2 | Define the test input data & pass to ML & MATLAB | 0.77d? | 2008-02-13 | 2008-02-13 | 1024 |  |  | 58.62d | 0d | Ramkumar [65%] | 4h |  |  |
| 1026 | 1.5.4.16.2.1.5.3 | Compare the outputs | 0.77d? | 2008-02-13 | 2008-02-14 | 1025 |  |  | 58.62d | 0d | Ramkumar [65%] | 4h |  |  |
| 1027 | 1.5.4.16.2.1.6 | Measure performance & document mesaurements | 0.77d? | 2008-02-14 | 2008-02-15 | 1026 |  |  | 58.62d | 0d | Ramkumar [65%] | 4h |  |  |
| 1028 | 1.5.4.16.2.1.7 | Interface definition, code, Nunit , Result & Doc review | 0.77d? | 2008-02-15 | 2008-02-18 | 1027 |  |  | 58.62d | 0d | Ramkumar [65%] | 4h |  |  |
| 1029 | 1.5.4.16.2.2 | **Pink** | 13.08d? | 2008-02-18 | 2008-03-06 |  |  |  | 58.62d |  |  | 68h |  | P4 |
| 1030 | 1.5.4.16.2.2.1 | Review meas catalog & update | 0.77d? | 2008-02-18 | 2008-02-18 | 1028 |  |  | 58.62d | 0d | Ramkumar [65%] | 4h |  |  |
| 1031 | 1.5.4.16.2.2.2 | Review managed & Native interface definitions | 0.77d? | 2008-02-18 | 2008-02-19 | 1030 |  |  | 58.62d | 0d | Ramkumar [65%] | 4h |  |  |
| 1032 | 1.5.4.16.2.2.3 | Write code | 3.08d? | 2008-02-19 | 2008-02-22 | 1031 |  |  | 58.62d | 0d | Ramkumar [65%] | 16h |  |  |
| 1033 | 1.5.4.16.2.2.4 | Unit test the code | 1.54d? | 2008-02-22 | 2008-02-26 | 1032 |  |  | 58.62d | 0d | Ramkumar [65%] | 8h |  |  |
| 1034 | 1.5.4.16.2.2.5 | **Verifcation** | 4.62d? | 2008-02-26 | 2008-03-03 |  |  |  | 58.62d |  |  | 24h |  |  |
| 1035 | 1.5.4.16.2.2.5.1 | Develop the verification code in Matlab | 3.08d? | 2008-02-26 | 2008-02-29 | 1033 |  |  | 58.62d | 0d | Ramkumar [65%] | 16h |  |  |
| 1036 | 1.5.4.16.2.2.5.2 | Define the test input data & pass to ML & MATLAB | 0.77d? | 2008-02-29 | 2008-03-03 | 1035 |  |  | 58.62d | 0d | Ramkumar [65%] | 4h |  |  |
| 1037 | 1.5.4.16.2.2.5.3 | Compare the outputs | 0.77d? | 2008-03-03 | 2008-03-03 | 1036 |  |  | 58.62d | 0d | Ramkumar [65%] | 4h |  |  |
| 1038 | 1.5.4.16.2.2.6 | Measure performance & document mesaurements | 0.77d? | 2008-03-03 | 2008-03-04 | 1037 |  |  | 58.62d | 0d | Ramkumar [65%] | 4h |  |  |
| 1039 | 1.5.4.16.2.2.7 | Interface definition, code, Nunit , Result & Doc review | 1.54d? | 2008-03-04 | 2008-03-06 | 1038 |  |  | 58.62d | 0d | Ramkumar [65%] | 8h |  |  |

| ID | WBS | Task | Duration | Start | Finish | Predecessors | Total slack | Free slack | Resources | Work | Text1 |
| --- | --- | --- | --- | --- | --- | --- | --- | --- | --- | --- | --- |
| 1040 | 1.5.4.16.2.3 | **White** | 11.77d? | 2008-03-06 | 2008-03-24 |  | 57.62d |  |  | 56h | P4 |
| 1041 | 1.5.4.16.2.3.1 | Review meas catalog & update | 0.77d? | 2008-03-06 | 2008-03-07 | 1039 | 58.62d | 0d | Ramkumar [65%] | 4h |  |
| 1042 | 1.5.4.16.2.3.2 | Review managed & Native interface definitions | 0.77d? | 2008-03-07 | 2008-03-07 | 1041 | 58.62d | 0d | Ramkumar [65%] | 4h |  |
| 1043 | 1.5.4.16.2.3.3 | Write code | 1.54d? | 2008-03-07 | 2008-03-11 | 1042 | 58.62d | 0d | Ramkumar [65%] | 8h |  |
| 1044 | 1.5.4.16.2.3.4 | Unit test the code | 1.54d? | 2008-03-11 | 2008-03-12 | 1043 | 58.62d | 0d | Ramkumar [65%] | 8h |  |
| 1045 | 1.5.4.16.2.3.5 | **Verifcation** | 4.62d? | 2008-03-12 | 2008-03-19 |  | 58.62d |  |  | 24h |  |
| 1046 | 1.5.4.16.2.3.5.1 | Develop the verification code in Matlab | 3.08d? | 2008-03-12 | 2008-03-17 | 1044 | 58.62d | 0d | Ramkumar [65%] | 16h |  |
| 1047 | 1.5.4.16.2.3.5.2 | Define the test input data & pass to ML & MATLAB | 0.77d? | 2008-03-17 | 2008-03-18 | 1046 | 58.62d | 0d | Ramkumar [65%] | 4h |  |
| 1048 | 1.5.4.16.2.3.5.3 | Compare the outputs | 0.77d? | 2008-03-18 | 2008-03-19 | 1047 | 58.62d | 0d | Ramkumar [65%] | 4h |  |
| 1049 | 1.5.4.16.2.3.6 | Measure performance & document mesaurements | 0.77d? | 2008-03-19 | 2008-03-20 | 1048 | 58.62d | 0d | Ramkumar [65%] | 4h |  |
| 1050 | 1.5.4.16.2.3.7 | Interface definition, code, Nunit , Result & Doc review | 0.77d? | 2008-03-20 | 2008-03-24 | 1049 | 57.62d | 0d | Ramkumar [65%] | 4h |  |
| 1051 | 1.5.4.16.2.4 | **Gaussian** | 11.54d? | 2008-03-24 | 2008-04-08 |  | 57.62d |  |  | 60h | P4 |
| 1052 | 1.5.4.16.2.4.1 | Review meas catalog & update | 0.77d? | 2008-03-24 | 2008-03-24 | 1050 | 57.62d | 0d | Ramkumar [65%] | 4h |  |
| 1053 | 1.5.4.16.2.4.2 | Review managed & Native interface definitions | 0.77d? | 2008-03-24 | 2008-03-25 | 1052 | 57.62d | 0d | Ramkumar [65%] | 4h |  |
| 1054 | 1.5.4.16.2.4.3 | Write code | 3.08d? | 2008-03-25 | 2008-03-28 | 1053 | 57.62d | 0d | Ramkumar [65%] | 16h |  |
| 1055 | 1.5.4.16.2.4.4 | Unit test the code | 0.77d? | 2008-03-28 | 2008-03-31 | 1054 | 57.62d | 0d | Ramkumar [65%] | 4h |  |
| 1056 | 1.5.4.16.2.4.5 | **Verifcation** | 4.62d? | 2008-03-31 | 2008-04-07 |  | 57.62d |  |  | 24h |  |
| 1057 | 1.5.4.16.2.4.5.1 | Develop the verification code in Matlab | 3.08d? | 2008-03-31 | 2008-04-03 | 1055 | 57.62d | 0d | Ramkumar [65%] | 16h |  |
| 1058 | 1.5.4.16.2.4.5.2 | Define the test input data & pass to ML & MATLAB | 0.77d? | 2008-04-03 | 2008-04-04 | 1057 | 57.62d | 0d | Ramkumar [65%] | 4h |  |
| 1059 | 1.5.4.16.2.4.5.3 | Compare the outputs | 0.77d? | 2008-04-04 | 2008-04-07 | 1058 | 57.62d | 0d | Ramkumar [65%] | 4h |  |
| 1060 | 1.5.4.16.2.4.6 | Measure performance & document mesaurements | 0.77d? | 2008-04-07 | 2008-04-07 | 1059 | 57.62d | 0d | Ramkumar [65%] | 4h |  |
| 1061 | 1.5.4.16.2.4.7 | Interface definition, code, Nunit , Result & Doc review | 0.77d? | 2008-04-07 | 2008-04-08 | 1060 | 57.62d | 0d | Ramkumar [65%] | 4h |  |
| 1062 | 1.5.4.17 | **Marker Functions** | 13.31d? | 2008-08-28 | 2008-09-16 |  | 57.62d |  |  | 64h | P5 |
| 1063 | 1.5.4.17.1 | Review meas catalog & update | 0.77d? | 2008-08-28 | 2008-08-29 | 1223 | 58.62d | 0d | Ramkumar [65%] | 4h |  |
| 1064 | 1.5.4.17.2 | Review managed & Native interface definitions | 0.77d? | 2008-08-29 | 2008-08-29 | 1063 | 58.62d | 0d | Ramkumar [65%] | 4h |  |
| 1065 | 1.5.4.17.3 | Write code | 3.08d? | 2008-08-29 | 2008-09-04 | 1064 | 57.62d | 0d | Ramkumar [65%] | 16h |  |
| 1066 | 1.5.4.17.4 | Unit test the code | 3.08d? | 2008-09-04 | 2008-09-09 | 1065 | 57.62d | 0d | Ramkumar [65%] | 16h |  |

| ID | WBS | Task | Duration | Start | Finish | Predecessors | Total slack | Free slack | Resources | Work | Text1 |
| --- | --- | --- | --- | --- | --- | --- | --- | --- | --- | --- | --- |
| 1067 | 1.5.4.17.5 | **Verifcation** | 3.08d? | 2008-09-09 | 2008-09-15 |  | 57.62d |  |  | 16h |  |
| 1068 | 1.5.4.17.5.1 | Develop the verification code in Matlab | 1.54d? | 2008-09-09 | 2008-09-11 | 1066 | 57.62d | 0d | Ramkumar [65%] | 8h |  |
| 1069 | 1.5.4.17.5.2 | Define the test input data & pass to ML & MATLAB | 0.77d? | 2008-09-11 | 2008-09-12 | 1068 | 57.62d | 0d | Ramkumar [65%] | 4h |  |
| 1070 | 1.5.4.17.5.3 | Compare the outputs | 0.77d? | 2008-09-12 | 2008-09-15 | 1069 | 57.62d | 0d | Ramkumar [65%] | 4h |  |
| 1071 | 1.5.4.17.6 | Measure performance & document mesaurements | 0.77d? | 2008-09-15 | 2008-09-15 | 1070 | 57.62d | 0d | Ramkumar [65%] | 4h |  |
| 1072 | 1.5.4.17.7 | Interface definition, code, Nunit , Result & Doc review | 0.77d? | 2008-09-15 | 2008-09-16 | 1071 | 57.62d | 0d | Ramkumar [65%] | 4h |  |
| 1073 | 1.5.4.18 | **Octave** | 70.15d? | 2008-09-16 | 2008-12-23 |  | 55.62d |  |  | 344h | P7 |
| 1074 | 1.5.4.18.1 | Research & Investigation | 7.69d? | 2008-09-16 | 2008-09-26 | 1072 | 57.62d | 0d | Ramkumar [65%] | 40h | P1 |
| 1075 | 1.5.4.18.2 | Review meas catalog & update | 1.54d? | 2008-09-26 | 2008-09-29 | 1074 | 58.62d | 0d | Ramkumar [65%] | 8h |  |
| 1076 | 1.5.4.18.3 | Review managed & Native interface definitions | 1.54d? | 2008-09-29 | 2008-10-01 | 1075 | 58.62d | 0d | Ramkumar [65%] | 8h |  |
| 1077 | 1.5.4.18.4 | Overall interface structure for Octave | 3.85d? | 2008-10-01 | 2008-10-08 | 1076 | 58.62d | 0d | Ramkumar [65%] | 20h |  |
| 1078 | 1.5.4.18.5 | Octave band filter Design | 9.23d? | 2008-10-08 | 2008-10-22 | 1077 | 57.62d | 0d | Ramkumar [65%] | 48h |  |
| 1079 | 1.5.4.18.6 | Filtering Operation | 12.31d? | 2008-10-22 | 2008-11-10 | 1078 | 56.62d | 0d | Ramkumar [65%] | 64h |  |
| 1080 | 1.5.4.18.7 | Averaging Operation and Octave band power estimation | 7.69d? | 2008-11-10 | 2008-11-20 | 1079 | 56.62d | 0d | Ramkumar [65%] | 40h |  |
| 1081 | 1.5.4.18.8 | Weighting Filter Operation | 3.08d? | 2008-11-20 | 2008-11-25 | 1080 | 56.62d | 0d | Ramkumar [65%] | 16h |  |
| 1082 | 1.5.4.18.9 | Write code | 7.69d? | 2008-11-25 | 2008-12-05 | 1081 | 56.62d | 0d | Ramkumar [65%] | 40h |  |
| 1083 | 1.5.4.18.10 | Unit test the code | 3.85d? | 2008-12-05 | 2008-12-12 | 1082 | 55.62d | 0d | Ramkumar [65%] | 20h |  |
| 1084 | 1.5.4.18.11 | **Verifcation** | 4.62d? | 2008-12-12 | 2008-12-18 |  | 55.62d |  |  | 24h |  |
| 1085 | 1.5.4.18.11.1 | Develop the verification code in Matlab | 1.54d? | 2008-12-12 | 2008-12-15 | 1083 | 55.62d | 0d | Ramkumar [65%] | 8h |  |
| 1086 | 1.5.4.18.11.2 | Define the test input data & pass to ML & MATLAB | 1.54d? | 2008-12-15 | 2008-12-17 | 1085 | 55.62d | 0d | Ramkumar [65%] | 8h |  |
| 1087 | 1.5.4.18.11.3 | Compare the outputs | 1.54d? | 2008-12-17 | 2008-12-18 | 1086 | 55.62d | 0d | Ramkumar [65%] | 8h |  |
| 1088 | 1.5.4.18.12 | Measure performance & document mesaurements | 1.54d? | 2008-12-18 | 2008-12-22 | 1087 | 55.62d | 0d | Ramkumar [65%] | 8h |  |
| 1089 | 1.5.4.18.13 | Interface definition, code, Nunit , Result & Doc review | 1.54d? | 2008-12-22 | 2008-12-23 | 1088 | 55.62d | 0d | Ramkumar [65%] | 8h |  |
| 1090 | 1.5.4.19 | **Orbit** | 15.62d? | 2008-12-23 | 2009-01-14 |  | 54.62d |  |  | 76h | P4 |
| 1091 | 1.5.4.19.1 | Review meas catalog & update | 0.77d? | 2008-12-23 | 2008-12-24 | 1089 | 55.62d | 0d | Ramkumar [65%] | 4h |  |
| 1092 | 1.5.4.19.2 | Review managed & Native interface definitions | 0.77d? | 2008-12-24 | 2008-12-26 | 1091 | 54.62d | 0d | Ramkumar [65%] | 4h |  |
| 1093 | 1.5.4.19.3 | Write code | 5.38d? | 2008-12-26 | 2009-01-02 | 1092 | 54.62d | 0d | Ramkumar [65%] | 28h |  |
| 1094 | 1.5.4.19.4 | Unit test the code | 2.31d? | 2009-01-02 | 2009-01-06 | 1093 | 54.62d | 0d | Ramkumar [65%] | 12h |  |

| ID | WBS | Task | Duration | Start | Finish | Predecessors | Total slack | Free slack | Constraint | Resources | Work | Text1 |
| --- | --- | --- | --- | --- | --- | --- | --- | --- | --- | --- | --- | --- |
| 1095 | 1.5.4.19.5 | **Verifcation** | 2.31d? | 2009-01-06 | 2009-01-09 |  | 54.62d |  |  |  | 12h |  |
| 1096 | 1.5.4.19.5.1 | Develop the verification code in Matlab | 0.77d? | 2009-01-06 | 2009-01-07 | 1094 | 54.62d | 0d |  | Ramkumar [65%] | 4h |  |
| 1097 | 1.5.4.19.5.2 | Define the test input data & pass to ML & MATLAB | 0.77d? | 2009-01-07 | 2009-01-08 | 1096 | 54.62d | 0d |  | Ramkumar [65%] | 4h |  |
| 1098 | 1.5.4.19.5.3 | Compare the outputs | 0.77d? | 2009-01-08 | 2009-01-09 | 1097 | 54.62d | 0d |  | Ramkumar [65%] | 4h |  |
| 1099 | 1.5.4.19.6 | Measure performance & document mesaurements | 1.54d? | 2009-01-09 | 2009-01-12 | 1098 | 54.62d | 0d |  | Ramkumar [65%] | 8h |  |
| 1100 | 1.5.4.19.7 | Interface definition, code, Nunit , Result & Doc review | 1.54d? | 2009-01-12 | 2009-01-14 | 1099 | 54.62d | 0d |  | Ramkumar [65%] | 8h |  |
| 1101 | 1.5.4.20 | **Filters** | 92.92d? | 2008-04-29 | 2008-09-05 |  | 193.54d |  |  |  | 467.6h | P6 |
| 1102 | 1.5.4.20.1 | **Weighting filters for octave analysis A- weighting filter + B-weigghting filter +C- weighting filter** | 17.92d? | 2008-04-29 | 2008-05-23 |  | 195.54d |  |  |  | 88h |  |
| 1103 | 1.5.4.20.1.1 | Review meas catalog & update | 0.77d? | 2008-04-29 | 2008-04-30 | 993 | 196.54d | 0d | start no earlier than 2008-02-04 | ShashiP [65%] | 4h |  |
| 1104 | 1.5.4.20.1.2 | Review managed & Native interface definitions | 1.54d? | 2008-04-30 | 2008-05-02 | 1103 | 195.54d | 0d |  | ShashiP [65%] | 8h |  |
| 1105 | 1.5.4.20.1.3 | Write code | 6.92d? | 2008-05-02 | 2008-05-13 | 1104 | 195.54d | 0d |  | ShashiP [65%] | 36h |  |
| 1106 | 1.5.4.20.1.4 | Unit test the code | 1.54d? | 2008-05-13 | 2008-05-15 | 1105 | 195.54d | 0d |  | ShashiP [65%] | 8h |  |
| 1107 | 1.5.4.20.1.5 | **Verifcation** | 3.85d? | 2008-05-15 | 2008-05-21 |  | 195.54d |  |  |  | 20h |  |
| 1108 | 1.5.4.20.1.5.1 | Develop the verification code in Matlab | 1.54d? | 2008-05-15 | 2008-05-16 | 1106 | 195.54d | 0d |  | ShashiP [65%] | 8h |  |
| 1109 | 1.5.4.20.1.5.2 | Define the test input data & pass to ML & MATLAB | 1.54d? | 2008-05-16 | 2008-05-20 | 1108 | 195.54d | 0d |  | ShashiP [65%] | 8h |  |
| 1110 | 1.5.4.20.1.5.3 | Compare the outputs | 0.77d? | 2008-05-20 | 2008-05-21 | 1109 | 195.54d | 0d |  | ShashiP [65%] | 4h |  |
| 1111 | 1.5.4.20.1.6 | Measure performance & document mesaurements | 0.77d? | 2008-05-21 | 2008-05-22 | 1110 | 195.54d | 0d |  | ShashiP [65%] | 4h |  |
| 1112 | 1.5.4.20.1.7 | Interface definition, code, Nunit , Result & Doc review | 1.54d? | 2008-05-22 | 2008-05-23 | 1111 | 195.54d | 0d |  | ShashiP [65%] | 8h |  |
| 1113 | 1.5.4.20.2 | **General Weighting filters (A+B+C-weighting filter)** | 17.92d? | 2008-05-23 | 2008-06-18 |  | 195.54d |  |  |  | 93.2h |  |
| 1114 | 1.5.4.20.2.1 | Review meas catalog & update | 1.54d? | 2008-05-23 | 2008-05-27 | 1112 | 195.54d | 0d |  | ShashiP [65%] | 8h |  |
| 1115 | 1.5.4.20.2.2 | Review managed & Native interface definitions | 1.54d? | 2008-05-27 | 2008-05-28 | 1114 | 195.54d | 0d |  | ShashiP [65%] | 8h |  |
| 1116 | 1.5.4.20.2.3 | Write code | 7.69d? | 2008-05-28 | 2008-06-09 | 1115 | 195.54d | 0d |  | ShashiP [65%] | 40h |  |
| 1117 | 1.5.4.20.2.4 | Unit test the code | 1.54d? | 2008-06-09 | 2008-06-10 | 1116 | 195.54d | 0d |  | ShashiP [65%] | 8h |  |
| 1118 | 1.5.4.20.2.5 | **Verifcation** | 3.08d? | 2008-06-10 | 2008-06-13 |  | 195.54d |  |  |  | 16h |  |
| 1119 | 1.5.4.20.2.5.1 | Develop the verification code in Matlab | 1.54d? | 2008-06-10 | 2008-06-12 | 1117 | 195.54d | 0d |  | ShashiP [65%] | 8h |  |
| 1120 | 1.5.4.20.2.5.2 | Define the test input data & pass to ML & MATLAB | 0.77d? | 2008-06-12 | 2008-06-13 | 1119 | 195.54d | 0d |  | ShashiP [65%] | 4h |  |
| 1121 | 1.5.4.20.2.5.3 | Compare the outputs | 0.77d? | 2008-06-13 | 2008-06-13 | 1120 | 195.54d | 0d |  | ShashiP [65%] | 4h |  |
| 1122 | 1.5.4.20.2.6 | Measure performance & document mesaurements | 1.54d? | 2008-06-13 | 2008-06-17 | 1121 | 195.54d | 0d |  | ShashiP [65%] | 8h |  |
| 1123 | 1.5.4.20.2.7 | Interface definition, code, Nunit , Result & Doc review | 1d | 2008-06-17 | 2008-06-18 | 1122 | 195.54d | 0d |  | ShashiP [65%] | 5.2h |  |

| ID | WBS | Task | Duration | Start | Finish | Predecessors | Total slack | Free slack | Resources | Work |
| --- | --- | --- | --- | --- | --- | --- | --- | --- | --- | --- |
| 1124 | 1.5.4.20.3 | **CCIR filters** | 22.77d? | 2008-06-18 | 2008-07-21 |  | 195.54d |  |  | 118.4h |
| 1125 | 1.5.4.20.3.1 | Review meas catalog & update | 1.54d? | 2008-06-18 | 2008-06-20 | 1123 | 195.54d | 0d | ShashiP [65%] | 8h |
| 1126 | 1.5.4.20.3.2 | Review managed & Native interface definitions | 1.54d? | 2008-06-20 | 2008-06-23 | 1125 | 195.54d | 0d | ShashiP [65%] | 8h |
| 1127 | 1.5.4.20.3.3 | Write code | 9.23d? | 2008-06-23 | 2008-07-04 | 1126 | 195.54d | 0d | ShashiP [65%] | 48h |
| 1128 | 1.5.4.20.3.4 | Unit test the code | 3.08d? | 2008-07-04 | 2008-07-09 | 1127 | 195.54d | 0d | ShashiP [65%] | 16h |
| 1129 | 1.5.4.20.3.5 | **Verifcation** | 4.62d? | 2008-07-09 | 2008-07-16 |  | 195.54d |  |  | 24h |
| 1130 | 1.5.4.20.3.5.1 | Develop the verification code in Matlab | 3.08d? | 2008-07-09 | 2008-07-14 | 1128 | 195.54d | 0d | ShashiP [65%] | 16h |
| 1131 | 1.5.4.20.3.5.2 | Define the test input data & pass to ML & MATLAB | 0.77d? | 2008-07-15 | 2008-07-15 | 1130 | 195.54d | 0d | ShashiP [65%] | 4h |
| 1132 | 1.5.4.20.3.5.3 | Compare the outputs | 0.77d? | 2008-07-15 | 2008-07-16 | 1131 | 195.54d | 0d | ShashiP [65%] | 4h |
| 1133 | 1.5.4.20.3.6 | Measure performance & document mesaurements | 0.77d? | 2008-07-16 | 2008-07-17 | 1132 | 195.54d | 0d | ShashiP [65%] | 4h |
| 1134 | 1.5.4.20.3.7 | Interface definition, code, Nunit , Result & Doc review | 2d? | 2008-07-17 | 2008-07-21 | 1133 | 195.54d | 0d | ShashiP [65%] | 10.4h |
| 1135 | 1.5.4.20.4 | **Low Pass, high pass, band pass, notch** | 18.46d? | 2008-07-21 | 2008-08-14 |  | 195.54d |  |  | 96h |
| 1136 | 1.5.4.20.4.1 | Review meas catalog & update | 1.54d? | 2008-07-21 | 2008-07-22 | 1134 | 195.54d | 0d | ShashiP [65%] | 8h |
| 1137 | 1.5.4.20.4.2 | Review managed & Native interface definitions | 1.54d? | 2008-07-22 | 2008-07-24 | 1136 | 195.54d | 0d | ShashiP [65%] | 8h |
| 1138 | 1.5.4.20.4.3 | Write code | 7.69d? | 2008-07-24 | 2008-08-05 | 1137 | 195.54d | 0d | ShashiP [65%] | 40h |
| 1139 | 1.5.4.20.4.4 | Unit test the code | 1.54d? | 2008-08-05 | 2008-08-06 | 1138 | 195.54d | 0d | ShashiP [65%] | 8h |
| 1140 | 1.5.4.20.4.5 | **Verifcation** | 3.85d? | 2008-08-06 | 2008-08-12 |  | 195.54d |  |  | 20h |
| 1141 | 1.5.4.20.4.5.1 | Develop the verification code in Matlab | 2.31d? | 2008-08-06 | 2008-08-08 | 1139 | 195.54d | 0d | ShashiP [65%] | 12h |
| 1142 | 1.5.4.20.4.5.2 | Define the test input data & pass to ML & MATLAB | 0.77d? | 2008-08-08 | 2008-08-11 | 1141 | 195.54d | 0d | ShashiP [65%] | 4h |
| 1143 | 1.5.4.20.4.5.3 | Compare the outputs | 0.77d? | 2008-08-11 | 2008-08-12 | 1142 | 195.54d | 0d | ShashiP [65%] | 4h |
| 1144 | 1.5.4.20.4.6 | Measure performance & document mesaurements | 1.54d? | 2008-08-12 | 2008-08-13 | 1143 | 195.54d | 0d | ShashiP [65%] | 8h |
| 1145 | 1.5.4.20.4.7 | Interface definition, code, Nunit , Result & Doc review | 0.77d? | 2008-08-14 | 2008-08-14 | 1144 | 195.54d | 0d | ShashiP [65%] | 4h |
| 1146 | 1.5.4.20.5 | **Coherence** | 15.85d? | 2008-08-14 | 2008-09-05 |  | 193.54d |  |  | 72h |
| 1147 | 1.5.4.20.5.1 | Review meas catalog & update | 0.77d? | 2008-08-14 | 2008-08-18 | 1145 | 194.54d | 0d | ShashiP [65%] | 4h |
| 1148 | 1.5.4.20.5.2 | Review managed & Native interface definitions | 0.77d? | 2008-08-18 | 2008-08-19 | 1147 | 194.54d | 0d | ShashiP [65%] | 4h |
| 1149 | 1.5.4.20.5.3 | Write code | 4.62d? | 2008-08-19 | 2008-08-25 | 1148 | 194.54d | 0d | ShashiP [65%] | 24h |
| 1150 | 1.5.4.20.5.4 | Unit test the code | 1.54d? | 2008-08-25 | 2008-08-27 | 1149 | 194.54d | 0d | ShashiP [65%] | 8h |

| ID | WBS | Task | Duration | Start | Finish | Predecessors | Total slack | Free slack | Resources | Work | Text1 |
| --- | --- | --- | --- | --- | --- | --- | --- | --- | --- | --- | --- |
| 1151 | 1.5.4.20.5.5 | **Verifcation** | 3.08d? | 2008-08-27 | 2008-09-01 |  | 194.54d |  |  | 16h |  |
| 1152 | 1.5.4.20.5.5.1 | Develop the verification code in Matlab | 1.54d? | 2008-08-27 | 2008-08-28 | 1150 | 194.54d | 0d | ShashiP [65%] | 8h |  |
| 1153 | 1.5.4.20.5.5.2 | Define the test input data & pass to ML & MATLAB | 0.77d? | 2008-08-29 | 2008-08-29 | 1152 | 194.54d | 0d | ShashiP [65%] | 4h |  |
| 1154 | 1.5.4.20.5.5.3 | Compare the outputs | 0.77d? | 2008-08-29 | 2008-09-01 | 1153 | 194.54d | 0d | ShashiP [65%] | 4h |  |
| 1155 | 1.5.4.20.5.6 | Measure performance & document mesaurements | 1.54d? | 2008-09-01 | 2008-09-04 | 1154 | 193.54d | 0d | ShashiP [65%] | 8h |  |
| 1156 | 1.5.4.20.5.7 | Interface definition, code, Nunit , Result & Doc review | 1.54d? | 2008-09-04 | 2008-09-05 | 1155 | 193.54d |  | ShashiP [65%] | 8h |  |
| 1157 | 1.5.4.21 | **Math** | 101.69d? | 2008-04-08 | 2008-08-28 |  | 57.62d |  |  | 508h | P7 |
| 1158 | 1.5.4.21.1 | **Cepstrum** | 15.08d? | 2008-04-08 | 2008-04-29 |  | 55.62d |  |  | 68h |  |
| 1159 | 1.5.4.21.1.1 | Review meas catalog & update | 0.77d? | 2008-04-08 | 2008-04-09 | 1061 | 57.62d | 0d | Ramkumar [65%] | 4h |  |
| 1160 | 1.5.4.21.1.2 | Review managed & Native interface definitions | 0.77d? | 2008-04-09 | 2008-04-10 | 1159 | 57.62d | 0d | Ramkumar [65%] | 4h |  |
| 1161 | 1.5.4.21.1.3 | Write code | 4.62d? | 2008-04-10 | 2008-04-17 | 1160 | 56.62d | 0d | Ramkumar [65%] | 24h |  |
| 1162 | 1.5.4.21.1.4 | Unit test the code | 1.54d? | 2008-04-17 | 2008-04-22 | 1161 | 55.62d | 0d | Ramkumar [65%] | 8h |  |
| 1163 | 1.5.4.21.1.5 | **Verifcation** | 3.08d? | 2008-04-22 | 2008-04-25 |  | 55.62d |  |  | 16h |  |
| 1164 | 1.5.4.21.1.5.1 | Develop the verification code in Matlab | 1.54d? | 2008-04-22 | 2008-04-23 | 1162 | 55.62d | 0d | Ramkumar [65%] | 8h |  |
| 1165 | 1.5.4.21.1.5.2 | Define the test input data & pass to ML & MATLAB | 0.77d? | 2008-04-23 | 2008-04-24 | 1164 | 55.62d | 0d | Ramkumar [65%] | 4h |  |
| 1166 | 1.5.4.21.1.5.3 | Compare the outputs | 0.77d? | 2008-04-24 | 2008-04-25 | 1165 | 55.62d | 0d | Ramkumar [65%] | 4h |  |
| 1167 | 1.5.4.21.1.6 | Measure performance & document mesaurements | 0.77d? | 2008-04-25 | 2008-04-28 | 1166 | 55.62d | 0d | Ramkumar [65%] | 4h |  |
| 1168 | 1.5.4.21.1.7 | Interface definition, code, Nunit , Result & Doc review | 1.54d? | 2008-04-28 | 2008-04-29 | 1167 | 55.62d | 0d | Ramkumar [65%] | 8h |  |
| 1169 | 1.5.4.21.2 | **Basic Complex math** | 16.38d? | 2008-04-29 | 2008-05-22 |  | 54.62d |  |  | 80h |  |
| 1170 | 1.5.4.21.2.1 | Review meas catalog & update | 0.77d? | 2008-04-29 | 2008-04-30 | 1168 | 55.62d | 0d | Ramkumar [65%] | 4h |  |
| 1171 | 1.5.4.21.2.2 | Review managed & Native interface definitions | 0.77d? | 2008-04-30 | 2008-05-02 | 1170 | 54.62d | 0d | Ramkumar [65%] | 4h |  |
| 1172 | 1.5.4.21.2.3 | Write code | 6.15d? | 2008-05-02 | 2008-05-12 | 1171 | 54.62d | 0d | Ramkumar [65%] | 32h |  |
| 1173 | 1.5.4.21.2.4 | Unit test the code | 1.54d? | 2008-05-12 | 2008-05-13 | 1172 | 54.62d | 0d | Ramkumar [65%] | 8h |  |
| 1174 | 1.5.4.21.2.5 | **Verifcation** | 3.08d | 2008-05-13 | 2008-05-16 |  | 54.62d |  |  | 16h |  |
| 1175 | 1.5.4.21.2.5.1 | Develop the verification code in Matlab | 1.54d | 2008-05-13 | 2008-05-15 | 1173 | 54.62d | 0d | Ramkumar [65%] | 8h |  |
| 1176 | 1.5.4.21.2.5.2 | Define the test input data & pass to ML & MATLAB | 0.77d | 2008-05-15 | 2008-05-16 | 1175 | 54.62d | 0d | Ramkumar [65%] | 4h |  |
| 1177 | 1.5.4.21.2.5.3 | Compare the outputs | 0.77d | 2008-05-16 | 2008-05-16 | 1176 | 54.62d | 0d | Ramkumar [65%] | 4h |  |
| 1178 | 1.5.4.21.2.6 | Measure performance & document mesaurements | 1.54d? | 2008-05-16 | 2008-05-20 | 1177 | 54.62d | 0d | Ramkumar [65%] | 8h |  |
| 1179 | 1.5.4.21.2.7 | Interface definition, code, Nunit , Result & Doc review | 1.54d | 2008-05-20 | 2008-05-22 | 1178 | 54.62d | 0d | Ramkumar [65%] | 8h |  |

| ID | WBS | Task | Duration | Start | Finish | Predecessors | Total slack | Free slack | Resources | Work |
| --- | --- | --- | --- | --- | --- | --- | --- | --- | --- | --- |
| 1180 | 1.5.4.21.3 | **Hilbert** | 15.38d | 2008-05-22 | 2008-06-12 |  | 54.62d |  |  | 80h |
| 1181 | 1.5.4.21.3.1 | Review meas catalog & update | 0.77d | 2008-05-22 | 2008-05-22 | 1179 | 54.62d | 0d | Ramkumar [65%] | 4h |
| 1182 | 1.5.4.21.3.2 | Review managed & Native interface definitions | 0.77d | 2008-05-22 | 2008-05-23 | 1181 | 54.62d | 0d | Ramkumar [65%] | 4h |
| 1183 | 1.5.4.21.3.3 | Write code | 6.15d | 2008-05-23 | 2008-06-02 | 1182 | 54.62d | 0d | Ramkumar [65%] | 32h |
| 1184 | 1.5.4.21.3.4 | Unit test the code | 1.54d | 2008-06-02 | 2008-06-04 | 1183 | 55.62d | 0d | Ramkumar [65%] | 8h |
| 1185 | 1.5.4.21.3.5 | **Verifcation** | 3.08d | 2008-06-04 | 2008-06-09 |  | 55.62d |  |  | 16h |
| 1186 | 1.5.4.21.3.5.1 | Develop the verification code in Matlab | 1.54d | 2008-06-04 | 2008-06-05 | 1184 | 55.62d | 0d | Ramkumar [65%] | 8h |
| 1187 | 1.5.4.21.3.5.2 | Define the test input data & pass to ML & MATLAB | 0.77d | 2008-06-05 | 2008-06-06 | 1186 | 55.62d | 0d | Ramkumar [65%] | 4h |
| 1188 | 1.5.4.21.3.5.3 | Compare the outputs | 0.77d | 2008-06-06 | 2008-06-09 | 1187 | 55.62d | 0d | Ramkumar [65%] | 4h |
| 1189 | 1.5.4.21.3.6 | Measure performance & document mesaurements | 1.54d | 2008-06-09 | 2008-06-10 | 1188 | 55.62d | 0d | Ramkumar [65%] | 8h |
| 1190 | 1.5.4.21.3.7 | Interface definition, code, Nunit , Result & Doc review | 1.54d | 2008-06-10 | 2008-06-12 | 1189 | 55.62d | 0d | Ramkumar [65%] | 8h |
| 1191 | 1.5.4.21.4 | **Conversions** | 21.54d? | 2008-06-12 | 2008-07-11 |  | 55.62d |  |  | 112h |
| 1192 | 1.5.4.21.4.1 | Review meas catalog & update | 0.77d? | 2008-06-12 | 2008-06-13 | 1190 | 55.62d | 0d | Ramkumar [65%] | 4h |
| 1193 | 1.5.4.21.4.2 | Review managed & Native interface definitions | 0.77d? | 2008-06-13 | 2008-06-13 | 1192 | 55.62d | 0d | Ramkumar [65%] | 4h |
| 1194 | 1.5.4.21.4.3 | Write code | 9.23d? | 2008-06-13 | 2008-06-27 | 1193 | 55.62d | 0d | Ramkumar [65%] | 48h |
| 1195 | 1.5.4.21.4.4 | Unit test the code | 3.08d? | 2008-06-27 | 2008-07-02 | 1194 | 56.62d | 0d | Ramkumar [65%] | 16h |
| 1196 | 1.5.4.21.4.5 | **Verifcation** | 4.62d? | 2008-07-02 | 2008-07-08 |  | 56.62d |  |  | 24h |
| 1197 | 1.5.4.21.4.5.1 | Develop the verification code in Matlab | 3.08d? | 2008-07-02 | 2008-07-07 | 1195 | 56.62d | 0d | Ramkumar [65%] | 16h |
| 1198 | 1.5.4.21.4.5.2 | Define the test input data & pass to ML & MATLAB | 0.77d? | 2008-07-07 | 2008-07-08 | 1197 | 56.62d | 0d | Ramkumar [65%] | 4h |
| 1199 | 1.5.4.21.4.5.3 | Compare the outputs | 0.77d? | 2008-07-08 | 2008-07-08 | 1198 | 56.62d | 0d | Ramkumar [65%] | 4h |
| 1200 | 1.5.4.21.4.6 | Measure performance & document mesaurements | 1.54d? | 2008-07-08 | 2008-07-10 | 1199 | 56.62d | 0d | Ramkumar [65%] | 8h |
| 1201 | 1.5.4.21.4.7 | Interface definition, code, Nunit , Result & Doc review | 1.54d? | 2008-07-10 | 2008-07-11 | 1200 | 56.62d | 0d | Ramkumar [65%] | 8h |
| 1202 | 1.5.4.21.5 | **Differentiation/Integration** | 14.62d? | 2008-07-11 | 2008-08-01 |  | 56.62d |  |  | 76h |
| 1203 | 1.5.4.21.5.1 | Review meas catalog & update | 0.77d? | 2008-07-11 | 2008-07-14 | 1201 | 56.62d | 0d | Ramkumar [65%] | 4h |
| 1204 | 1.5.4.21.5.2 | Review managed & Native interface definitions | 0.77d? | 2008-07-14 | 2008-07-15 | 1203 | 56.62d | 0d | Ramkumar [65%] | 4h |
| 1205 | 1.5.4.21.5.3 | Write code | 6.15d? | 2008-07-15 | 2008-07-23 | 1204 | 57.62d | 0d | Ramkumar [65%] | 32h |
| 1206 | 1.5.4.21.5.4 | Unit test the code | 1.54d? | 2008-07-23 | 2008-07-25 | 1205 | 58.62d | 0d | Ramkumar [65%] | 8h |

| ID | WBS | Task | Duration | Start | Finish | Predecessors | Complete | Total slack | Free slack | Resources | Work | Actual work | Text1 |
| --- | --- | --- | --- | --- | --- | --- | --- | --- | --- | --- | --- | --- | --- |
| 1207 | 1.5.4.21.5.5 | **Verifcation** | 3.08d? | 2008-07-25 | 2008-07-30 |  |  | 58.62d |  |  | 16h |  |  |
| 1208 | 1.5.4.21.5.5.1 | Develop the verification code in Matlab | 1.54d? | 2008-07-25 | 2008-07-28 | 1206 |  | 58.62d | 0d | Ramkumar [65%] | 8h |  |  |
| 1209 | 1.5.4.21.5.5.2 | Define the test input data & pass to ML & MATLAB | 0.77d? | 2008-07-28 | 2008-07-29 | 1208 |  | 58.62d | 0d | Ramkumar [65%] | 4h |  |  |
| 1210 | 1.5.4.21.5.5.3 | Compare the outputs | 0.77d? | 2008-07-29 | 2008-07-30 | 1209 |  | 58.62d | 0d | Ramkumar [65%] | 4h |  |  |
| 1211 | 1.5.4.21.5.6 | Measure performance & document mesaurements | 0.77d? | 2008-07-30 | 2008-07-31 | 1210 |  | 58.62d | 0d | Ramkumar [65%] | 4h |  |  |
| 1212 | 1.5.4.21.5.7 | Interface definition, code, Nunit , Result & Doc review | 1.54d? | 2008-07-31 | 2008-08-01 | 1211 |  | 58.62d | 0d | Ramkumar [65%] | 8h |  |  |
| 1213 | 1.5.4.21.6 | **Statistical (mean,mode…)** | 18.69d? | 2008-08-01 | 2008-08-28 |  |  | 58.62d |  |  | 92h |  |  |
| 1214 | 1.5.4.21.6.1 | Review meas catalog & update | 0.77d? | 2008-08-01 | 2008-08-04 | 1212 |  | 58.62d | 0d | Ramkumar [65%] | 4h |  |  |
| 1215 | 1.5.4.21.6.2 | Review managed & Native interface definitions | 1.54d? | 2008-08-04 | 2008-08-05 | 1214 |  | 58.62d | 0d | Ramkumar [65%] | 8h |  |  |
| 1216 | 1.5.4.21.6.3 | Write code | 6.15d? | 2008-08-05 | 2008-08-14 | 1215 |  | 58.62d | 0d | Ramkumar [65%] | 32h |  |  |
| 1217 | 1.5.4.21.6.4 | Unit test the code | 1.54d? | 2008-08-14 | 2008-08-18 | 1216 |  | 58.62d | 0d | Ramkumar [65%] | 8h |  |  |
| 1218 | 1.5.4.21.6.5 | **Verifcation** | 4.62d? | 2008-08-18 | 2008-08-25 |  |  | 58.62d |  |  | 24h |  |  |
| 1219 | 1.5.4.21.6.5.1 | Develop the verification code in Matlab | 3.08d? | 2008-08-18 | 2008-08-21 | 1217 |  | 58.62d | 0d | Ramkumar [65%] | 16h |  |  |
| 1220 | 1.5.4.21.6.5.2 | Define the test input data & pass to ML & MATLAB | 0.77d? | 2008-08-21 | 2008-08-22 | 1219 |  | 58.62d | 0d | Ramkumar [65%] | 4h |  |  |
| 1221 | 1.5.4.21.6.5.3 | Compare the outputs | 0.77d? | 2008-08-22 | 2008-08-25 | 1220 |  | 58.62d | 0d | Ramkumar [65%] | 4h |  |  |
| 1222 | 1.5.4.21.6.6 | Measure performance & document mesaurements | 1.54d? | 2008-08-25 | 2008-08-26 | 1221 |  | 58.62d | 0d | Ramkumar [65%] | 8h |  |  |
| 1223 | 1.5.4.21.6.7 | Interface definition, code, Nunit , Result & Doc review | 1.54d? | 2008-08-26 | 2008-08-28 | 1222 |  | 58.62d | 0d | Ramkumar [65%] | 8h |  |  |
| 1224 | 1.5.5 | Research & Investigation on MVP filters | 15.38d? | 2008-02-04 A | 2008-02-26 A |  | 100% |  |  | ShashiP [65%] | 80h | 80h | P1 |
| 1225 | 1.5.6 | Averaging-MATLAB simulation for MVP | 15.38d? | 2008-02-26 A | 2008-03-18 A | 1224 | 100% |  |  | ShashiP [65%] | 80h | 80h | P1 |
| 1226 | 1.5.7 | Research & invesitgation on Octave with MATLAB simulation | 23.08d? | 2008-02-04 A | 2008-03-07 A |  | 100% |  |  | Ramkumar [65%] | 120h | 120h | P1 |
| 1227 | 1.5.8 | **Testing and Result Verification** | 168.02d? | 2008-08-28 | 2009-04-21 |  |  | 32.14d |  |  | 1048h |  |  |
| 1228 | 1.5.8.1 | Verify THD | 4.29d? | 2009-02-26 | 2009-03-05 | 925 |  | 32.14d | 0d | Kapil [70%] | 24h |  | P2 |
| 1229 | 1.5.8.2 | Verify THD+N | 2.86d? | 2009-03-05 | 2009-03-10 | 1228 |  | 32.14d | 0d | Kapil [70%] | 16h |  | P2 |
| 1230 | 1.5.8.3 | Verify SINAD | 2.86d? | 2009-03-10 | 2009-03-12 | 1229 |  | 32.14d | 0d | Kapil [70%] | 16h |  | P4 |
| 1231 | 1.5.8.4 | Verify ENOB | 4.29d? | 2009-03-12 | 2009-03-19 | 1230 |  | 32.14d | 0d | Kapil [70%] | 24h |  | P4 |
| 1232 | 1.5.8.5 | Verify SNR | 2.86d? | 2009-03-19 | 2009-03-24 | 1231 |  | 32.14d | 0d | Kapil [70%] | 16h |  | P4 |
| 1233 | 1.5.8.6 | Verify SFDR | 4.29d? | 2009-03-24 | 2009-03-30 | 1232 |  | 32.14d | 0d | Kapil [70%] | 24h |  | P4 |
| 1234 | 1.5.8.7 | Verify Averaging | 4.29d? | 2009-03-30 | 2009-04-03 | 1233 |  | 32.14d | 0d | Kapil [70%] | 24h |  | P3 |
| 1235 | 1.5.8.8 | Verify Signal Generation | 4.29d? | 2009-04-03 | 2009-04-09 | 1234 |  | 32.14d | 0d | Kapil [70%] | 24h |  | P3 |
| 1236 | 1.5.8.9 | Verify Marker Functions | 7.14d? | 2009-04-09 | 2009-04-21 | 1235 |  | 32.14d |  | Kapil [70%] | 40h |  | P5 |
| 1237 | 1.5.8.10 | Verify Octave | 10d? | 2008-08-28 | 2008-09-10 | 1004 |  | 45.16d | 0d | Mike [50%] | 40h |  | P7 |
| 1238 | 1.5.8.11 | Verify Orbit | 8d? | 2008-09-11 | 2008-09-22 | 1237 |  | 45.16d | 0d | Mike [50%] | 32h |  | P4 |
| 1239 | 1.5.8.12 | Verify FFT | 4.62d? | 2008-08-28 | 2008-09-04 | 1223 |  | 97.31d | 0d | ShashiP [65%] | 24h |  | P2 |
| 1240 | 1.5.8.13 | Verify SFFT | 6.15d? | 2008-09-04 | 2008-09-15 | 1239 |  | 97.31d | 0d | ShashiP [65%] | 32h |  | P5 |
| 1241 | 1.5.8.14 | Verify Windowing | 6.15d? | 2008-09-15 | 2008-09-23 | 1240 |  | 97.31d | 0d | ShashiP [65%] | 32h |  | P2 |
| 1242 | 1.5.8.15 | Verify Resampling | 6.15d? | 2008-09-23 | 2008-10-01 | 1241 |  | 97.31d | 0d | ShashiP [65%] | 32h |  | P4 |
| 1243 | 1.5.8.16 | Verify Zoom FFT | 6.15d? | 2008-10-01 | 2008-10-13 | 1242 |  | 95.31d | 0d | ShashiP [65%] | 32h |  | P4 |
| 1244 | 1.5.8.17 | Verify Linear Spectrum | 4.62d? | 2008-10-13 | 2008-10-20 | 1243 |  | 95.31d | 0d | ShashiP [65%] | 24h |  | P2 |
| 1245 | 1.5.8.18 | Verify Power Spectrum | 4.62d? | 2008-10-20 | 2008-10-24 | 1244 |  | 95.31d | 0d | ShashiP [65%] | 24h |  | P2 |
| 1246 | 1.5.8.19 | Verify Phase Spectrum | 4.62d? | 2008-10-24 | 2008-11-03 | 1245 |  | 94.31d | 0d | ShashiP [65%] | 24h |  | P3 |
| 1247 | 1.5.8.20 | Verify Cross Power | 4.62d? | 2008-11-03 | 2008-11-07 | 1246 |  | 94.31d | 0d | ShashiP [65%] | 24h |  | P3 |
| 1248 | 1.5.8.21 | Verify Limit Lines | 7.69d? | 2008-11-07 | 2008-11-19 | 1247 |  | 94.31d | 0d | ShashiP [65%] | 40h |  | P7 |
| 1249 | 1.5.8.22 | Verify Swept Sine | 6.15d? | 2008-11-19 | 2008-11-27 | 1248 |  | 94.31d | 0d | ShashiP [65%] | 32h |  | P6 |
| 1250 | 1.5.8.23 | Verify Gain, Phase margins | 6.15d? | 2008-11-27 | 2008-12-05 | 1249 |  | 94.31d | 0d | ShashiP [65%] | 32h |  | P6 |
| 1251 | 1.5.8.24 | Verify Frequency, Damping | 6.15d? | 2008-12-05 | 2008-12-17 | 1250 |  | 93.31d | 0d | ShashiP [65%] | 32h |  | P6 |
| 1252 | 1.5.8.25 | Verify Frequency Response | 15.38d? | 2008-12-17 | 2009-01-08 | 1251 |  | 92.31d | 0d | ShashiP [65%] | 80h |  | P3 |
| 1253 | 1.5.8.26 | Verify Group Delay | 6.15d? | 2009-01-08 | 2009-01-16 | 1252 |  | 92.31d | 0d | ShashiP [65%] | 32h |  | P3 |
| 1254 | 1.5.8.27 | Verify Variance | 6.15d? | 2009-01-16 | 2009-01-26 | 1253 |  | 92.31d |  | ShashiP [65%] | 32h |  | P6 |
| 1255 | 1.5.8.28 | Verify Weighting filters for octave analysis A- weighting filter + B-weigghting filter +C- weighting filter | 7.69d? | 2009-01-14 | 2009-01-26 | 1100 |  | 54.62d | 0d | Ramkumar [65%] | 40h |  | P6 |
| 1256 | 1.5.8.29 | Verify General Weighting filters (A+B+C-weighting filter) | 7.69d? | 2009-01-26 | 2009-02-04 | 1255 |  | 54.62d | 0d | Ramkumar [65%] | 40h |  | P6 |
| 1257 | 1.5.8.30 | Verify CCIR filters | 7.69d? | 2009-02-04 | 2009-02-16 | 1256 |  | 54.62d | 0d | Ramkumar [65%] | 40h |  | P6 |
| 1258 | 1.5.8.31 | Verify Low Pass, high pass, band pass, notch | 7.69d? | 2009-02-16 | 2009-02-26 | 1257 |  | 54.62d | 0d | Ramkumar [65%] | 40h |  | P6 |
| 1259 | 1.5.8.32 | Verify Coherence | 7.69d? | 2009-02-26 | 2009-03-09 | 1258 |  | 54.62d | 0d | Ramkumar [65%] | 40h |  | P3 |
| 1260 | 1.5.8.33 | Verify all Math | 7.69d? | 2009-03-09 | 2009-03-19 | 1259 |  | 54.62d |  | Ramkumar [65%] | 40h |  | P7 |

| ID | WBS | Task | Duration | Start | Finish | Predecessors | Total slack | Free slack | Resources | Work | Text1 |
| --- | --- | --- | --- | --- | --- | --- | --- | --- | --- | --- | --- |
| 1261 | 1.5.9 | **Tests With Hardware** | 137d? | 2008-09-23 | 2009-04-01 |  | 45.16d |  |  | 476h | P9 |
| 1262 | 1.5.9.1 | **Transforms** | 11d? | 2008-09-23 | 2008-10-07 |  | 45.16d |  |  | 44h |  |
| 1263 | 1.5.9.1.1 | FFT | 2d? | 2008-09-23 | 2008-09-24 | 1238 | 45.16d | 0d | Mike [50%] | 8h |  |
| 1264 | 1.5.9.1.2 | Identify/Create actual input signals to match verification cases above | 2d? | 2008-09-25 | 2008-09-26 | 1263 | 45.16d | 0d | Mike [50%] | 8h |  |
| 1265 | 1.5.9.1.3 | Inject signals into hardware and capture the results. | 4d? | 2008-09-29 | 2008-10-02 | 1264 | 45.16d | 0d | Mike [50%] | 16h |  |
| 1266 | 1.5.9.1.4 | Compare results through hardware with software verfification | 2d? | 2008-10-03 | 2008-10-06 | 1265 | 45.16d | 0d | Mike [50%] | 8h |  |
| 1267 | 1.5.9.1.5 | Review Results | 1d? | 2008-10-07 | 2008-10-07 | 1266 | 45.16d | 0d | Mike [50%] | 4h |  |
| 1268 | 1.5.9.2 | **STFT** | 9d? | 2008-10-08 | 2008-10-20 |  | 45.16d |  |  | 36h |  |
| 1269 | 1.5.9.2.1 | Identify/Create actual input signals to match verification cases above | 2d? | 2008-10-08 | 2008-10-09 | 1267 | 45.16d | 0d | Mike [50%] | 8h |  |
| 1270 | 1.5.9.2.2 | Inject signals into hardware and capture the results. | 4d? | 2008-10-10 | 2008-10-15 | 1269 | 45.16d | 0d | Mike [50%] | 16h |  |
| 1271 | 1.5.9.2.3 | Compare results through hardware with software verfification | 2d? | 2008-10-16 | 2008-10-17 | 1270 | 45.16d | 0d | Mike [50%] | 8h |  |
| 1272 | 1.5.9.2.4 | Review Results | 1d? | 2008-10-20 | 2008-10-20 | 1271 | 45.16d | 0d | Mike [50%] | 4h |  |
| 1273 | 1.5.9.3 | **Windowing** | 6d? | 2008-10-21 | 2008-10-28 |  | 45.16d |  |  | 24h |  |
| 1274 | 1.5.9.3.1 | Identify/Create actual input signals to match verification cases above | 1d? | 2008-10-21 | 2008-10-21 | 1272 | 45.16d | 0d | Mike [50%] | 4h |  |
| 1275 | 1.5.9.3.2 | Inject signals into hardware and capture the results. | 2d? | 2008-10-22 | 2008-10-23 | 1274 | 45.16d | 0d | Mike [50%] | 8h |  |
| 1276 | 1.5.9.3.3 | Compare results through hardware with software verfification | 2d? | 2008-10-24 | 2008-10-27 | 1275 | 45.16d | 0d | Mike [50%] | 8h |  |
| 1277 | 1.5.9.3.4 | Review Results | 1d? | 2008-10-28 | 2008-10-28 | 1276 | 45.16d | 0d | Mike [50%] | 4h |  |
| 1278 | 1.5.9.4 | **Resampling** | 13d? | 2008-10-29 | 2008-11-14 |  | 45.16d |  |  | 52h |  |
| 1279 | 1.5.9.4.1 | Identify/Create actual input signals to match verification cases above | 4d? | 2008-10-29 | 2008-11-03 | 1277 | 45.16d | 0d | Mike [50%] | 16h |  |
| 1280 | 1.5.9.4.2 | Inject signals into hardware and capture the results. | 4d? | 2008-11-04 | 2008-11-07 | 1279 | 45.16d | 0d | Mike [50%] | 16h |  |
| 1281 | 1.5.9.4.3 | Compare results through hardware with software verfification | 4d? | 2008-11-10 | 2008-11-13 | 1280 | 45.16d | 0d | Mike [50%] | 16h |  |
| 1282 | 1.5.9.4.4 | Review Results | 1d? | 2008-11-14 | 2008-11-14 | 1281 | 45.16d | 0d | Mike [50%] | 4h |  |
| 1283 | 1.5.9.5 | **ZoomFFT** | 7d? | 2008-11-17 | 2008-11-25 |  | 45.16d |  |  | 28h |  |
| 1284 | 1.5.9.5.1 | Identify/Create actual input signals to match verification cases above | 2d? | 2008-11-17 | 2008-11-18 | 1282 | 45.16d | 0d | Mike [50%] | 8h |  |
| 1285 | 1.5.9.5.2 | Inject signals into hardware and capture the results. | 2d? | 2008-11-19 | 2008-11-20 | 1284 | 45.16d | 0d | Mike [50%] | 8h |  |
| 1286 | 1.5.9.5.3 | Compare results through hardware with software verfification | 2d? | 2008-11-21 | 2008-11-24 | 1285 | 45.16d | 0d | Mike [50%] | 8h |  |
| 1287 | 1.5.9.5.4 | Review Results | 1d? | 2008-11-25 | 2008-11-25 | 1286 | 45.16d | 0d | Mike [50%] | 4h |  |

| ID | WBS | Task | Duration | Start | Finish | Predecessors | Total slack | Free slack | Resources | Work |
| --- | --- | --- | --- | --- | --- | --- | --- | --- | --- | --- |
| 1288 | 1.5.9.6 | **Spectrums** | 25d? | 2008-11-26 | 2008-12-30 |  | 45.16d |  |  | 100h |
| 1289 | 1.5.9.6.1 | **Linear** | 5d? | 2008-11-26 | 2008-12-02 |  | 45.16d |  |  | 20h |
| 1290 | 1.5.9.6.1.1 | Identify/Create actual input signals to match verification cases above | 1d? | 2008-11-26 | 2008-11-26 | 1287 | 45.16d | 0d | Mike [50%] | 4h |
| 1291 | 1.5.9.6.1.2 | Inject signals into hardware and capture the results. | 2d? | 2008-11-27 | 2008-11-28 | 1290 | 45.16d | 0d | Mike [50%] | 8h |
| 1292 | 1.5.9.6.1.3 | Compare results through hardware with software verfification | 1d? | 2008-12-01 | 2008-12-01 | 1291 | 45.16d | 0d | Mike [50%] | 4h |
| 1293 | 1.5.9.6.1.4 | Review Results | 1d? | 2008-12-02 | 2008-12-02 | 1292 | 45.16d | 0d | Mike [50%] | 4h |
| 1294 | 1.5.9.6.2 | **Power** | 5d? | 2008-12-03 | 2008-12-09 |  | 45.16d |  |  | 20h |
| 1295 | 1.5.9.6.2.1 | Identify/Create actual input signals to match verification cases above | 1d? | 2008-12-03 | 2008-12-03 | 1293 | 45.16d | 0d | Mike [50%] | 4h |
| 1296 | 1.5.9.6.2.2 | Inject signals into hardware and capture the results. | 2d? | 2008-12-04 | 2008-12-05 | 1295 | 45.16d | 0d | Mike [50%] | 8h |
| 1297 | 1.5.9.6.2.3 | Compare results through hardware with software verfification | 1d? | 2008-12-08 | 2008-12-08 | 1296 | 45.16d | 0d | Mike [50%] | 4h |
| 1298 | 1.5.9.6.2.4 | Review Results | 1d? | 2008-12-09 | 2008-12-09 | 1297 | 45.16d | 0d | Mike [50%] | 4h |
| 1299 | 1.5.9.6.3 | **Phase** | 5d? | 2008-12-10 | 2008-12-16 |  | 45.16d |  |  | 20h |
| 1300 | 1.5.9.6.3.1 | Identify/Create actual input signals to match verification cases above | 1d? | 2008-12-10 | 2008-12-10 | 1298 | 45.16d | 0d | Mike [50%] | 4h |
| 1301 | 1.5.9.6.3.2 | Inject signals into hardware and capture the results. | 2d? | 2008-12-11 | 2008-12-12 | 1300 | 45.16d | 0d | Mike [50%] | 8h |
| 1302 | 1.5.9.6.3.3 | Compare results through hardware with software verfification | 1d? | 2008-12-15 | 2008-12-15 | 1301 | 45.16d | 0d | Mike [50%] | 4h |
| 1303 | 1.5.9.6.3.4 | Review Results | 1d? | 2008-12-16 | 2008-12-16 | 1302 | 45.16d | 0d | Mike [50%] | 4h |
| 1304 | 1.5.9.6.4 | **Auto power** | 5d? | 2008-12-17 | 2008-12-23 |  | 45.16d |  |  | 20h |
| 1305 | 1.5.9.6.4.1 | Identify/Create actual input signals to match verification cases above | 1d? | 2008-12-17 | 2008-12-17 | 1303 | 45.16d | 0d | Mike [50%] | 4h |
| 1306 | 1.5.9.6.4.2 | Inject signals into hardware and capture the results. | 2d? | 2008-12-18 | 2008-12-19 | 1305 | 45.16d | 0d | Mike [50%] | 8h |
| 1307 | 1.5.9.6.4.3 | Compare results through hardware with software verfification | 1d? | 2008-12-22 | 2008-12-22 | 1306 | 45.16d | 0d | Mike [50%] | 4h |
| 1308 | 1.5.9.6.4.4 | Review Results | 1d? | 2008-12-23 | 2008-12-23 | 1307 | 45.16d | 0d | Mike [50%] | 4h |
| 1309 | 1.5.9.6.5 | **Cross power** | 5d? | 2008-12-24 | 2008-12-30 |  | 45.16d |  |  | 20h |
| 1310 | 1.5.9.6.5.1 | Identify/Create actual input signals to match verification cases above | 1d? | 2008-12-24 | 2008-12-24 | 1308 | 45.16d | 0d | Mike [50%] | 4h |
| 1311 | 1.5.9.6.5.2 | Inject signals into hardware and capture the results. | 2d? | 2008-12-25 | 2008-12-26 | 1310 | 45.16d | 0d | Mike [50%] | 8h |
| 1312 | 1.5.9.6.5.3 | Compare results through hardware with software verfification | 1d? | 2008-12-29 | 2008-12-29 | 1311 | 45.16d | 0d | Mike [50%] | 4h |
| 1313 | 1.5.9.6.5.4 | Review Results | 1d? | 2008-12-30 | 2008-12-30 | 1312 | 45.16d | 0d | Mike [50%] | 4h |

| ID | WBS | Task | Duration | Start | Finish | Predecessors | Total slack | Free slack | Resources | Work |
| --- | --- | --- | --- | --- | --- | --- | --- | --- | --- | --- |
| 1314 | 1.5.9.7 | **Limit lines** | 10d? | 2008-12-31 | 2009-01-13 |  | 45.16d |  |  | 40h |
| 1315 | 1.5.9.7.1 | **Upper limit** | 5d? | 2008-12-31 | 2009-01-06 |  | 45.16d |  |  | 20h |
| 1316 | 1.5.9.7.1.1 | Identify/Create actual input signals to match verification cases above | 1d? | 2008-12-31 | 2008-12-31 | 1313 | 45.16d | 0d | Mike [50%] | 4h |
| 1317 | 1.5.9.7.1.2 | Inject signals into hardware and capture the results. | 2d? | 2009-01-01 | 2009-01-02 | 1316 | 45.16d | 0d | Mike [50%] | 8h |
| 1318 | 1.5.9.7.1.3 | Compare results through hardware with software verfification | 1d? | 2009-01-05 | 2009-01-05 | 1317 | 45.16d | 0d | Mike [50%] | 4h |
| 1319 | 1.5.9.7.1.4 | Review Results | 1d? | 2009-01-06 | 2009-01-06 | 1318 | 45.16d | 0d | Mike [50%] | 4h |
| 1320 | 1.5.9.7.2 | **Lower limit** | 5d? | 2009-01-07 | 2009-01-13 |  | 45.16d |  |  | 20h |
| 1321 | 1.5.9.7.2.1 | Identify/Create actual input signals to match verification cases above | 1d? | 2009-01-07 | 2009-01-07 | 1319 | 45.16d | 0d | Mike [50%] | 4h |
| 1322 | 1.5.9.7.2.2 | Inject signals into hardware and capture the results. | 2d? | 2009-01-08 | 2009-01-09 | 1321 | 45.16d | 0d | Mike [50%] | 8h |
| 1323 | 1.5.9.7.2.3 | Compare results through hardware with software verfification | 1d? | 2009-01-12 | 2009-01-12 | 1322 | 45.16d | 0d | Mike [50%] | 4h |
| 1324 | 1.5.9.7.2.4 | Review Results | 1d? | 2009-01-13 | 2009-01-13 | 1323 | 45.16d | 0d | Mike [50%] | 4h |
| 1325 | 1.5.9.8 | **Swept Sine** | 56d? | 2009-01-14 | 2009-04-01 |  | 45.16d |  |  | 152h |
| 1326 | 1.5.9.8.1 | **Gain, Phase margins** | 8d? | 2009-01-14 | 2009-01-23 |  | 45.16d |  |  | 32h |
| 1327 | 1.5.9.8.1.1 | Identify/Create actual input signals to match verification cases above | 4d? | 2009-01-14 | 2009-01-19 | 1324 | 45.16d | 0d | Mike [50%] | 16h |
| 1328 | 1.5.9.8.1.2 | Inject signals into hardware and capture the results. | 2d? | 2009-01-20 | 2009-01-21 | 1327 | 45.16d | 0d | Mike [50%] | 8h |
| 1329 | 1.5.9.8.1.3 | Compare results through hardware with software verfification | 1d? | 2009-01-22 | 2009-01-22 | 1328 | 45.16d | 0d | Mike [50%] | 4h |
| 1330 | 1.5.9.8.1.4 | Review Results | 1d? | 2009-01-23 | 2009-01-23 | 1329 | 45.16d | 0d | Mike [50%] | 4h |
| 1331 | 1.5.9.8.2 | **Frequency, Damping** | 8d? | 2009-01-26 | 2009-02-04 |  | 45.16d |  |  | 32h |
| 1332 | 1.5.9.8.2.1 | Identify/Create actual input signals to match verification cases above | 4d? | 2009-01-26 | 2009-01-29 | 1330 | 45.16d | 0d | Mike [50%] | 16h |
| 1333 | 1.5.9.8.2.2 | Inject signals into hardware and capture the results. | 2d? | 2009-01-30 | 2009-02-02 | 1332 | 45.16d | 0d | Mike [50%] | 8h |
| 1334 | 1.5.9.8.2.3 | Compare results through hardware with software verfification | 1d? | 2009-02-03 | 2009-02-03 | 1333 | 45.16d | 0d | Mike [50%] | 4h |
| 1335 | 1.5.9.8.2.4 | Review Results | 1d? | 2009-02-04 | 2009-02-04 | 1334 | 45.16d | 0d | Mike [50%] | 4h |
| 1336 | 1.5.9.8.3 | **Frequency Response** | 8d? | 2009-02-05 | 2009-02-16 |  | 45.16d |  |  | 24h |
| 1337 | 1.5.9.8.3.1 | Identify/Create actual input signals to match verification cases above | 2d? | 2009-02-05 | 2009-02-06 | 1335 | 45.16d | 0d | Mike [50%] | 8h |
| 1338 | 1.5.9.8.3.2 | Inject signals into hardware and capture the results. | 2d? | 2009-02-11 | 2009-02-12 | 1337 | 45.16d | 0d | Mike [50%] | 8h |
| 1339 | 1.5.9.8.3.3 | Compare results through hardware with software verfification | 1d? | 2009-02-13 | 2009-02-13 | 1338 | 45.16d | 0d | Mike [50%] | 4h |
| 1340 | 1.5.9.8.3.4 | Review Results | 1d? | 2009-02-16 | 2009-02-16 | 1339 | 45.16d | 0d | Mike [50%] | 4h |

| ID | WBS | Task | Duration | Start | Finish | Predecessors | Complete | Remaining | Total slack | Free slack | Resources | Work | Actual work | Text1 |
| --- | --- | --- | --- | --- | --- | --- | --- | --- | --- | --- | --- | --- | --- | --- |
| 1341 | 1.5.9.8.4 | **Variance** | 17d? | 2009-02-17 | 2009-03-11 |  |  |  | 45.16d |  |  | 32h |  |  |
| 1342 | 1.5.9.8.4.1 | Identify/Create actual input signals to match verification cases above | 4d? | 2009-02-17 | 2009-02-20 | 1340 |  |  | 45.16d | 0d | Mike [50%] | 16h |  |  |
| 1343 | 1.5.9.8.4.2 | Inject signals into hardware and capture the results. | 2d? | 2009-03-04 | 2009-03-05 | 1342 |  |  | 45.16d | 0d | Mike [50%] | 8h |  |  |
| 1344 | 1.5.9.8.4.3 | Compare results through hardware with software verfification | 1d? | 2009-03-10 | 2009-03-10 | 1343 |  |  | 45.16d | 0d | Mike [50%] | 4h |  |  |
| 1345 | 1.5.9.8.4.4 | Review Results | 1d? | 2009-03-11 | 2009-03-11 | 1344 |  |  | 45.16d | 0d | Mike [50%] | 4h |  |  |
| 1346 | 1.5.9.8.5 | **Group Delay** | 10d? | 2009-03-19 | 2009-04-01 |  |  |  | 45.16d |  |  | 32h |  |  |
| 1347 | 1.5.9.8.5.1 | Identify/Create actual input signals to match verification cases above | 4d? | 2009-03-19 | 2009-03-24 | 1345 |  |  | 45.16d | 0d | Mike [50%] | 16h |  |  |
| 1348 | 1.5.9.8.5.2 | Inject signals into hardware and capture the results. | 2d? | 2009-03-27 | 2009-03-30 | 1347 |  |  | 45.16d | 0d | Mike [50%] | 8h |  |  |
| 1349 | 1.5.9.8.5.3 | Compare results through hardware with software verfification | 1d? | 2009-03-31 | 2009-03-31 | 1348 |  |  | 45.16d | 0d | Mike [50%] | 4h |  |  |
| 1350 | 1.5.9.8.5.4 | Review Results | 1d? | 2009-04-01 | 2009-04-01 | 1349 |  |  | 45.16d |  | Mike [50%] | 4h |  |  |
| 1351 | 1.5.10 | **Unmanaged interface definition** | 35.85d? | 2008-02-04 A | 2008-03-24 |  | 13% | 31.07d? | 312.31d |  |  | 376h | 44h |  |
| 1352 | 1.5.10.1 | Define interface style/model | 8d? | 2008-02-04 A | 2008-02-13 A |  | 100% |  |  |  | Mike [50%] | 32h | 32h | P1 |
| 1353 | 1.5.10.2 | **Transforms** | 6d? | 2008-02-04 A | 2008-02-12 |  | 29% | 4.29d? | 314.08d |  |  | 28h | 8h |  |
| 1354 | 1.5.10.2.1 | FFT | 1.43d? | 2008-02-04 A | 2008-02-05 A |  | 100% |  |  |  | Kapil [70%] | 8h | 8h | P1 |
| 1355 | 1.5.10.2.2 | STFT | 1.43d? | 2008-02-05 | 2008-02-06 | 1354 |  |  | 315.08d | 0d | Kapil [70%] | 8h |  | P4 |
| 1356 | 1.5.10.2.3 | Windowing | 0.71d? | 2008-02-06 | 2008-02-07 | 1355 |  |  | 315.08d | 0d | Kapil [70%] | 4h |  | P1 |
| 1357 | 1.5.10.2.4 | Resampling | 0.71d? | 2008-02-07 | 2008-02-08 | 1356 |  |  | 315.08d | 0d | Kapil [70%] | 4h |  | P3 |
| 1358 | 1.5.10.2.5 | ZoomFFT | 0.71d? | 2008-02-08 | 2008-02-12 | 1357 |  |  | 314.08d | 0d | Kapil [70%] | 4h |  | P3 |
| 1359 | 1.5.10.3 | **Spectrums** | 3.08d? | 2008-02-12 | 2008-02-15 |  |  |  | 314.08d |  |  | 16h |  |  |
| 1360 | 1.5.10.3.1 | Linear | 0.77d? | 2008-02-12 | 2008-02-12 | 1358 |  |  | 314.08d | 0d | ShashiP [65%] | 4h |  | P1 |
| 1361 | 1.5.10.3.2 | Power | 0.77d? | 2008-02-12 | 2008-02-13 | 1360 |  |  | 314.08d | 0d | ShashiP [65%] | 4h |  | P1 |
| 1362 | 1.5.10.3.3 | Phase | 0.77d? | 2008-02-13 | 2008-02-14 | 1361 |  |  | 314.08d | 0d | ShashiP [65%] | 4h |  | P2 |
| 1363 | 1.5.10.3.4 | Cross power | 0.77d? | 2008-02-14 | 2008-02-15 | 1362 |  |  | 314.08d | 0d | ShashiP [65%] | 4h |  | P2 |
| 1364 | 1.5.10.4 | **Filters** | 11.43d? | 2008-02-15 | 2008-03-03 |  |  |  | 314.08d |  |  | 64h |  | P5 |
| 1365 | 1.5.10.4.1 | Weighting filters | 5.71d? | 2008-02-15 | 2008-02-22 | 1363 |  |  | 314.08d | 0d | Kapil [70%] | 32h |  |  |
| 1366 | 1.5.10.4.2 | CCIR | 2.86d? | 2008-02-22 | 2008-02-27 | 1365 |  |  | 314.08d | 0d | Kapil [70%] | 16h |  |  |
| 1367 | 1.5.10.4.3 | Low Pass, high pass, band pass, notch | 2.86d? | 2008-02-27 | 2008-03-03 | 1366 |  |  | 314.08d | 0d | Kapil [70%] | 16h |  |  |

| ID | WBS | Task | Duration | Start | Finish | Predecessors | Complete | Remaining | Total slack | Free slack | Resources | Work | Actual work | Text1 |
| --- | --- | --- | --- | --- | --- | --- | --- | --- | --- | --- | --- | --- | --- | --- |
| 1368 | 1.5.10.5 | **Distortion** | 5d? | 2008-03-03 | 2008-03-10 |  |  |  | 314.08d |  |  | 28h |  |  |
| 1369 | 1.5.10.5.1 | THD | 0.71d? | 2008-03-03 | 2008-03-04 | 1367 |  |  | 314.08d | 0d | Kapil [70%] | 4h |  | P1 |
| 1370 | 1.5.10.5.2 | THD + Noise | 1.43d? | 2008-03-04 | 2008-03-05 | 1369 |  |  | 314.08d | 0d | Kapil [70%] | 8h |  | P1 |
| 1371 | 1.5.10.5.3 | SINAD | 0.71d? | 2008-03-05 | 2008-03-06 | 1370 |  |  | 314.08d | 0d | Kapil [70%] | 4h |  | P3 |
| 1372 | 1.5.10.5.4 | ENOB | 0.71d? | 2008-03-06 | 2008-03-07 | 1371 |  |  | 314.08d | 0d | Kapil [70%] | 4h |  | P3 |
| 1373 | 1.5.10.5.5 | SNR | 0.71d? | 2008-03-07 | 2008-03-07 | 1372 |  |  | 314.08d | 0d | Kapil [70%] | 4h |  | P3 |
| 1374 | 1.5.10.5.6 | SFDR | 0.71d? | 2008-03-07 | 2008-03-10 | 1373 |  |  | 314.08d | 0d | Kapil [70%] | 4h |  | P3 |
| 1375 | 1.5.10.6 | Averaging | 7.14d? | 2008-03-10 | 2008-03-19 | 1374 |  |  | 314.08d | 0d | Kapil [70%] | 40h |  | P2 |
| 1376 | 1.5.10.7 | Coherence | 1.43d? | 2008-03-19 | 2008-03-24 | 1375 |  |  | 313.08d |  | Kapil [70%] | 8h |  | P2 |
| 1377 | 1.5.10.8 | **Signal Generation** | 35.85d? | 2008-02-04 A | 2008-03-24 |  | 20% | 28.68d? | 280.63d |  |  | 20h | 4h |  |
| 1378 | 1.5.10.8.1 | Sine | 0.77d? | 2008-03-24 A | 2008-03-24 A | 1376 | 100% |  |  |  | Ramkumar [65%] | 4h | 4h | P2 |
| 1379 | 1.5.10.8.2 | **Noise** | 3.08d? | 2008-02-04 | 2008-02-07 |  |  |  | 313.4d |  |  | 16h |  | P3 |
| 1380 | 1.5.10.8.2.1 | Random | 0.77d? | 2008-02-04 | 2008-02-04 |  |  |  | 313.4d | 0d | Ramkumar [65%] | 4h |  |  |
| 1381 | 1.5.10.8.2.2 | Pink | 0.77d? | 2008-02-04 | 2008-02-05 | 1380 |  |  | 313.4d | 0d | Ramkumar [65%] | 4h |  |  |
| 1382 | 1.5.10.8.2.3 | White | 0.77d? | 2008-02-05 | 2008-02-06 | 1381 |  |  | 313.4d | 0d | Ramkumar [65%] | 4h |  |  |
| 1383 | 1.5.10.8.2.4 | Gaussian | 0.77d? | 2008-02-06 | 2008-02-07 | 1382 |  |  | 313.4d | 0d | Ramkumar [65%] | 4h |  |  |
| 1384 | 1.5.10.9 | Octave | 1.54d? | 2008-02-07 | 2008-02-08 | 1383 |  |  | 313.4d | 0d | Ramkumar [65%] | 8h |  | P6 |
| 1385 | 1.5.10.10 | **Math** | 8.14d? | 2008-02-08 | 2008-02-20 |  |  |  | 312.4d |  |  | 40h |  | P6 |
| 1386 | 1.5.10.10.1 | Cepstrum | 1.43d? | 2008-02-08 | 2008-02-13 | 1384 |  |  | 312.4d | 0d | Kapil [70%] | 8h |  |  |
| 1387 | 1.5.10.10.2 | Basic Complex math | 1.43d? | 2008-02-13 | 2008-02-14 | 1386 |  |  | 312.4d | 0d | Kapil [70%] | 8h |  |  |
| 1388 | 1.5.10.10.3 | Hilbert | 1.43d? | 2008-02-14 | 2008-02-15 | 1387 |  |  | 312.4d | 0d | Kapil [70%] | 8h |  |  |
| 1389 | 1.5.10.10.4 | Conversions | 1.43d? | 2008-02-15 | 2008-02-19 | 1388 |  |  | 312.4d | 0d | Kapil [70%] | 8h |  |  |
| 1390 | 1.5.10.10.5 | Differentiation/Integration | 0.71d? | 2008-02-19 | 2008-02-20 | 1389 |  |  | 312.4d | 0d | Kapil [70%] | 4h |  |  |
| 1391 | 1.5.10.10.6 | Statistical (mean,mode…) | 0.71d? | 2008-02-20 | 2008-02-20 | 1390 |  |  | 312.4d | 0d | Kapil [70%] | 4h |  |  |

| ID | WBS | Task | Duration | Start | Finish | Predecessors | Total slack | Free slack | Resources | Work | Text1 |
| --- | --- | --- | --- | --- | --- | --- | --- | --- | --- | --- | --- |
| 1392 | 1.5.10.11 | **Limit lines** | 2d? | 2008-02-20 | 2008-02-22 |  | 312.4d |  |  | 8h | P6 |
| 1393 | 1.5.10.11.1 | Upper limit | 1d? | 2008-02-20 | 2008-02-21 | 1391 | 312.4d | 0d | Mike [50%] | 4h |  |
| 1394 | 1.5.10.11.2 | Lower limit | 1d? | 2008-02-21 | 2008-02-22 | 1393 | 312.4d | 0d | Mike [50%] | 4h |  |
| 1395 | 1.5.10.12 | **Swept Sine** | 5d? | 2008-02-22 | 2008-02-29 |  | 312.4d |  |  | 20h |  |
| 1396 | 1.5.10.12.1 | Gain, Phase margins | 1d? | 2008-02-22 | 2008-02-25 | 1394 | 312.4d | 0d | Mike [50%] | 4h | P5 |
| 1397 | 1.5.10.12.2 | Frequency, Damping | 1d? | 2008-02-25 | 2008-02-26 | 1396 | 312.4d | 0d | Mike [50%] | 4h | P5 |
| 1398 | 1.5.10.12.3 | Frequency Response | 1d? | 2008-02-26 | 2008-02-27 | 1397 | 312.4d | 0d | Mike [50%] | 4h | P2 |
| 1399 | 1.5.10.12.4 | Variance | 1d? | 2008-02-27 | 2008-02-28 | 1398 | 312.4d | 0d | Mike [50%] | 4h | P5 |
| 1400 | 1.5.10.12.5 | Group Delay | 1d? | 2008-02-28 | 2008-02-29 | 1399 | 312.4d | 0d | Mike [50%] | 4h | P2 |
| 1401 | 1.5.10.13 | **Marker Functions** | 6d? | 2008-02-29 | 2008-03-10 |  | 312.4d |  |  | 24h | P4 |
| 1402 | 1.5.10.13.1 | Peak Search | 1d? | 2008-02-29 | 2008-03-03 | 1400 | 312.4d | 0d | Mike [50%] | 4h |  |
| 1403 | 1.5.10.13.2 | Next Largest Peak | 1d? | 2008-03-03 | 2008-03-04 | 1402 | 312.4d | 0d | Mike [50%] | 4h |  |
| 1404 | 1.5.10.13.3 | Next Peak Right | 1d? | 2008-03-04 | 2008-03-05 | 1403 | 312.4d | 0d | Mike [50%] | 4h |  |
| 1405 | 1.5.10.13.4 | Next Peak Left | 1d? | 2008-03-05 | 2008-03-06 | 1404 | 312.4d | 0d | Mike [50%] | 4h |  |
| 1406 | 1.5.10.13.5 | Peak Tracking | 1d? | 2008-03-06 | 2008-03-07 | 1405 | 312.4d | 0d | Mike [50%] | 4h |  |
| 1407 | 1.5.10.13.6 | Marker to Center | 1d? | 2008-03-07 | 2008-03-10 | 1406 | 312.4d | 0d | Mike [50%] | 4h |  |
| 1408 | 1.5.10.14 | Orbit | 1d? | 2008-03-10 | 2008-03-11 | 1407 | 312.4d | 0d | Mike [50%] | 4h | P3 |
| 1409 | 1.5.10.15 | **Time measurements** | 9d? | 2008-03-11 | 2008-03-24 |  | 312.4d |  |  | 36h | P4 |
| 1410 | 1.5.10.15.1 | Delay time function | 1d? | 2008-03-11 | 2008-03-12 | 1408 | 312.4d | 0d | Mike [50%] | 4h |  |
| 1411 | 1.5.10.15.2 | Maximum overshoot | 1d? | 2008-03-12 | 2008-03-13 | 1410 | 312.4d | 0d | Mike [50%] | 4h |  |
| 1412 | 1.5.10.15.3 | Rise time | 1d? | 2008-03-13 | 2008-03-14 | 1411 | 312.4d | 0d | Mike [50%] | 4h |  |
| 1413 | 1.5.10.15.4 | Decay Time | 2d? | 2008-03-14 | 2008-03-18 | 1412 | 312.4d | 0d | Mike [50%] | 8h |  |
| 1414 | 1.5.10.15.5 | Pulse Width | 1d? | 2008-03-18 | 2008-03-19 | 1413 | 312.4d | 0d | Mike [50%] | 4h |  |
| 1415 | 1.5.10.15.6 | Voltage Max | 1d? | 2008-03-19 | 2008-03-20 | 1414 | 312.4d | 0d | Mike [50%] | 4h |  |
| 1416 | 1.5.10.15.7 | Voltage Min | 1d? | 2008-03-20 | 2008-03-21 | 1415 | 312.4d | 0d | Mike [50%] | 4h |  |
| 1417 | 1.5.10.15.8 | Settling time | 1d? | 2008-03-21 | 2008-03-24 | 1416 | 312.4d |  | Mike [50%] | 4h |  |

| ID | WBS | Task | Duration | Start | Finish | Predecessors | Complete | Remaining | Total slack | Free slack | Constraint | Resources | Work | Actual work | Text1 |
| --- | --- | --- | --- | --- | --- | --- | --- | --- | --- | --- | --- | --- | --- | --- | --- |
| 1418 | 1.5.11 | **Error codes definition** | 10d? | 2008-02-14 A | 2008-02-28 A |  | 100% |  |  |  |  |  | 56h | 56h | P2 |
| 1419 | 1.5.11.1 | Categorize errors | 4.29d? | 2008-02-14 A | 2008-02-21 A | 676 | 100% |  |  |  |  | Himanshu [70%] | 24h | 24h |  |
| 1420 | 1.5.11.2 | Error code translation proposal/plan | 4.29d? | 2008-02-21 A | 2008-02-27 A | 1419 | 100% |  |  |  |  | Himanshu [70%] | 24h | 24h |  |
| 1421 | 1.5.11.3 | Review with team | 0.71d? | 2008-02-27 A | 2008-02-28 A | 1420 | 100% |  |  |  |  | Himanshu [70%] | 4h | 4h |  |
| 1422 | 1.5.11.4 | Incorporate review decisions | 0.71d? | 2008-02-28 A | 2008-02-28 A | 1421 | 100% |  |  |  |  | Himanshu [70%] | 4h | 4h |  |
| 1423 | 1.5.12 | **Define meas to be implemented in MVP** | 12d? | 2008-07-11 A | 2008-07-29 A |  | 100% |  |  |  |  |  | 48h | 48h | P1 |
| 1424 | 1.5.12.1 | List the meas for MVP | 2d? | 2008-07-11 A | 2008-07-15 A | 1417 | 100% |  |  |  |  | Mike [50%] | 8h | 8h |  |
| 1425 | 1.5.12.2 | Identify dependecies on other meas | 4d? | 2008-07-15 A | 2008-07-21 A | 1424 | 100% |  |  |  |  | Mike [50%] | 16h | 16h |  |
| 1426 | 1.5.12.3 | Review with team | 2d? | 2008-07-21 A | 2008-07-23 A | 1425 | 100% |  |  |  |  | Mike [50%] | 8h | 8h |  |
| 1427 | 1.5.12.4 | Incorporate review decisions | 2d? | 2008-07-23 A | 2008-07-25 A | 1426 | 100% |  |  |  |  | Mike [50%] | 8h | 8h |  |
| 1428 | 1.5.12.5 | Finalize meas definition for MVP | 2d? | 2008-07-25 A | 2008-07-29 A | 1427 | 100% |  |  |  |  | Mike [50%] | 8h | 8h |  |
| 1429 | 1.5.13 | **Infrastructure Development** | 130.14d? | 2008-02-04 A | 2008-08-04 |  | 92% | 10.35d? | 53.42d |  |  |  | 64h | 60h | P1 |
| 1430 | 1.5.13.1 | Unit test framework setup | 2.86d? | 2008-02-04 A | 2008-02-06 A |  | 100% |  |  |  |  | Kapil [70%] | 16h | 16h |  |
| 1431 | 1.5.13.2 | Test result reporting and tracking | 4.29d? | 2008-02-06 A | 2008-02-14 A | 1430 | 100% |  |  |  |  | Kapil [70%] | 24h | 24h |  |
| 1432 | 1.5.13.3 | Folder structure (OS, Unit test, performance test, verfication test and results) | 1.43d? | 2008-02-14 A | 2008-02-15 A | 1431 | 100% |  |  |  |  | Kapil [70%] | 8h | 8h |  |
| 1433 | 1.5.13.4 | Work with LP to understand their needs | 4d? | 2008-07-29 A | 2008-08-04 | 1428 | 75% | 1d? | 53.42d | 0d |  | Mike [50%] | 16h | 12h |  |
| 1434 | 1.6 | **AI Less SLIC Single Commands** | 342.33d? | 2008-02-04 A | 2009-05-27 |  | 2% | 336.41d? | 5.83d |  |  |  | 2887.99h | 52h |  |
| 1435 | 1.6.1 | Develop Code and Nunit tests for 200 Parser Commands (15 per Day) | 18.57d? | 2008-02-04 A | 2008-02-29 |  | 50% | 9.29d? | 5.83d | 0d | start no earlier than 2008-02-04 | Vishal [70%] | 104h | 52h | P1-P5 |
| 1436 | 1.6.2 | **AI Layer to IE State Proxy (Instrument Engine AI Layer)** | 104.55d | 2008-02-29 | 2008-07-25 |  |  |  | 5.83d |  |  |  | 552h |  | P3 |
| 1437 | 1.6.2.1 | Design Frequency IE Interface | 2.86d | 2008-02-29 | 2008-03-05 | 1435 |  |  | 5.83d | 0d |  | Vishal [70%] | 16h |  |  |
| 1438 | 1.6.2.2 | Implement Frequency IE Interface | 2.86d | 2008-03-05 | 2008-03-10 | 1437 |  |  | 5.83d | 0d |  | Vishal [70%] | 16h |  |  |
| 1439 | 1.6.2.3 | Nunit Frequency IE Interface | 1.43d | 2008-03-10 | 2008-03-11 | 1438 |  |  | 5.83d | 0d |  | Vishal [70%] | 8h |  |  |
| 1440 | 1.6.2.4 | Design Channel IE Interface | 7.14d | 2008-03-11 | 2008-03-20 | 1439 |  |  | 5.83d | 0d |  | Vishal [70%] | 40h |  |  |
| 1441 | 1.6.2.5 | Implement Channel IE Interface | 7.14d | 2008-03-20 | 2008-04-01 | 1440 |  |  | 5.83d | 0d |  | Vishal [70%] | 40h |  |  |
| 1442 | 1.6.2.6 | Nunit Channel IE Interface | 4.29d | 2008-04-02 | 2008-04-08 | 1441 |  |  | 5.83d | 0d |  | Vishal [70%] | 24h |  |  |
| 1443 | 1.6.2.7 | Design Trigger IE Interface | 7.14d | 2008-04-08 | 2008-04-21 | 1442 |  |  | 5.83d | 0d |  | Vishal [70%] | 40h |  |  |
| 1444 | 1.6.2.8 | Implement Trigger IE Interface | 7.14d | 2008-04-21 | 2008-04-30 | 1443 |  |  | 5.83d | 0d |  | Vishal [70%] | 40h |  |  |
| 1445 | 1.6.2.9 | Nunit Trigger IE Interface | 4.29d | 2008-04-30 | 2008-05-07 | 1444 |  |  | 5.83d | 0d |  | Vishal [70%] | 24h |  |  |
| 1446 | 1.6.2.10 | Design Source IE Interface | 7.69d | 2008-05-07 | 2008-05-19 | 1445 |  |  | 5.83d | 0d |  | 2ETW [65%] | 40h |  |  |
| 1447 | 1.6.2.11 | Implement Source IE Interface | 7.69d | 2008-05-19 | 2008-05-29 | 1446 |  |  | 5.83d | 0d |  | 2ETW [65%] | 40h |  |  |
| 1448 | 1.6.2.12 | Nunit Source IE Interface | 4.62d | 2008-05-29 | 2008-06-04 | 1447 |  |  | 5.83d | 0d |  | 2ETW [65%] | 24h |  |  |
| 1449 | 1.6.2.13 | Design CAL IE Interface | 3.08d | 2008-06-04 | 2008-06-09 | 1448 |  |  | 5.83d | 0d |  | 2ETW [65%] | 16h |  |  |
| 1450 | 1.6.2.14 | Implement CAL IE Interface | 3.08d | 2008-06-09 | 2008-06-13 | 1449 |  |  | 5.83d | 0d |  | 2ETW [65%] | 16h |  |  |
| 1451 | 1.6.2.15 | Nunit CAL IE Interface | 1.54d | 2008-06-13 | 2008-06-16 | 1450 |  |  | 5.83d | 0d |  | 2ETW [65%] | 8h |  |  |
| 1452 | 1.6.2.16 | Design Data Access Free Run Mode IE Interface | 2.86d | 2008-06-16 | 2008-06-19 | 1451 |  |  | 5.83d | 0d |  | Vishal [70%] | 16h |  |  |
| 1453 | 1.6.2.17 | Implement Data Access Free Run Mode IE Interface | 2.86d | 2008-06-19 | 2008-06-24 | 1452 |  |  | 5.83d | 0d |  | Vishal [70%] | 16h |  |  |
| 1454 | 1.6.2.18 | Nunit Data Access Free Run Mode IE Interface | 1.43d | 2008-06-24 | 2008-06-25 | 1453 |  |  | 5.83d | 0d |  | Vishal [70%] | 8h |  |  |
| 1455 | 1.6.2.19 | Design Data Access Trigger Mode IE Interface | 5.71d | 2008-06-25 | 2008-07-03 | 1454 |  |  | 5.83d | 0d |  | Vishal [70%] | 32h |  |  |
| 1456 | 1.6.2.20 | Implement Data Access Trigger Mode IE Interface | 5.71d | 2008-07-03 | 2008-07-11 | 1455 |  |  | 5.83d | 0d |  | Vishal [70%] | 32h |  |  |
| 1457 | 1.6.2.21 | Nunit Data Access Trigger Mode IE Interface | 2.86d | 2008-07-11 | 2008-07-15 | 1456 |  |  | 5.83d | 0d |  | Vishal [70%] | 16h |  |  |
| 1458 | 1.6.2.22 | Design Data Access Octave Mode IE Interface | 2.86d | 2008-07-15 | 2008-07-18 | 1457 |  |  | 5.83d | 0d |  | Vishal [70%] | 16h |  |  |
| 1459 | 1.6.2.23 | Implement Data Access Octave Mode IE Interface | 2.86d | 2008-07-18 | 2008-07-23 | 1458 |  |  | 5.83d | 0d |  | Vishal [70%] | 16h |  |  |
| 1460 | 1.6.2.24 | Nunit Data Access Octave Mode IE Interface | 1.43d | 2008-07-23 | 2008-07-25 | 1459 |  |  | 5.83d | 0d |  | Vishal [70%] | 8h |  |  |

| ID | WBS | Task | Duration | Start | Finish | Predecessors | Total slack | Free slack | Resources | Work | Text1 |
| --- | --- | --- | --- | --- | --- | --- | --- | --- | --- | --- | --- |
| 1461 | 1.6.3 | **Status System** | 21d? | 2008-02-04 | 2008-03-03 |  | 44.62d |  |  | 103.99h | P2 |
| 1462 | 1.6.3.1 | Design Status System Registers | 7.69d? | 2008-02-04 | 2008-02-14 |  | 44.62d | 0d | 2ETW [65%] | 39.99h |  |
| 1463 | 1.6.3.2 | Implement Status System Execution Routines | 7.69d | 2008-02-14 | 2008-02-26 | 1462 | 44.62d | 0d | 2ETW [65%] | 40h |  |
| 1464 | 1.6.3.3 | Nunit Status System | 4.62d | 2008-02-26 | 2008-03-03 | 1463 | 45.62d | 0d | 2ETW [65%] | 24h |  |
| 1465 | 1.6.4 | **SCPI Required Commands** | 108.62d? | 2008-03-03 | 2008-08-01 |  | 43.39d |  |  | 200h | P5 |
| 1466 | 1.6.4.1 | Design SCPI Required Commands | 15.38d? | 2008-03-03 | 2008-03-26 | 1464 | 45.62d | 0d | 2ETW [65%] | 80h |  |
| 1467 | 1.6.4.2 | Implement SCPI Required Commands | 15.38d? | 2008-03-26 | 2008-04-25 | 1466 | 43.62d | 0d | 2ETW [65%] | 80h |  |
| 1468 | 1.6.4.3 | Nunit SCPI Required commands | 7.69d? | 2008-07-22 | 2008-08-01 | 1467 | 43.39d | 0d | 2ETW [65%] | 40h |  |
| 1469 | 1.6.5 | **Analyzer Modes** | 16.71d? | 2008-07-25 | 2008-08-18 |  | 5.83d |  |  | 88h | P5 |
| 1470 | 1.6.5.1 | Design FFT Mode | 4.29d? | 2008-07-25 | 2008-07-31 | 1460 | 5.83d | 0d | Vishal [70%] | 24h |  |
| 1471 | 1.6.5.2 | Design Octave Mode | 4.29d? | 2008-07-31 | 2008-08-06 | 1470 | 5.83d | 0d | Vishal [70%] | 24h |  |
| 1472 | 1.6.5.3 | Design Stepped Sine Mode | 7.14d? | 2008-08-06 | 2008-08-18 | 1471 | 5.83d | 0d | Vishal [70%] | 40h |  |
| 1473 | 1.6.6 | **Frequency Execution Routines** | 4.29d? | 2008-08-18 | 2008-08-25 |  | 5.83d |  |  | 24h | P2 |
| 1474 | 1.6.6.1 | Implement | 2.86d? | 2008-08-18 | 2008-08-21 | 1472 | 5.83d | 0d | Vishal [70%] | 16h |  |
| 1475 | 1.6.6.2 | Nunit | 1.43d? | 2008-08-21 | 2008-08-25 | 1474 | 5.83d | 0d | Vishal [70%] | 8h |  |
| 1476 | 1.6.7 | **Averaging Execution Routines** | 9.57d? | 2008-08-25 | 2008-09-05 |  | 5.83d |  |  | 48h | P3 |
| 1477 | 1.6.7.1 | Implement | 5.71d? | 2008-08-25 | 2008-09-01 | 1475 | 5.83d | 0d | Vishal [70%] | 32h |  |
| 1478 | 1.6.7.2 | Nunit | 2.86d? | 2008-09-01 | 2008-09-05 | 1477 | 5.83d | 0d | Vishal [70%] | 16h |  |
| 1479 | 1.6.8 | **Source Execution Routines** | 16.92d? | 2008-09-05 | 2008-09-30 |  | 5.83d |  |  | 88h | P5 |
| 1480 | 1.6.8.1 | Implement | 12.31d? | 2008-09-05 | 2008-09-23 | 1478 | 5.83d | 0d | 2ETW [65%] | 64h |  |
| 1481 | 1.6.8.2 | Nunit | 4.62d? | 2008-09-23 | 2008-09-30 | 1480 | 5.83d | 0d | 2ETW [65%] | 24h |  |
| 1482 | 1.6.9 | **Channel Execution Routines** | 17.71d? | 2008-09-30 | 2008-10-24 |  | 6.83d |  |  | 88h | P5 |
| 1483 | 1.6.9.1 | Implement | 11.43d? | 2008-09-30 | 2008-10-20 | 1481 | 5.83d | 0d | Vishal [70%] | 64h |  |
| 1484 | 1.6.9.2 | Nunit | 4.29d? | 2008-10-20 | 2008-10-24 | 1483 | 5.83d | 0d | Vishal [70%] | 24h |  |

| ID | WBS | Task | Duration | Start | Finish | Predecessors | Total slack | Free slack | Resources | Work | Text1 |
| --- | --- | --- | --- | --- | --- | --- | --- | --- | --- | --- | --- |
| 1485 | 1.6.10 | **Trigger Execution Routines** | 16.71d? | 2008-10-24 | 2008-11-18 |  | 5.83d |  |  | 88h | P5 |
| 1486 | 1.6.10.1 | Implement | 11.43d? | 2008-10-24 | 2008-11-11 | 1484 | 5.83d | 0d | Vishal [70%] | 64h |  |
| 1487 | 1.6.10.2 | Nunit | 4.29d? | 2008-11-11 | 2008-11-18 | 1486 | 5.83d | 0d | Vishal [70%] | 24h |  |
| 1488 | 1.6.11 | Nunit For TCA Commands | 7.69d? | 2008-08-22 | 2008-09-04 | 1468 | 43.85d | 0d | 2ETW [65%] | 40h | P5 |
| 1489 | 1.6.12 | **Trace Commands** | 47.71d | 2008-11-18 | 2009-01-22 |  | 5.83d |  |  | 256h | P2 |
| 1490 | 1.6.12.1 | Design AI - Analysis Layer Interface | 4.29d | 2008-11-18 | 2008-11-24 | 1487 | 5.83d | 0d | Vishal [70%] | 24h |  |
| 1491 | 1.6.12.2 | Implement AI -- Analysis Layer Interface | 4.29d | 2008-11-24 | 2008-11-28 | 1490 | 5.83d | 0d | Vishal [70%] | 24h |  |
| 1492 | 1.6.12.3 | Design Trace Combinations | 14.29d | 2008-11-28 | 2008-12-19 | 1491 | 5.83d | 0d | Vishal [70%] | 80h |  |
| 1493 | 1.6.12.4 | Implement Trace Combinations | 14.29d | 2008-12-19 | 2009-01-12 | 1492 | 5.83d | 0d | Vishal [70%] | 80h |  |
| 1494 | 1.6.12.5 | Implement Fetch Command | 2.86d | 2009-01-12 | 2009-01-15 | 1493 | 5.83d | 0d | Vishal [70%] | 16h |  |
| 1495 | 1.6.12.6 | Nunit Fetch Commands | 5.71d | 2009-01-15 | 2009-01-22 | 1494 | 5.83d | 0d | Vishal [70%] | 32h |  |
| 1496 | 1.6.13 | **Measurement Value** | 88.57d | 2009-01-22 | 2009-05-27 |  | 5.83d |  |  | 496h | P2-P5 |
| 1497 | 1.6.13.1 | Design MV Combinations (19 Measurements * 2 Days per Measurment) | 54.29d | 2009-01-22 | 2009-04-09 | 1495 | 5.83d | 0d | Vishal [70%] | 304h |  |
| 1498 | 1.6.13.2 | Implement Trace Combinations | 14.29d | 2009-04-09 | 2009-04-29 | 1497 | 5.83d | 0d | Vishal [70%] | 80h |  |
| 1499 | 1.6.13.3 | Implement Fetch Command | 14.29d | 2009-04-29 | 2009-05-19 | 1498 | 5.83d | 0d | Vishal [70%] | 80h |  |
| 1500 | 1.6.13.4 | Nunit Fetch Commands | 5.71d | 2009-05-19 | 2009-05-27 | 1499 | 5.83d |  | Vishal [70%] | 32h |  |
| 1501 | 1.6.14 | **Analysis** | 242.77d | 2008-02-04 | 2009-01-07 |  | 47.08d |  |  | 464h | P7 |
| 1502 | 1.6.14.1 | Design Analysis Combinations (3 Measurements * 3 Days per Measurment) | 16.36d | 2008-02-04 | 2008-02-26 |  | 47.08d | 0d | Gowie [55%] | 72h |  |
| 1503 | 1.6.14.2 | Design Equation Parser | 9.09d | 2008-02-26 | 2008-03-10 | 1502 | 47.08d | 0d | Gowie [55%] | 40h |  |
| 1504 | 1.6.14.3 | Implement Equation Parser | 30.77d | 2008-04-30 | 2008-07-22 | 1503 | 47.08d | 0d | 2ETW [65%] | 160h |  |
| 1505 | 1.6.14.4 | Implement Trace Combinations | 15.38d | 2008-09-04 | 2008-10-22 | 1504 | 47.54d | 0d | 2ETW [65%] | 80h |  |
| 1506 | 1.6.14.5 | Implement Fetch Command | 15.38d | 2008-11-27 | 2008-12-19 | 1505 | 46.04d | 0d | 2ETW [65%] | 80h |  |
| 1507 | 1.6.14.6 | Nunit Fetch Commands | 6.15d | 2008-12-30 | 2009-01-07 | 1506 | 48.16d | 0d | 2ETW [65%] | 32h |  |
| 1508 | 1.6.15 | **Lan Configuration** | 25.62d | 2008-10-22 | 2008-11-27 |  | 41.93d |  |  | 64h | P7 |
| 1509 | 1.6.15.1 | Port from Heroes | 7.69d | 2008-10-22 | 2008-11-04 | 1488 | 43.85d | 0d | 2ETW [65%] | 40h |  |
| 1510 | 1.6.15.2 | Nunit | 4.62d | 2008-11-20 | 2008-11-27 | 1509 | 41.93d | 0d | 2ETW [65%] | 24h |  |

| ID | WBS | Task | Duration | Start | Finish | Predecessors | Total slack | Free slack | Resources | Work | Text1 |
| --- | --- | --- | --- | --- | --- | --- | --- | --- | --- | --- | --- |
| 1511 | 1.6.16 | **Calibration Commands** | 21.54d | 2009-02-26 | 2009-03-27 |  | 48.16d |  |  | 64h | P7 |
| 1512 | 1.6.16.1 | Implement | 7.69d | 2009-02-26 | 2009-03-09 | 1507 | 48.16d | 0d | 2ETW [65%] | 40h |  |
| 1513 | 1.6.16.2 | Nunit | 4.62d | 2009-03-23 | 2009-03-27 | 1512 | 48.47d |  | 2ETW [65%] | 24h |  |
| 1514 | 1.6.17 | **Misc Commands** | 64.62d | 2009-01-07 | 2009-04-08 |  | 40.78d |  |  | 120h | P7 |
| 1515 | 1.6.17.1 | Implement | 15.38d | 2009-01-07 | 2009-01-29 | 1510 | 41.85d | 0d | 2ETW [65%] | 80h |  |
| 1516 | 1.6.17.2 | Nunit | 7.69d | 2009-03-27 | 2009-04-08 | 1515 | 40.78d |  | 2ETW [65%] | 40h |  |
| 1517 | 1.7 | **FFT Mode I.I.** | 283.05d? | 2008-03-27 | 2009-04-28 |  | 26.93d |  |  | 656h |  |
| 1518 | 1.7.1 | Design Frequency GUI | 3.64d? | 2008-03-27 | 2008-04-01 | 49 | 34.54d | 0d | Gowie [55%] | 16h | P2 |
| 1519 | 1.7.2 | Implement Frequency GUI | 4.62d? | 2008-04-01 | 2008-04-08 | 1518 | 34.54d | 0d | 2ETW [65%] | 24h | P2 |
| 1520 | 1.7.3 | Nunit Frequency GUI | 3.08d? | 2008-04-25 | 2008-04-30 | 1519 | 34.54d | 0d | 2ETW [65%] | 16h | P2 |
| 1521 | 1.7.4 | Design Channel GUI | 7.27d? | 2008-04-01 | 2008-04-11 | 1518 | 265.91d | 0d | Gowie [55%] | 32h | P5 |
| 1522 | 1.7.5 | Implement Channel GUI | 9.23d? | 2008-08-01 | 2008-08-14 | 1520 | 34.54d | 0d | 2ETW [65%] | 48h | P5 |
| 1523 | 1.7.6 | Nunit Channel GUI | 4.62d? | 2008-08-14 | 2008-08-22 | 1522 | 35.54d | 0d | 2ETW [65%] | 24h | P5 |
| 1524 | 1.7.7 | Design Trigger GUI | 14.55d? | 2008-04-16 | 2008-05-07 | 1521 | 266.34d | 0d | Gowie [55%] | 64h | P5 |
| 1525 | 1.7.8 | Implement Trigger GUI | 12.31d? | 2008-11-04 | 2008-11-20 | 1523 | 35.54d | 0d | 2ETW [65%] | 64h | P5 |
| 1526 | 1.7.9 | Nunit Trigger GUI | 6.15d? | 2008-12-19 | 2008-12-30 | 1525 | 34.89d | 0d | 2ETW [65%] | 32h | P5 |
| 1527 | 1.7.10 | Design Source GUI | 14.55d? | 2008-05-07 | 2008-05-27 | 1524 | 266.34d |  | Gowie [55%] | 64h | P5 |
| 1528 | 1.7.11 | Implement Source GUI | 12.31d? | 2009-02-09 | 2009-02-26 | 1526 | 34.85d | 0d | 2ETW [65%] | 64h | P5 |
| 1529 | 1.7.12 | Nunit Source GUI | 6.15d? | 2009-04-08 | 2009-04-16 | 1528 | 34.62d |  | 2ETW [65%] | 32h | P5 |
| 1530 | 1.7.13 | Design Cancel / Ok Logic | 7.27d? | 2008-09-12 | 2008-09-23 |  | 181.79d |  | Gowie [55%] | 32h | P2 |
| 1531 | 1.7.14 | Implement Cancel / Ok Logic | 6.15d? | 2009-03-09 | 2009-03-17 |  | 53.08d | 0d | 2ETW [65%] | 32h | P2 |
| 1532 | 1.7.15 | Nunit Cancel / Ok Logic | 3.08d? | 2009-03-17 | 2009-03-23 | 1531 | 53.08d |  | 2ETW [65%] | 16h | P2 |
| 1533 | 1.7.16 | Design Averaging GUI | 3.64d? | 2008-04-11 | 2008-04-16 |  | 28.27d | 0d | Gowie [55%] | 16h | P3 |
| 1534 | 1.7.17 | Implement Averaging GUI | 7.69d? | 2009-01-29 | 2009-02-09 | 1533 | 28.8d | 0d | 2ETW [65%] | 40h | P3 |
| 1535 | 1.7.18 | Nunit Averaging GUI | 7.69d? | 2009-04-16 | 2009-04-28 | 1534 | 26.93d |  | 2ETW [65%] | 40h | P3 |

| ID | WBS | Task | Duration | Start | Finish | Predecessors | Complete | Remaining | Total slack | Free slack | Constraint | Resources | Work | Actual work |
| --- | --- | --- | --- | --- | --- | --- | --- | --- | --- | --- | --- | --- | --- | --- |
| 1536 | 2 | **35670A DataLinker** | 335.51d? | 2008-01-07 A | 2009-04-20 |  | 77% | 78.51d? | 32.65d |  |  |  | 616h | 474h |
| 1537 | 2.1 | **Design** | 23.86d? | 2008-01-07 A | 2008-02-07 A |  | 100% |  |  |  |  |  | 128h | 128h |
| 1538 | 2.1.1 | FrameWork Design | 5.71d? | 2008-01-07 A | 2008-01-14 A |  | 100% |  |  |  | start no earlier than 2008-01-07 | Anurag [70%] | 32h | 32h |
| 1539 | 2.1.2 | Review and Updation | 2.86d? | 2008-01-14 A | 2008-01-18 A | 1538 | 100% |  |  |  |  | Anurag [70%] | 16h | 16h |
| 1540 | 2.1.3 | UI Design | 7.14d? | 2008-01-18 A | 2008-01-29 A | 1539 | 100% |  |  |  |  | Anurag [70%] | 40h | 40h |
| 1541 | 2.1.4 | Review and Updation | 7.14d? | 2008-01-29 A | 2008-02-07 A | 1540 | 100% |  |  |  |  | Anurag [70%] | 40h | 40h |
| 1542 | 2.2 | **Functionality** | 220.22d? | 2008-02-07 A | 2008-12-12 A |  | 100% |  |  |  |  |  | 296h | 296h |
| 1543 | 2.2.1 | Finding 35670 on LAN-GPIB Converter | 4.62d? | 2008-02-07 A | 2008-02-15 A | 1541 | 100% |  |  |  |  | 1ETW [65%] | 24h | 24h |
| 1544 | 2.2.2 | Finding 35670 on USB-GPIB Converter | 4.62d? | 2008-02-15 A | 2008-02-22 A | 1543 | 100% |  |  |  |  | 1ETW [65%] | 24h | 24h |
| 1545 | 2.2.3 | Finding 35670 on GPIB-GPIB | 4.62d? | 2008-02-22 A | 2008-02-28 A | 1544 | 100% |  |  |  |  | 1ETW [65%] | 24h | 24h |
| 1546 | 2.2.4 | Ibasic prog for Dir info transfer in RAM | 6.15d? | 2008-02-28 A | 2008-05-05 A | 1545 | 100% |  |  |  |  | 1ETW [65%] | 32h | 32h |
| 1547 | 2.2.5 | Ibasic prog for Dir info transfer in Floppy Drive | 4.62d? | 2008-05-05 A | 2008-09-09 A | 1546 | 100% |  |  |  |  | 1ETW [65%] | 24h | 24h |
| 1548 | 2.2.6 | Implement Data structure to store Dir Info | 3.08d? | 2008-09-17 A | 2008-09-22 A | 1547 | 100% |  |  |  |  | 1ETW [65%] | 16h | 16h |
| 1549 | 2.2.7 | Parse the ascii file and store the info in datastructure | 1.54d? | 2008-09-22 A | 2008-09-24 A | 1548 | 100% |  |  |  |  | 1ETW [65%] | 8h | 8h |
| 1550 | 2.2.8 | Display data on Screen as per Format | 3.08d? | 2008-09-29 A | 2008-10-03 A | 1549 | 100% |  |  |  |  | 1ETW [65%] | 16h | 16h |
| 1551 | 2.2.9 | Sorting of displayed data | 3.08d? | 2008-10-10 A | 2008-10-15 A | 1550 | 100% |  |  |  |  | 1ETW [65%] | 16h | 16h |
| 1552 | 2.2.10 | Download selected file | 3.08d? | 2008-10-20 A | 2008-10-23 A | 1551 | 100% |  |  |  |  | 1ETW [65%] | 16h | 16h |
| 1553 | 2.2.11 | Download Directory selection dialog box | 1.54d? | 2008-10-23 A | 2008-10-24 A | 1552 | 100% |  |  |  |  | 1ETW [65%] | 8h | 8h |
| 1554 | 2.2.12 | DataViewer integration | 4.62d? | 2008-11-04 A | 2008-11-11 A | 1553 | 100% |  |  |  |  | 1ETW [65%] | 24h | 24h |
| 1555 | 2.2.13 | Uint Testing | 12.31d? | 2008-11-24 A | 2008-12-12 A | 1554 | 100% |  |  |  |  | 1ETW [65%] | 64h | 64h |
| 1556 | 2.3 | System Testing | 15.38d | 2009-01-07 A | 2009-01-29 | 1555 | 25% | 11.54d | 72.05d | 7.69d |  | 1ETW [65%] | 80h | 20h |
| 1557 | 2.4 | **Help** | 12.31d? | 2009-02-09 A | 2009-02-26 |  | 9% | 11.15d? | 63.2d |  |  |  | 64h | 6h |
| 1558 | 2.4.1 | Online Manual help | 4.62d? | 2009-02-09 A | 2009-02-16 | 1556 | 25% | 3.46d? | 63.2d | 0d |  | 1ETW [65%] | 24h | 6h |
| 1559 | 2.4.2 | Link Dialog Help button | 3.08d? | 2009-02-16 | 2009-02-19 | 1558 |  |  | 63.2d | 0d |  | 1ETW [65%] | 16h |  |
| 1560 | 2.4.3 | Getting Started | 4.62d? | 2009-02-19 | 2009-02-26 | 1559 |  |  | 63.2d | 1.84d |  | 1ETW [65%] | 24h |  |
| 1561 | 2.5 | Show Software (Version number etc) | 3.08d? | 2009-03-02 | 2009-03-05 | 1560 |  |  | 63.54d | 26.28d |  | 1ETW [65%] | 16h |  |
| 1562 | 2.6 | Installer/Uninstaller | 6.15d? | 2009-04-10 A | 2009-04-20 | 1561 | 75% | 1.54d? | 32.65d |  |  | 1ETW [65%] | 32h | 24h |

| ID | WBS | Task | Duration | Start | Finish | Complete | Remaining | Total slack | Resources | Work | Actual work | Text1 |
| --- | --- | --- | --- | --- | --- | --- | --- | --- | --- | --- | --- | --- |
| 1564 | 3 | **NEW TASKS ADDED 2/12/08** | 330d? | 2008-02-04 A | 2009-05-08 | 9% | 299.14d? | 18.16d |  | 2384h | 80h |  |
| 1565 | 3.1 | Architecture Development | 25d | 2009-04-06 A | 2009-05-08 A | 100% |  |  | Mike [40%] | 80h | 80h | P1 |
| 1566 | 3.2 | GUI Technical Spec FFT Mode | 20d? | 2008-05-27 | 2008-06-24 |  |  | 246.34d | Gowie [50%] | 80h |  | P1 |
| 1567 | 3.3 | GUI Technical Spec Swept Sine Mode | 10d? | 2008-06-24 | 2008-07-08 |  |  | 236.34d | Gowie [50%] | 40h |  | P5 |
| 1568 | 3.4 | GUI Technical Spec Octave Mode | 10d? | 2008-07-08 | 2008-07-22 |  |  | 226.34d | Gowie [50%] | 40h |  | P6 |
| 1569 | 3.5 | SCPI Technical Spec FFT Mode | 10d? | 2008-07-22 | 2008-08-05 |  |  | 216.34d | Gowie [50%] | 40h |  | P2 |
| 1570 | 3.6 | SCPI Technical Spec Swept Sine Mode | 6d? | 2008-09-23 | 2008-10-01 |  |  | 175.79d | Gowie [50%] | 24h |  | P5 |
| 1571 | 3.7 | SCPI Technical Spec Octave Mode | 6d? | 2008-10-01 | 2008-10-09 |  |  | 169.79d | Gowie [50%] | 24h |  | P6 |
| 1572 | 3.8 | **FFT Mode IE State Proxy Component** | 155.64d? | 2008-08-05 | 2009-03-11 |  |  | 60.7d |  | 440h |  |  |
| 1573 | 3.8.1 | **IE Proxy Collection** | 5.45d? | 2009-02-26 | 2009-03-05 |  |  | 64.34d |  | 24h |  | P2 |
| 1574 | 3.8.1.1 | Design | 1.82d? | 2009-02-26 | 2009-03-02 |  |  | 67.97d | Gowie [55%] | 8h |  |  |
| 1575 | 3.8.1.2 | Implement | 1.82d? | 2009-03-02 | 2009-03-04 |  |  | 66.16d | Gowie [55%] | 8h |  |  |
| 1576 | 3.8.1.3 | Nunit | 1.82d? | 2009-03-04 | 2009-03-05 |  |  | 64.34d | Gowie [55%] | 8h |  |  |
| 1577 | 3.8.2 | **Frequency Proxy** | 109.09d? | 2008-10-09 | 2009-03-11 |  |  | 60.7d |  | 40h |  | P2 |
| 1578 | 3.8.2.1 | Design | 5.45d? | 2008-10-09 | 2008-10-16 |  |  | 164.34d | Gowie [55%] | 24h |  |  |
| 1579 | 3.8.2.2 | Implement | 1.82d? | 2009-03-05 | 2009-03-09 |  |  | 62.52d | Gowie [55%] | 8h |  |  |
| 1580 | 3.8.2.3 | Nunit | 1.82d? | 2009-03-09 | 2009-03-11 |  |  | 60.7d | Gowie [55%] | 8h |  |  |
| 1581 | 3.8.3 | **Arm Proxy** | 10.91d? | 2008-10-16 | 2008-10-31 |  |  | 153.43d |  | 48h |  | P5 |
| 1582 | 3.8.3.1 | Design | 3.64d? | 2008-10-16 | 2008-10-22 |  |  | 160.7d | Gowie [55%] | 16h |  |  |
| 1583 | 3.8.3.2 | Implement | 3.64d? | 2008-10-22 | 2008-10-28 |  |  | 157.07d | Gowie [55%] | 16h |  |  |
| 1584 | 3.8.3.3 | Nunit | 3.64d? | 2008-10-28 | 2008-10-31 |  |  | 153.43d | Gowie [55%] | 16h |  |  |
| 1585 | 3.8.4 | **Trigger Proxy** | 10.91d? | 2008-10-31 | 2008-11-17 |  |  | 142.52d |  | 48h |  | P5 |
| 1586 | 3.8.4.1 | Design | 3.64d? | 2008-10-31 | 2008-11-06 |  |  | 149.79d | Gowie [55%] | 16h |  |  |
| 1587 | 3.8.4.2 | Implement | 3.64d? | 2008-11-06 | 2008-11-11 |  |  | 146.16d | Gowie [55%] | 16h |  |  |
| 1588 | 3.8.4.3 | Nunit | 3.64d? | 2008-11-12 | 2008-11-17 |  |  | 142.52d | Gowie [55%] | 16h |  |  |

| ID | WBS | Task | Duration | Start | Finish | Total slack | Resources | Work | Text1 |
| --- | --- | --- | --- | --- | --- | --- | --- | --- | --- |
| 1589 | 3.8.5 | **Averaging Proxy** | 10.91d? | 2008-11-17 | 2008-12-02 | 131.61d |  | 48h | P3 |
| 1590 | 3.8.5.1 | Design | 3.64d? | 2008-11-17 | 2008-11-21 | 138.88d | Gowie [55%] | 16h |  |
| 1591 | 3.8.5.2 | Implement | 3.64d? | 2008-11-21 | 2008-11-26 | 135.25d | Gowie [55%] | 16h |  |
| 1592 | 3.8.5.3 | Nunit | 3.64d? | 2008-11-26 | 2008-12-02 | 131.61d | Gowie [55%] | 16h |  |
| 1593 | 3.8.6 | **Source Proxy** | 10.91d? | 2008-12-02 | 2008-12-17 | 120.7d |  | 48h | P5 |
| 1594 | 3.8.6.1 | Design | 3.64d? | 2008-12-02 | 2008-12-08 | 127.97d | Gowie [55%] | 16h |  |
| 1595 | 3.8.6.2 | Implement | 3.64d? | 2008-12-08 | 2008-12-11 | 124.34d | Gowie [55%] | 16h |  |
| 1596 | 3.8.6.3 | Nunit | 3.64d? | 2008-12-11 | 2008-12-17 | 120.7d | Gowie [55%] | 16h |  |
| 1597 | 3.8.7 | **Data Pacer** | 14.55d? | 2008-12-17 | 2009-01-07 | 106.16d |  | 64h | P2 |
| 1598 | 3.8.7.1 | Design | 3.64d? | 2008-12-17 | 2008-12-23 | 117.07d | Gowie [55%] | 16h |  |
| 1599 | 3.8.7.2 | Implement Simulation | 3.64d? | 2008-12-23 | 2008-12-26 | 113.43d | Gowie [55%] | 16h |  |
| 1600 | 3.8.7.3 | Implement | 3.64d? | 2008-12-26 | 2009-01-01 | 109.79d | Gowie [55%] | 16h |  |
| 1601 | 3.8.7.4 | Nunit | 3.64d? | 2009-01-01 | 2009-01-07 | 106.16d | Gowie [55%] | 16h |  |
| 1602 | 3.8.8 | **Instrument Utilities Proxy (Cal, Self Test, Abort)** | 27.27d? | 2008-08-05 | 2008-09-12 | 189.07d |  | 120h | P5 or P7? |
| 1603 | 3.8.8.1 | Design | 9.09d? | 2008-08-05 | 2008-08-18 | 207.25d | Gowie [55%] | 40h |  |
| 1604 | 3.8.8.2 | Implement | 9.09d? | 2008-08-18 | 2008-08-29 | 198.16d | Gowie [55%] | 40h |  |
| 1605 | 3.8.8.3 | Nunit | 9.09d? | 2008-08-29 | 2008-09-12 | 189.07d | Gowie [55%] | 40h |  |
| 1606 | 3.9 | **Step Sine Mode IE State Proxy Component** | 65.45d? | 2009-01-07 | 2009-04-08 | 40.7d |  | 168h | P6 |
| 1607 | 3.9.1 | **Arm Proxy** | 49.09d? | 2009-01-07 | 2009-03-17 | 57.06d |  | 32h |  |
| 1608 | 3.9.1.1 | Design | 1.82d? | 2009-03-11 | 2009-03-13 | 58.88d | Gowie [55%] | 8h |  |
| 1609 | 3.9.1.2 | Implement | 1.82d? | 2009-03-13 | 2009-03-17 | 57.06d | Gowie [55%] | 8h |  |
| 1610 | 3.9.1.3 | Nunit | 3.64d? | 2009-01-07 | 2009-01-12 | 102.52d | Gowie [55%] | 16h |  |
| 1611 | 3.9.2 | **Trigger Proxy** | 49.09d? | 2009-01-12 | 2009-03-20 | 53.43d |  | 32h |  |
| 1612 | 3.9.2.1 | Design | 1.82d? | 2009-03-17 | 2009-03-18 | 55.25d | Gowie [55%] | 8h |  |
| 1613 | 3.9.2.2 | Implement | 1.82d? | 2009-03-18 | 2009-03-20 | 53.43d | Gowie [55%] | 8h |  |
| 1614 | 3.9.2.3 | Nunit | 3.64d? | 2009-01-12 | 2009-01-16 | 98.88d | Gowie [55%] | 16h |  |

| ID | WBS | Task | Duration | Start | Finish | Total slack | Resources | Work | Text1 |
| --- | --- | --- | --- | --- | --- | --- | --- | --- | --- |
| 1615 | 3.9.3 | **Averaging Proxy** | 49.09d? | 2009-01-16 | 2009-03-26 | 49.79d |  | 32h |  |
| 1616 | 3.9.3.1 | Design | 1.82d? | 2009-03-20 | 2009-03-24 | 51.61d | Gowie [55%] | 8h |  |
| 1617 | 3.9.3.2 | Implement | 1.82d? | 2009-03-24 | 2009-03-26 | 49.79d | Gowie [55%] | 8h |  |
| 1618 | 3.9.3.3 | Nunit | 3.64d? | 2009-01-16 | 2009-01-21 | 95.25d | Gowie [55%] | 16h |  |
| 1619 | 3.9.4 | **Source Proxy** | 49.09d? | 2009-01-21 | 2009-04-01 | 46.16d |  | 32h |  |
| 1620 | 3.9.4.1 | Design | 1.82d? | 2009-03-26 | 2009-03-30 | 47.97d | Gowie [55%] | 8h |  |
| 1621 | 3.9.4.2 | Implement | 1.82d? | 2009-03-30 | 2009-04-01 | 46.16d | Gowie [55%] | 8h |  |
| 1622 | 3.9.4.3 | Nunit | 3.64d? | 2009-01-21 | 2009-01-27 | 91.61d | Gowie [55%] | 16h |  |
| 1623 | 3.9.5 | **Data Pacer** | 50.91d? | 2009-01-27 | 2009-04-08 | 40.7d |  | 40h |  |
| 1624 | 3.9.5.1 | Design | 1.82d? | 2009-04-01 | 2009-04-02 | 44.34d | Gowie [55%] | 8h |  |
| 1625 | 3.9.5.2 | Implement Simulation | 1.82d? | 2009-04-02 | 2009-04-06 | 42.52d | Gowie [55%] | 8h |  |
| 1626 | 3.9.5.3 | Implement | 1.82d? | 2009-04-06 | 2009-04-08 | 40.7d | Gowie [55%] | 8h |  |
| 1627 | 3.9.5.4 | Nunit | 3.64d? | 2009-01-27 | 2009-02-02 | 87.97d | Gowie [55%] | 16h |  |
| 1628 | 3.10 | **Octave Mode IE State Proxy Component** | 67.27d? | 2009-02-02 | 2009-05-06 | 20.7d |  | 168h | P7 |
| 1629 | 3.10.1 | **Arm Proxy** | 50.91d? | 2009-02-02 | 2009-04-14 | 37.07d |  | 32h |  |
| 1630 | 3.10.1.1 | Design | 1.82d? | 2009-04-08 | 2009-04-10 | 38.88d | Gowie [55%] | 8h |  |
| 1631 | 3.10.1.2 | Implement | 1.82d? | 2009-04-10 | 2009-04-14 | 37.07d | Gowie [55%] | 8h |  |
| 1632 | 3.10.1.3 | Nunit | 3.64d? | 2009-02-02 | 2009-02-05 | 84.34d | Gowie [55%] | 16h |  |
| 1633 | 3.10.2 | **Trigger Proxy** | 50.91d? | 2009-02-05 | 2009-04-17 | 33.43d |  | 32h |  |
| 1634 | 3.10.2.1 | Design | 1.82d? | 2009-04-14 | 2009-04-15 | 35.25d | Gowie [55%] | 8h |  |
| 1635 | 3.10.2.2 | Implement | 1.82d? | 2009-04-15 | 2009-04-17 | 33.43d | Gowie [55%] | 8h |  |
| 1636 | 3.10.2.3 | Nunit | 3.64d? | 2009-02-05 | 2009-02-11 | 80.7d | Gowie [55%] | 16h |  |
| 1637 | 3.10.3 | **Averaging Proxy** | 50.91d? | 2009-02-11 | 2009-04-23 | 29.79d |  | 32h |  |
| 1638 | 3.10.3.1 | Design | 1.82d? | 2009-04-17 | 2009-04-21 | 31.61d | Gowie [55%] | 8h |  |
| 1639 | 3.10.3.2 | Implement | 1.82d? | 2009-04-21 | 2009-04-23 | 29.79d | Gowie [55%] | 8h |  |
| 1640 | 3.10.3.3 | Nunit | 3.64d? | 2009-02-11 | 2009-02-17 | 77.06d | Gowie [55%] | 16h |  |

| ID | WBS | Task | Duration | Start | Finish | Predecessors | Complete | Remaining | Total slack | Free slack | Resources | Work | Actual work | Text1 |
| --- | --- | --- | --- | --- | --- | --- | --- | --- | --- | --- | --- | --- | --- | --- |
| 1641 | 3.10.4 | **Source Proxy** | 50.91d? | 2009-02-17 | 2009-04-29 |  |  |  | 26.16d |  |  | 32h |  |  |
| 1642 | 3.10.4.1 | Design | 1.82d? | 2009-04-23 | 2009-04-27 |  |  |  | 27.97d |  | Gowie [55%] | 8h |  |  |
| 1643 | 3.10.4.2 | Implement | 1.82d? | 2009-04-27 | 2009-04-29 |  |  |  | 26.16d |  | Gowie [55%] | 8h |  |  |
| 1644 | 3.10.4.3 | Nunit | 3.64d? | 2009-02-17 | 2009-02-20 |  |  |  | 73.43d |  | Gowie [55%] | 16h |  |  |
| 1645 | 3.10.5 | **Data Pacer** | 52.73d? | 2009-02-20 | 2009-05-06 |  |  |  | 20.7d |  |  | 40h |  |  |
| 1646 | 3.10.5.1 | Design | 1.82d? | 2009-04-29 | 2009-04-30 |  |  |  | 24.34d |  | Gowie [55%] | 8h |  |  |
| 1647 | 3.10.5.2 | Implement Simulation | 1.82d? | 2009-04-30 | 2009-05-04 |  |  |  | 22.52d |  | Gowie [55%] | 8h |  |  |
| 1648 | 3.10.5.3 | Implement | 1.82d? | 2009-05-04 | 2009-05-06 |  |  |  | 20.7d |  | Gowie [55%] | 8h |  |  |
| 1649 | 3.10.5.4 | Nunit | 3.64d? | 2009-02-20 | 2009-02-26 |  |  |  | 69.79d |  | Gowie [55%] | 16h |  |  |
| 1650 | 3.11 | AI SLIC Step Sine Port (20% of Original FFT work) | 1d? | 2008-02-04 | 2008-02-04 |  |  |  | 347.16d |  |  | 528h |  | P6 |
| 1651 | 3.12 | AI SLIC Octave Port (20% of Original FFT work) | 1d? | 2008-02-04 | 2008-02-04 |  |  |  | 347.16d |  |  | 528h |  | P7 |
| 1652 | 3.13 | Swept Sine Mode I.I. (20% of Original FFT I.I.) | 1d? | 2008-02-04 | 2008-02-04 |  |  |  | 347.16d |  |  | 112h |  | P6 |
| 1653 | 3.14 | Octave Mode I.I. (20% of Original FFT I.I.) | 1d? | 2008-02-04 | 2008-02-04 |  |  |  | 347.16d |  |  | 112h |  | P7 |
| 1654 | 4 | **IE State Proxy** | 184.71d? | 2008-02-04 A | 2008-10-17 |  | 9% | 167.59d? | 163.44d |  |  | 984h | 91.2h |  |
| 1655 | 4.1 | Design Instrument Proxy High Level Design | 4.29d? | 2008-02-04 A | 2008-02-08 A |  | 100% |  |  |  | Vishal [70%] | 24h | 24h |  |
| 1656 | 4.2 | Implement Instrument Proxy Framework into Build | 4.29d? | 2008-02-08 A | 2008-02-15 | 1655 | 80% | 0.86d? | 338.59d |  | Vishal [70%] | 24h | 19.2h |  |
| 1657 | 4.3 | **Design Parameters** | 17.14d? | 2008-02-15 A | 2008-03-11 |  | 50% | 8.57d? | 321.44d |  |  | 96h | 48h |  |
| 1658 | 4.3.1 | Arm | 2.86d? | 2008-02-15 A | 2008-02-20 A | 1656 | 100% |  |  |  | Vishal [70%] | 16h | 16h |  |
| 1659 | 4.3.2 | Average | 1.43d? | 2008-02-20 | 2008-02-21 | 1658 |  |  | 334.3d |  | Vishal [70%] | 8h |  |  |
| 1660 | 4.3.3 | Channel | 2.86d? | 2008-02-21 A | 2008-02-26 A | 1659 | 100% |  |  |  | Vishal [70%] | 16h | 16h |  |
| 1661 | 4.3.4 | Frequency | 1.43d? | 2008-02-26 A | 2008-02-28 A | 1660 | 100% |  |  |  | Vishal [70%] | 8h | 8h |  |
| 1662 | 4.3.5 | Source | 1.43d? | 2008-02-28 | 2008-02-29 | 1661 |  |  | 328.59d |  | Vishal [70%] | 8h |  |  |
| 1663 | 4.3.6 | Trigger | 1.43d? | 2008-02-29 A | 2008-03-03 A | 1662 | 100% |  |  |  | Vishal [70%] | 8h | 8h |  |
| 1664 | 4.3.7 | Error Handling | 1.43d? | 2008-03-03 | 2008-03-05 | 1663 |  |  | 168.44d | 0d | Vishal [70%] | 8h |  |  |
| 1665 | 4.3.8 | Simulation Design | 1.43d? | 2008-03-05 | 2008-03-06 | 1664 |  |  | 168.44d | 0d | Vishal [70%] | 8h |  |  |
| 1666 | 4.3.9 | Instrument Engine Interface Design | 2.86d? | 2008-03-06 | 2008-03-11 | 1665 |  |  | 169.44d | 0d | Vishal [70%] | 16h |  |  |

| ID | WBS | Task | Duration | Start | Finish | Predecessors | Total slack | Free slack | Resources | Work |
| --- | --- | --- | --- | --- | --- | --- | --- | --- | --- | --- |
| 1667 | 4.4 | **Implement/Nunit Test Parameters** | 11d? | 2008-03-11 | 2008-03-26 |  | 168.44d |  |  | 56h |
| 1668 | 4.4.1 | Arm | 2.86d? | 2008-03-11 | 2008-03-14 | 1666 | 169.44d | 0d | Vishal [70%] | 16h |
| 1669 | 4.4.2 | Average | 1.43d? | 2008-03-14 | 2008-03-17 | 1668 | 169.44d | 0d | Vishal [70%] | 8h |
| 1670 | 4.4.3 | Channel | 1.43d? | 2008-03-17 | 2008-03-19 | 1669 | 169.44d | 0d | Vishal [70%] | 8h |
| 1671 | 4.4.4 | Frequency | 1.43d? | 2008-03-19 | 2008-03-20 | 1670 | 169.44d | 0d | Vishal [70%] | 8h |
| 1672 | 4.4.5 | Source | 1.43d? | 2008-03-20 | 2008-03-25 | 1671 | 168.44d | 0d | Vishal [70%] | 8h |
| 1673 | 4.4.6 | Trigger | 1.43d? | 2008-03-25 | 2008-03-26 | 1672 | 168.44d | 0d | Vishal [70%] | 8h |
| 1674 | 4.5 | **Special Testing** | 8.57d? | 2008-03-26 | 2008-04-08 |  | 168.44d |  |  | 48h |
| 1675 | 4.5.1 | Error Handling | 2.86d? | 2008-03-26 | 2008-03-31 | 1673 | 168.44d | 0d | Vishal [70%] | 16h |
| 1676 | 4.5.2 | Develop Thread Safe Tests | 2.86d? | 2008-03-31 | 2008-04-03 | 1675 | 168.44d | 0d | Vishal [70%] | 16h |
| 1677 | 4.5.3 | Develop Parameter Change Callback Tests | 2.86d? | 2008-04-03 | 2008-04-08 | 1676 | 168.44d | 0d | Vishal [70%] | 16h |
| 1678 | 4.6 | **Method Design** | 5.29d? | 2008-04-08 | 2008-04-15 |  | 167.44d |  |  | 24h |
| 1679 | 4.6.1 | Design Run / Stop / Pause / Continue | 2.86d? | 2008-04-08 | 2008-04-11 | 1677 | 168.44d | 0d | Vishal [70%] | 16h |
| 1680 | 4.6.2 | Design Reset | 1.43d? | 2008-04-11 | 2008-04-15 | 1679 | 167.44d | 0d | Vishal [70%] | 8h |
| 1681 | 4.7 | **Simulator** | 19.14d? | 2008-04-15 | 2008-05-12 |  | 167.44d |  |  | 96h |
| 1682 | 4.7.1 | Implement Simulation of Parameters | 2.86d? | 2008-04-15 | 2008-04-21 | 1680 | 167.44d | 0d | Vishal [70%] | 16h |
| 1683 | 4.7.2 | Implement Simulation of Methods | 14.29d? | 2008-04-21 | 2008-05-12 | 1682 | 167.44d | 0d | Vishal [70%] | 80h |
| 1684 | 4.8 | **Design Instrument Engine Calls** | 10d? | 2008-05-12 | 2008-05-26 |  | 167.44d |  |  | 56h |
| 1685 | 4.8.1 | Arm | 1.43d | 2008-05-12 | 2008-05-14 | 1683 | 167.44d | 0d | Vishal [70%] | 8h |
| 1686 | 4.8.2 | Average | 1.43d? | 2008-05-14 | 2008-05-15 | 1685 | 167.44d | 0d | Vishal [70%] | 8h |
| 1687 | 4.8.3 | Channel | 1.43d? | 2008-05-15 | 2008-05-16 | 1686 | 167.44d | 0d | Vishal [70%] | 8h |
| 1688 | 4.8.4 | Frequency | 1.43d? | 2008-05-16 | 2008-05-20 | 1687 | 167.44d | 0d | Vishal [70%] | 8h |
| 1689 | 4.8.5 | Source | 1.43d? | 2008-05-20 | 2008-05-21 | 1688 | 167.44d | 0d | Vishal [70%] | 8h |
| 1690 | 4.8.6 | Trigger | 1.43d? | 2008-05-21 | 2008-05-23 | 1689 | 167.44d | 0d | Vishal [70%] | 8h |
| 1691 | 4.8.7 | Run / Pause / Cont / Stop / Reset | 1.43d? | 2008-05-23 | 2008-05-26 | 1690 | 167.44d | 0d | Vishal [70%] | 8h |

| ID | WBS | Task | Duration | Start | Finish | Predecessors | Total slack | Free slack | Resources | Work |
| --- | --- | --- | --- | --- | --- | --- | --- | --- | --- | --- |
| 1692 | 4.9 | **Implement test Instrument Engine Calls** | 76.29d? | 2008-05-26 | 2008-09-09 |  | 165.44d |  |  | 416h |
| 1693 | 4.9.1 | Arm | 10d? | 2008-05-26 | 2008-06-09 | 1691 | 167.44d | 0d | Vishal [70%] | 56h |
| 1694 | 4.9.2 | Average | 10d? | 2008-06-09 | 2008-06-23 | 1693 | 167.44d | 0d | Vishal [70%] | 56h |
| 1695 | 4.9.3 | Channel | 10d? | 2008-06-23 | 2008-07-07 | 1694 | 167.44d | 0d | Vishal [70%] | 56h |
| 1696 | 4.9.4 | Frequency | 10d? | 2008-07-07 | 2008-07-21 | 1695 | 167.44d | 0d | Vishal [70%] | 56h |
| 1697 | 4.9.5 | Source | 10d? | 2008-07-21 | 2008-08-04 | 1696 | 167.44d | 0d | Vishal [70%] | 56h |
| 1698 | 4.9.6 | Trigger | 10d? | 2008-08-04 | 2008-08-19 | 1697 | 166.44d | 0d | Vishal [70%] | 56h |
| 1699 | 4.9.7 | Run / Pause / Cont / Stop / Reset | 14.29d? | 2008-08-19 | 2008-09-09 | 1698 | 165.44d | 0d | Vishal [70%] | 80h |
| 1700 | 4.10 | **Enabled** | 14.29d? | 2008-09-09 | 2008-09-30 |  | 165.44d |  |  | 80h |
| 1701 | 4.10.1 | Design Enabled | 2.86d? | 2008-09-09 | 2008-09-12 | 1699 | 165.44d | 0d | Vishal [70%] | 16h |
| 1702 | 4.10.2 | Implement Enabled | 5.71d? | 2008-09-12 | 2008-09-22 | 1701 | 165.44d | 0d | Vishal [70%] | 32h |
| 1703 | 4.10.3 | Test Enabled | 5.71d? | 2008-09-22 | 2008-09-30 | 1702 | 165.44d | 0d | Vishal [70%] | 32h |
| 1704 | 4.11 | **Rejection** | 13.43d? | 2008-09-30 | 2008-10-17 |  | 163.44d |  |  | 64h |
| 1705 | 4.11.1 | Design Enabled | 2.86d? | 2008-09-30 | 2008-10-06 | 1703 | 164.44d | 0d | Vishal [70%] | 16h |
| 1706 | 4.11.2 | Implement Enabled | 2.86d? | 2008-10-06 | 2008-10-08 | 1705 | 164.44d | 0d | Vishal [70%] | 16h |
| 1707 | 4.11.3 | Test Enabled | 5.71d? | 2008-10-08 | 2008-10-17 | 1706 | 163.44d |  | Vishal [70%] | 32h |
