# MirageDEVPlan_Less_Slic tasks_16Jan

Schedule from MS Project, 2008-01-07 to 2009-05-22.

## Calendars

- Standard: Mon-Fri 08:00-12:00, 13:00-17:00; Sat-Sun off.

## Resources

| Resource |
| --- |
| Kapil |
| Himanshu |
| Vishal |
| Mike |
| Anurag |
| Pallavi |
| Ramkumar |
| 1ETW |
| 2ETW |
| 3ETW |
| RKB |
| Gowie |
| ShashiP |

## Schedule

| ID | WBS | Task | Type | Duration | Start | Finish | Predecessors | Total slack | Free slack | Constraint | Resources | Work |
| --- | --- | --- | --- | --- | --- | --- | --- | --- | --- | --- | --- | --- |
| 1 | 1 | **Mirage SW DEV** |  | 339.14d? | 2008-02-04 | 2009-05-22 |  | 0d |  |  |  | 16383h |
| 2 | 1.1 | **Phases** |  | 1d? | 2008-02-04 | 2008-02-04 |  | 338.14d |  |  |  |  |
| 3 | 1.1.1 | Phase 1 (Design and Initial Creation) | milestone | 1d? | 2008-02-04 | 2008-02-04 |  | 338.14d |  |  |  |  |
| 4 | 1.1.2 | Phase 2 (FFT & THD) |  | 1d? | 2008-02-04 | 2008-02-04 |  | 338.14d |  |  |  |  |
| 5 | 1.1.3 | Phase 3 (Remote/Local/Averaging) |  | 1d? | 2008-02-04 | 2008-02-04 |  | 338.14d |  |  |  |  |
| 6 | 1.1.4 | Phase 4 (Partial FFT Mode Simualte IE) |  | 1d? | 2008-02-04 | 2008-02-04 |  | 338.14d |  |  |  |  |
| 7 | 1.1.5 | Phase 5 (Full FFT w/o System & Analysis, Green screen with HW) |  | 1d? | 2008-02-04 | 2008-02-04 |  | 338.14d |  |  |  |  |
| 8 | 1.1.6 | Phase 6 (Full Stepped Sin Mode with System Hardkey) |  | 1d? | 2008-02-04 | 2008-02-04 |  | 338.14d |  |  |  |  |
| 9 | 1.1.7 | Phase 7 (Full Octave with Analysis Hardkey) |  | 1d? | 2008-02-04 | 2008-02-04 |  | 338.14d |  |  |  |  |
| 10 | 1.1.8 | Phase 8 (Learning Products) |  | 1d? | 2008-02-04 | 2008-02-04 |  | 338.14d |  |  |  |  |
| 11 | 1.1.9 | Phase 9 HQ |  | 1d? | 2008-02-04 | 2008-02-04 |  | 338.14d |  |  |  |  |
| 12 | 1.1.10 | Phase 10 SQ |  | 1d? | 2008-02-04 | 2008-02-04 |  | 338.14d |  |  |  |  |
| 13 | 1.1.11 | Phase 11 Ship |  | 1d? | 2008-02-04 | 2008-02-04 |  | 338.14d |  |  |  |  |
| 14 | 1.2 | **Process Infrastructure** |  | 292d? | 2008-02-04 | 2009-03-18 |  | 35d |  |  |  | 128h |
| 15 | 1.2.1 | **SCM ( Source management)** |  | 5.29d? | 2008-04-17 | 2008-04-25 |  | 48.14d |  |  |  | 24h |
| 16 | 1.2.1.1 | Defining the Folder heriarchy for source code |  | 1.43d? | 2008-04-17 | 2008-04-22 |  | 48.14d | 0d | start no earlier than 2008-02-04 | RKB [70%] | 8h |
| 17 | 1.2.1.2 | TFS Set up ( Server & Client set up) |  | 2.86d? | 2008-04-22 | 2008-04-25 | 16 | 48.14d | 0d |  | RKB [70%] | 16h |
| 18 | 1.2.2 | **Development guidelines** |  | 4d? | 2008-02-04 | 2008-02-07 |  | 35d |  |  |  | 16h |
| 19 | 1.2.2.1 | Coding standard ( C++, C#) |  | 2d? | 2008-02-04 | 2008-02-05 |  | 35d | 0d | start no earlier than 2008-02-04 | Mike [50%] | 8h |
| 20 | 1.2.2.2 | Code Review , Unit Test case review guidelines |  | 2d? | 2008-02-06 | 2008-02-07 | 19 | 35d | 0d |  | Mike [50%] | 8h |
| 21 | 1.2.3 | **Skelton projects for each components** |  | 233d | 2008-04-25 | 2009-03-18 |  | 47.14d |  |  |  | 16h |
| 22 | 1.2.3.1 | GUI, AML, ML |  | 1.43d | 2008-04-25 | 2009-03-11 | 17 | 47.14d | 0d |  | RKB [70%] | 8h |
| 23 | 1.2.3.2 | Instrument interface, AI |  | 1.43d | 2009-03-16 | 2009-03-18 | 22 | 47.14d |  |  | RKB [70%] | 8h |
| 24 | 1.2.4 | **Platform Builder Image** |  | 13.86d? | 2008-02-07 | 2008-02-27 |  | 72.28d |  |  |  | 72h |
| 25 | 1.2.4.1 | Identifying the components which are to be added |  | 2.86d? | 2008-02-07 | 2008-02-13 | 1674 | 72.28d | 0d |  | Anurag [70%] | 16h |
| 26 | 1.2.4.2 | Creating NK.bin |  | 1.43d? | 2008-02-13 | 2008-02-15 | 25 | 72.28d | 0d |  | Anurag [70%] | 8h |
| 27 | 1.2.4.3 | Checking presence and working of all components |  | 1.43d? | 2008-02-15 | 2008-02-18 | 26 | 72.28d | 0d |  | Anurag [70%] | 8h |
| 28 | 1.2.4.4 | Automation: Pushing this Image in the box |  | 2.86d? | 2008-02-18 | 2008-02-21 | 27 | 72.28d | 0d |  | Anurag [70%] | 16h |
| 29 | 1.2.4.5 | Auto Installation of this Image in the box |  | 2.86d? | 2008-02-21 | 2008-02-26 | 28 | 72.28d | 0d |  | Anurag [70%] | 16h |
| 30 | 1.2.4.6 | Integrating it with Trace Control & Registry settings |  | 1.43d? | 2008-02-26 | 2008-02-27 | 29 | 72.28d | 0d |  | Anurag [70%] | 8h |

| ID | WBS | Task | Duration | Start | Finish | Predecessors | Total slack | Free slack | Resources | Work |
| --- | --- | --- | --- | --- | --- | --- | --- | --- | --- | --- |
| 31 | 1.3 | **Front Panel Tasks** | 302.01d? | 2008-02-04 | 2009-04-01 |  | 37.13d |  |  | 4827.43h |
| 32 | 1.3.1 | **Error & Debug Information** | 12.43d? | 2008-02-04 | 2008-02-20 |  | 52d |  |  | 64h |
| 33 | 1.3.1.1 | Design/Define common interface for Accessing Error Log system | 2.86d? | 2008-02-04 | 2008-02-06 |  | 52d | 0d | RKB [70%] | 16h |
| 34 | 1.3.1.2 | Implement Common Error Log system | 5.71d? | 2008-02-06 | 2008-02-15 | 33 | 52d | 0d | RKB [70%] | 32h |
| 35 | 1.3.1.3 | Unit Testing & Code Review | 2.86d? | 2008-02-15 | 2008-02-20 | 34 | 52d | 0d | RKB [70%] | 16h |
| 36 | 1.3.2 | **Define interface for All Major Component** | 22.43d? | 2008-02-04 | 2008-03-05 |  | 65.43d |  |  | 112h |
| 37 | 1.3.2.1 | AML Interface | 5d? | 2008-02-20 | 2008-02-27 | 35 | 53d | 0d | RKB [70%] | 28h |
| 38 | 1.3.2.2 | Instrument Interface | 6.36d? | 2008-02-04 | 2008-02-12 |  | 100.4d | 0d | Gowie [55%] | 28h |
| 39 | 1.3.2.3 | AutoMation interface | 6.36d? | 2008-02-12 | 2008-02-20 | 38 | 100.4d | 0d | Gowie [55%] | 28h |
| 40 | 1.3.2.4 | File Formatting Component | 5d? | 2008-02-27 | 2008-03-05 | 37 | 53d | 0d | RKB [70%] | 28h |
| 41 | 1.3.3 | **Define interface IGUIHardKey** | 10.23d? | 2008-02-04 | 2008-02-18 |  | 46.83d |  |  | 48h |
| 42 | 1.3.3.1 | Design, Review & Update | 3.08d? | 2008-02-04 | 2008-02-07 |  | 46.83d | 0d | Pallavi [65%] | 16h |
| 43 | 1.3.3.2 | Implementation | 6.15d? | 2008-02-07 | 2008-02-18 | 42 | 46.83d | 0d | Pallavi [65%] | 32h |
| 44 | 1.3.4 | **FP Events Flow Mechanism** | 17.69d? | 2008-02-18 | 2008-03-12 |  | 47.83d |  |  | 92h |
| 45 | 1.3.4.1 | Define all FP events | 3.08d? | 2008-02-18 | 2008-02-21 | 43 | 47.83d | 0d | Pallavi [65%] | 16h |
| 46 | 1.3.4.2 | Implement EventProcessor | 3.08d? | 2008-02-21 | 2008-02-26 | 45 | 47.83d | 0d | Pallavi [65%] | 16h |
| 47 | 1.3.4.3 | Implement Event Dispatcher | 3.08d? | 2008-02-26 | 2008-02-29 | 46 | 48.83d | 0d | Pallavi [65%] | 16h |
| 48 | 1.3.4.4 | Implement Basic Event Target | 3.08d? | 2008-02-29 | 2008-03-05 | 47 | 48.83d | 0d | Pallavi [65%] | 16h |
| 49 | 1.3.4.5 | Implement change in Target Priority | 3.08d? | 2008-03-05 | 2008-03-10 | 48 | 48.83d | 0d | Pallavi [65%] | 16h |
| 50 | 1.3.4.6 | Code Review | 2.31d | 2008-03-10 | 2008-03-12 | 49 | 48.83d | 0d | Pallavi [65%] | 12h |
| 51 | 1.3.5 | **Start/Shut down activity** | 10d? | 2008-02-27 | 2008-03-12 |  | 72.28d |  |  | 56h |
| 52 | 1.3.5.1 | Design Start/Shut down framework | 2.86d? | 2008-02-27 | 2008-03-03 | 30 | 72.28d | 0d | Anurag [70%] | 16h |
| 53 | 1.3.5.2 | Implementation & Unit testing | 5.71d? | 2008-03-03 | 2008-03-11 | 52 | 72.28d | 0d | Anurag [70%] | 32h |
| 54 | 1.3.5.3 | Code Review/ Unit test case review/Design screen/ Screen usability reviews with Jan Ryles | 1.43d | 2008-03-11 | 2008-03-12 | 53 | 72.28d | 0d | Anurag [70%] | 8h |

| ID | WBS | Task | Duration | Start | Finish | Predecessors | Total slack | Free slack | Resources | Work |
| --- | --- | --- | --- | --- | --- | --- | --- | --- | --- | --- |
| 55 | 1.3.6 | **Splash Screen** | 12.43d? | 2008-03-12 | 2008-03-31 |  | 71.28d |  |  | 64h |
| 56 | 1.3.6.1 | Design framework & splash screen, Review with Jan Ryles | 2.86d? | 2008-03-12 | 2008-03-17 | 54 | 72.28d | 0d | Anurag [70%] | 16h |
| 57 | 1.3.6.2 | Implement Framework | 2.86d? | 2008-03-17 | 2008-03-20 | 56 | 72.28d | 0d | Anurag [70%] | 16h |
| 58 | 1.3.6.3 | Incorporate the Intilization Events to show progress | 1.43d? | 2008-03-20 | 2008-03-24 | 57 | 71.28d | 0d | Anurag [70%] | 8h |
| 59 | 1.3.6.4 | Integrate splash screen with Start Shut down activity | 1.43d? | 2008-03-24 | 2008-03-26 | 58 | 71.28d | 0d | Anurag [70%] | 8h |
| 60 | 1.3.6.5 | Unit test case,Design review/Code review | 2.86d? | 2008-03-26 | 2008-03-31 | 59 | 71.28d | 0d | Anurag [70%] | 16h |
| 61 | 1.3.7 | **Display layout Management** | 18.69d? | 2008-03-12 | 2008-04-08 |  | 47.83d |  |  | 92h |
| 62 | 1.3.7.1 | Design Display Layout | 2.31d? | 2008-03-12 | 2008-03-17 | 50 | 48.83d | 0d | Pallavi [65%] | 12h |
| 63 | 1.3.7.2 | Change Active Display | 3.08d? | 2008-03-17 | 2008-03-20 | 62 | 48.83d | 0d | Pallavi [65%] | 16h |
| 64 | 1.3.7.3 | Configure Layout/Number of Display | 4.62d? | 2008-03-20 | 2008-03-27 | 63 | 47.83d | 0d | Pallavi [65%] | 24h |
| 65 | 1.3.7.4 | Display Traversing | 3.08d? | 2008-03-27 | 2008-04-01 | 64 | 47.83d | 0d | Pallavi [65%] | 16h |
| 66 | 1.3.7.5 | Show/Hide Status & Softkey bar | 1.54d? | 2008-04-01 | 2008-04-03 | 65 | 47.83d | 0d | Pallavi [65%] | 8h |
| 67 | 1.3.7.6 | Full screen Graph Mode | 1.54d? | 2008-04-03 | 2008-04-07 | 66 | 47.83d | 0d | Pallavi [65%] | 8h |
| 68 | 1.3.7.7 | Code Review | 1.54d | 2008-04-07 | 2008-04-08 | 67 | 47.83d | 0d | Pallavi [65%] | 8h |
| 69 | 1.3.8 | **XML Based Menu Tree Framework** | 20.29d? | 2008-03-05 | 2008-04-02 |  | 52d |  |  | 108h |
| 70 | 1.3.8.1 | Design XML schema | 2.14d? | 2008-03-05 | 2008-03-07 | 40 | 53d | 0d | RKB [70%] | 12h |
| 71 | 1.3.8.2 | Desgin SoftKey handling Framework | 2.14d? | 2008-03-07 | 2008-03-11 | 70 | 53d | 0d | RKB [70%] | 12h |
| 72 | 1.3.8.3 | Populate Softkey handler memory objects from XML File | 2.14d? | 2008-03-11 | 2008-03-13 | 71 | 53d | 0d | RKB [70%] | 12h |
| 73 | 1.3.8.4 | Implement Softkey ( 4/7 ) More key Traversing mechansim | 2.14d? | 2008-03-13 | 2008-03-18 | 72 | 53d | 0d | RKB [70%] | 12h |
| 74 | 1.3.8.5 | Implement Back Key functionality | 2.14d? | 2008-03-18 | 2008-03-20 | 73 | 53d | 0d | RKB [70%] | 12h |
| 75 | 1.3.8.6 | Implement Combo Box based Selection Mechansim | 2.14d? | 2008-03-20 | 2008-03-25 | 74 | 52d | 0d | RKB [70%] | 12h |
| 76 | 1.3.8.7 | Implement bi-value based selection ( Show/Hide, AC/DC etc) | 2.14d? | 2008-03-25 | 2008-03-27 | 75 | 52d | 0d | RKB [70%] | 12h |
| 77 | 1.3.8.8 | Unit test case for validating Menu State & Code review | 2.86d? | 2008-03-27 | 2008-04-01 | 76 | 52d | 0d | RKB [70%] | 16h |
| 78 | 1.3.8.9 | Lighten the respected Hard key's | 1.43d? | 2008-04-01 | 2008-04-02 | 77 | 52d | 0d | RKB [70%] | 8h |

| ID | WBS | Task | Duration | Start | Finish | Predecessors | Total slack | Free slack | Resources | Work |
| --- | --- | --- | --- | --- | --- | --- | --- | --- | --- | --- |
| 79 | 1.3.9 | **Screen Capture** | 9.23d? | 2008-07-02 | 2008-07-15 |  | 38.13d |  |  | 48h |
| 80 | 1.3.9.1 | Screen Design | 3.08d? | 2008-07-02 | 2008-07-07 | 1697 | 38.13d | 0d | 1ETW [65%] | 16h |
| 81 | 1.3.9.2 | Supporting JPEG format | 3.08d? | 2008-07-07 | 2008-07-10 | 80 | 38.13d | 0d | 1ETW [65%] | 16h |
| 82 | 1.3.9.3 | Supporting BMP File format | 3.08d? | 2008-07-10 | 2008-07-15 | 81 | 38.13d | 0d | 1ETW [65%] | 16h |
| 83 | 1.3.10 | **Menu Map** | 12.31d? | 2008-07-15 | 2008-07-31 |  | 39.13d |  |  | 64h |
| 84 | 1.3.10.1 | Design screen | 3.08d? | 2008-07-15 | 2008-07-18 | 82 | 39.13d | 0d | 1ETW [65%] | 16h |
| 85 | 1.3.10.2 | Implement Traversing mechanism ( hook with FP events) | 6.15d? | 2008-07-18 | 2008-07-28 | 84 | 39.13d | 0d | 1ETW [65%] | 32h |
| 86 | 1.3.10.3 | Print Menu Map | 3.08d? | 2008-07-28 | 2008-07-31 | 85 | 39.13d | 0d | 1ETW [65%] | 16h |
| 87 | 1.3.11 | **Status Panel** | 9.23d? | 2008-07-31 | 2008-08-14 |  | 39.13d |  |  | 48h |
| 88 | 1.3.11.1 | Design Status Panel layout/ Exposed classes/ Functions | 3.08d? | 2008-07-31 | 2008-08-05 | 86 | 39.13d | 0d | 1ETW [65%] | 16h |
| 89 | 1.3.11.2 | Implementation of status panel | 3.08d? | 2008-08-05 | 2008-08-11 | 88 | 39.13d | 0d | 1ETW [65%] | 16h |
| 90 | 1.3.11.3 | Unit test case | 1.54d? | 2008-08-11 | 2008-08-12 | 89 | 40.13d | 0d | 1ETW [65%] | 8h |
| 91 | 1.3.11.4 | Code reviews/unit test case reviews | 1.54d | 2008-08-12 | 2008-08-14 | 90 | 40.13d | 0d | 1ETW [65%] | 8h |
| 92 | 1.3.12 | **Screen Header Panel** | 11.77d? | 2008-08-14 | 2008-08-29 |  | 40.13d |  |  | 56h |
| 93 | 1.3.12.1 | Design screen header layouts/ Class/ Exposed function | 3.08d? | 2008-08-14 | 2008-08-20 | 91 | 40.13d | 0d | 1ETW [65%] | 16h |
| 94 | 1.3.12.2 | Implementation | 4.62d? | 2008-08-20 | 2008-08-26 | 93 | 40.13d | 0d | 1ETW [65%] | 24h |
| 95 | 1.3.12.3 | Unit test case | 1.54d? | 2008-08-26 | 2008-08-28 | 94 | 40.13d | 0d | 1ETW [65%] | 8h |
| 96 | 1.3.12.4 | Code reviews/unit test case reviews | 1.54d | 2008-08-28 | 2008-08-29 | 95 | 40.13d | 0d | 1ETW [65%] | 8h |
| 97 | 1.3.13 | **Display Error Log** | 21d? | 2008-08-29 | 2008-09-29 |  | 40.13d |  |  | 104h |
| 98 | 1.3.13.1 | Design screen for showing Error Log/ Review with Jan Ryles | 3.08d? | 2008-08-29 | 2008-09-04 | 96 | 40.13d | 0d | 1ETW [65%] | 16h |
| 99 | 1.3.13.2 | Implementation | 4.62d? | 2008-09-04 | 2008-09-11 | 98 | 40.13d | 0d | 1ETW [65%] | 24h |
| 100 | 1.3.13.3 | Save Error Log in different format | 3.08d? | 2008-09-11 | 2008-09-16 | 99 | 40.13d | 0d | 1ETW [65%] | 16h |
| 101 | 1.3.13.4 | Filter Error log | 3.08d? | 2008-09-16 | 2008-09-19 | 100 | 40.13d | 0d | 1ETW [65%] | 16h |
| 102 | 1.3.13.5 | Enable/Show/Clear/Save Debug Error log | 4.62d? | 2008-09-19 | 2008-09-26 | 101 | 40.13d | 0d | 1ETW [65%] | 24h |
| 103 | 1.3.13.6 | Code reviews/unit test case reviews | 1.54d | 2008-09-26 | 2008-09-29 | 102 | 40.13d | 0d | 1ETW [65%] | 8h |

| ID | WBS | Task | Duration | Start | Finish | Predecessors | Total slack | Free slack | Resources | Work |
| --- | --- | --- | --- | --- | --- | --- | --- | --- | --- | --- |
| 104 | 1.3.14 | **Configure Analyzer Type : FFT** | 5d? | 2008-04-02 | 2008-04-09 |  | 52d |  |  | 28h |
| 105 | 1.3.14.1 | Implementation | 3.57d? | 2008-04-02 | 2008-04-08 | 78 | 52d | 0d | RKB [70%] | 20h |
| 106 | 1.3.14.2 | Unit Testing/Code Review | 1.43d? | 2008-04-08 | 2008-04-09 | 105 | 52d | 0d | RKB [70%] | 8h |
| 107 | 1.3.15 | **Configure Analyzer Type: Swept Sine** | 6d? | 2008-04-09 | 2008-04-17 |  | 51d |  |  | 28h |
| 108 | 1.3.15.1 | Implementation | 3.57d? | 2008-04-09 | 2008-04-16 | 106 | 51d | 0d | RKB [70%] | 20h |
| 109 | 1.3.15.2 | Unit Testing/Code Review | 1.43d? | 2008-04-16 | 2008-04-17 | 108 | 51d | 0d | RKB [70%] | 8h |
| 110 | 1.3.16 | **Configure Analyzer Type: Octave** | 6d? | 2008-04-17 | 2008-04-25 |  | 50d |  |  | 28h |
| 111 | 1.3.16.1 | Implementation | 3.57d? | 2008-04-17 | 2008-04-24 | 109 | 50d | 0d | Anurag [70%] | 20h |
| 112 | 1.3.16.2 | Unit Testing/Code Review | 1.43d? | 2008-04-24 | 2008-04-25 | 111 | 50d | 0d | Anurag [70%] | 8h |
| 113 | 1.3.17 | **Configure Analyzer Frequency** | 5.71d? | 2008-03-31 | 2008-04-07 |  | 71.28d |  |  | 32h |
| 114 | 1.3.17.1 | Implementation | 4.29d? | 2008-03-31 | 2008-04-04 | 60, 112 | 71.28d | 0d | Anurag [70%] | 24h |
| 115 | 1.3.17.2 | Unit Testing/Code Review | 1.43d? | 2008-04-04 | 2008-04-07 | 114 | 71.28d | 0d | Anurag [70%] | 8h |
| 116 | 1.3.18 | **Configure Analyzer Channels** | 6d? | 2008-04-07 | 2008-04-15 |  | 70.28d |  |  | 28h |
| 117 | 1.3.18.1 | Implementation | 3.57d? | 2008-04-07 | 2008-04-11 | 115 | 71.28d | 0d | Anurag [70%] | 20h |
| 118 | 1.3.18.2 | Unit Testing/Code Review | 1.43d? | 2008-04-11 | 2008-04-15 | 117 | 70.28d | 0d | Anurag [70%] | 8h |
| 119 | 1.3.19 | **Configure Analyzer Source** | 11d? | 2008-04-15 | 2008-04-30 |  | 69.28d |  |  | 28h |
| 120 | 1.3.19.1 | Implementation | 3.57d? | 2008-04-15 | 2008-04-29 | 118 | 69.28d | 0d | Anurag [70%] | 20h |
| 121 | 1.3.19.2 | Unit Testing/Code Review | 1.43d? | 2008-04-29 | 2008-04-30 | 120 | 69.28d | 0d | Anurag [70%] | 8h |
| 122 | 1.3.20 | **Configure Triggering : Free Run** | 8.15d? | 2008-09-29 | 2008-10-10 |  | 38.13d |  |  | 32h |
| 123 | 1.3.20.1 | Design Screen | 1.54d? | 2008-09-29 | 2008-10-01 | 103, 121 | 40.13d | 0d | 1ETW [65%] | 8h |
| 124 | 1.3.20.2 | Implementation | 3.08d? | 2008-10-01 | 2008-10-07 | 123 | 39.13d | 0d | 1ETW [65%] | 16h |
| 125 | 1.3.20.3 | Code/unit test Review | 1.54d? | 2008-10-07 | 2008-10-10 | 124 | 38.13d | 0d | 1ETW [65%] | 8h |
| 126 | 1.3.21 | **Configure Triggering : External Source** | 7.69d? | 2008-10-10 | 2008-10-21 |  | 38.13d |  |  | 40h |
| 127 | 1.3.21.1 | Design Screen | 1.54d? | 2008-10-10 | 2008-10-13 | 125 | 38.13d | 0d | 1ETW [65%] | 8h |
| 128 | 1.3.21.2 | Implementation | 4.62d? | 2008-10-13 | 2008-10-20 | 127 | 38.13d | 0d | 1ETW [65%] | 24h |
| 129 | 1.3.21.3 | Code/unit test Review | 1.54d? | 2008-10-20 | 2008-10-21 | 128 | 39.13d | 0d | 1ETW [65%] | 8h |

| ID | WBS | Task | Duration | Start | Finish | Predecessors | Total slack | Free slack | Resources | Work |
| --- | --- | --- | --- | --- | --- | --- | --- | --- | --- | --- |
| 130 | 1.3.22 | **Configure Triggering : Internal Source** | 7.15d? | 2008-10-21 | 2008-10-30 |  | 38.13d |  |  | 32h |
| 131 | 1.3.22.1 | Design Screen | 1.54d? | 2008-10-21 | 2008-10-23 | 129 | 39.13d | 0d | 1ETW [65%] | 8h |
| 132 | 1.3.22.2 | Implementation | 3.08d? | 2008-10-23 | 2008-10-29 | 131 | 38.13d | 0d | 1ETW [65%] | 16h |
| 133 | 1.3.22.3 | Code/unit test Review | 1.54d? | 2008-10-29 | 2008-10-30 | 132 | 38.13d | 0d | 1ETW [65%] | 8h |
| 134 | 1.3.23 | **Configure Triggering : Channel** | 6.15d? | 2008-10-30 | 2008-11-10 |  | 38.13d |  |  | 32h |
| 135 | 1.3.23.1 | Design Screen | 1.54d? | 2008-10-30 | 2008-11-03 | 133 | 38.13d | 0d | 1ETW [65%] | 8h |
| 136 | 1.3.23.2 | Implementation | 3.08d? | 2008-11-03 | 2008-11-06 | 135 | 39.13d | 0d | 1ETW [65%] | 16h |
| 137 | 1.3.23.3 | Code/unit test Review | 1.54d? | 2008-11-06 | 2008-11-10 | 136 | 39.13d | 0d | 1ETW [65%] | 8h |
| 138 | 1.3.24 | **Configure ARM : Automatic** | 4.62d? | 2008-11-10 | 2008-11-14 |  | 39.13d |  |  | 24h |
| 139 | 1.3.24.1 | Implementation | 3.08d? | 2008-11-10 | 2008-11-13 | 137 | 39.13d | 0d | 1ETW [65%] | 16h |
| 140 | 1.3.24.2 | Code/unit test Review | 1.54d? | 2008-11-13 | 2008-11-14 | 139 | 39.13d | 0d | 1ETW [65%] | 8h |
| 141 | 1.3.25 | **Configure ARM : Manual** | 4.62d? | 2008-11-14 | 2008-11-21 |  | 39.13d |  |  | 24h |
| 142 | 1.3.25.1 | Implementation | 3.08d? | 2008-11-14 | 2008-11-19 | 140 | 39.13d | 0d | 1ETW [65%] | 16h |
| 143 | 1.3.25.2 | Code/unit test Review | 1.54d? | 2008-11-19 | 2008-11-21 | 142 | 39.13d | 0d | 1ETW [65%] | 8h |
| 144 | 1.3.26 | **Configure ARM : Time Step** | 4.62d? | 2008-11-21 | 2008-11-27 |  | 39.13d |  |  | 24h |
| 145 | 1.3.26.1 | Implementation | 3.08d? | 2008-11-21 | 2008-11-26 | 143 | 39.13d | 0d | 1ETW [65%] | 16h |
| 146 | 1.3.26.2 | Code/unit test Review | 1.54d? | 2008-11-26 | 2008-11-27 | 145 | 39.13d | 0d | 1ETW [65%] | 8h |
| 147 | 1.3.27 | **Configure ARM : RPM Step** | 4.62d? | 2008-11-27 | 2008-12-04 |  | 39.13d |  |  | 24h |
| 148 | 1.3.27.1 | Implementation | 3.08d? | 2008-11-27 | 2008-12-02 | 146 | 39.13d | 0d | 1ETW [65%] | 16h |
| 149 | 1.3.27.2 | Code/unit test Review | 1.54d? | 2008-12-02 | 2008-12-04 | 148 | 39.13d | 0d | 1ETW [65%] | 8h |
| 150 | 1.3.28 | **Start/Pause/Run** | 9.57d? | 2008-04-25 | 2008-05-09 |  | 49d |  |  | 48h |
| 151 | 1.3.28.1 | Design the framework | 2.14d? | 2008-04-25 | 2008-04-29 | 112, 149 | 50d | 0d | RKB [70%] | 12h |
| 152 | 1.3.28.2 | Implementation of Run Behaviour | 2.86d? | 2008-04-29 | 2008-05-05 | 151 | 49d | 0d | RKB [70%] | 16h |
| 153 | 1.3.28.3 | Unit testing and Code Review/ Unit test case review | 2.14d? | 2008-05-05 | 2008-05-07 | 152 | 49d | 0d | RKB [70%] | 12h |
| 154 | 1.3.28.4 | Code Review/ Unit test case review | 1.43d | 2008-05-07 | 2008-05-09 | 153 | 49d | 0d | RKB [70%] | 8h |

| ID | WBS | Task | Duration | Start | Finish | Predecessors | Total slack | Free slack | Resources | Work |
| --- | --- | --- | --- | --- | --- | --- | --- | --- | --- | --- |
| 155 | 1.3.29 | **Averaging** | 7.14d? | 2008-05-09 | 2008-05-20 |  | 49d |  |  | 40h |
| 156 | 1.3.29.1 | Configure different type of Averaging | 2.86d? | 2008-05-09 | 2008-05-14 | 154 | 49d | 0d | RKB [70%] | 16h |
| 157 | 1.3.29.2 | Implement Hooks for Manual Averaging (Accept /Reject) | 4.29d? | 2008-05-14 | 2008-05-20 | 156 | 49d | 0d | RKB [70%] | 24h |
| 158 | 1.3.30 | **Module Integration** | 5.71d? | 2008-05-20 | 2008-05-28 |  | 49d |  |  | 32h |
| 159 | 1.3.30.1 | GUI - Inst Interface | 2.86d? | 2008-05-20 | 2008-05-23 | 157 | 49d | 0d | RKB [70%] | 16h |
| 160 | 1.3.30.2 | GUI - AML | 2.86d? | 2008-05-23 | 2008-05-28 | 159 | 49d | 0d | RKB [70%] | 16h |
| 161 | 1.3.31 | **Configure Measurements: THD** | 17.86d? | 2008-05-28 | 2008-06-23 |  | 49d |  |  | 100h |
| 162 | 1.3.31.1 | Design screen for THD configuration | 2.14d? | 2008-05-28 | 2008-05-30 | 160 | 49d | 0d | RKB [70%] | 12h |
| 163 | 1.3.31.2 | Implement Framework for Temporary Measurement flow | 3.57d? | 2008-05-30 | 2008-06-04 | 162 | 49d | 0d | RKB [70%] | 20h |
| 164 | 1.3.31.3 | Implement screen ( With Live Chart) | 3.57d? | 2008-06-04 | 2008-06-10 | 163 | 49d | 0d | RKB [70%] | 20h |
| 165 | 1.3.31.4 | Hooks the value change on screen with Temporary Measurement flow | 2.14d? | 2008-06-10 | 2008-06-12 | 164 | 50d | 0d | RKB [70%] | 12h |
| 166 | 1.3.31.5 | Display THD Measurement Value on Status bar | 2.14d? | 2008-06-12 | 2008-06-16 | 165 | 50d | 0d | RKB [70%] | 12h |
| 167 | 1.3.31.6 | Unit test case | 2.86d? | 2008-06-16 | 2008-06-19 | 166 | 50d | 0d | RKB [70%] | 16h |
| 168 | 1.3.31.7 | Code Review/ Unit test case review/Design screen/ Screen usability reviews with Jan Ryles | 1.43d | 2008-06-19 | 2008-06-23 | 167 | 50d | 0d | RKB [70%] | 8h |
| 169 | 1.3.32 | **Configure Measurements : THD+n** | 15.08d? | 2008-04-08 | 2008-04-29 |  | 45.83d |  |  | 68h |
| 170 | 1.3.32.1 | Design screen for THD+n configuration | 1.54d? | 2008-04-08 | 2008-04-10 | 68, 67 | 47.83d | 0d | Pallavi [65%] | 8h |
| 171 | 1.3.32.2 | Implement Framework for Temporary Measurement flow | 3.08d? | 2008-04-10 | 2008-04-16 | 170 | 46.83d | 0d | Pallavi [65%] | 16h |
| 172 | 1.3.32.3 | Implement screen ( With Live Chart) | 1.54d? | 2008-04-16 | 2008-04-17 | 171 | 46.83d | 0d | Pallavi [65%] | 8h |
| 173 | 1.3.32.4 | Hooks the value change on screen with Temporary Measurement flow | 1.54d? | 2008-04-17 | 2008-04-22 | 172 | 45.83d | 0d | Pallavi [65%] | 8h |
| 174 | 1.3.32.5 | Display THD+n Measurement Value on Status bar | 2.31d | 2008-04-22 | 2008-04-24 | 173 | 45.83d | 0d | Pallavi [65%] | 12h |
| 175 | 1.3.32.6 | Unit test case | 1.54d? | 2008-04-24 | 2008-04-28 | 174 | 45.83d | 0d | Pallavi [65%] | 8h |
| 176 | 1.3.32.7 | Code Review/ Unit test case review/Design screen/ Screen usability reviews with Jan Ryles | 1.54d | 2008-04-28 | 2008-04-29 | 175 | 45.83d | 0d | Pallavi [65%] | 8h |
| 177 | 1.3.33 | **Configure Measurements : ENOB** | 13.31d? | 2008-04-29 | 2008-05-19 |  | 44.83d |  |  | 64h |
| 178 | 1.3.33.1 | Design screen for ENOB configuration | 1.54d? | 2008-04-29 | 2008-05-02 | 176 | 44.83d | 0d | Pallavi [65%] | 8h |
| 179 | 1.3.33.2 | Implement Framework for Temporary Measurement flow | 2.31d? | 2008-05-02 | 2008-05-06 | 178 | 44.83d | 0d | Pallavi [65%] | 12h |
| 180 | 1.3.33.3 | Implement screen ( With Live Chart) | 1.54d? | 2008-05-06 | 2008-05-08 | 179 | 44.83d | 0d | Pallavi [65%] | 8h |
| 181 | 1.3.33.4 | Hooks the value change on screen with Temporary Measurement flow | 1.54d? | 2008-05-08 | 2008-05-09 | 180 | 44.83d | 0d | Pallavi [65%] | 8h |
| 182 | 1.3.33.5 | Display ENOB Measurement Value on Status bar | 2.31d | 2008-05-09 | 2008-05-13 | 181 | 44.83d | 0d | Pallavi [65%] | 12h |
| 183 | 1.3.33.6 | Unit test case | 1.54d? | 2008-05-13 | 2008-05-15 | 182 | 44.83d | 0d | Pallavi [65%] | 8h |
| 184 | 1.3.33.7 | Code Review/ Unit test case review/Design screen/ Screen usability reviews with Jan Ryles | 1.54d | 2008-05-15 | 2008-05-19 | 183 | 44.83d | 0d | Pallavi [65%] | 8h |

| ID | WBS | Task | Duration | Start | Finish | Predecessors | Total slack | Free slack | Resources | Work |
| --- | --- | --- | --- | --- | --- | --- | --- | --- | --- | --- |
| 185 | 1.3.34 | **Configure Measurements : SNR** | 11.54d? | 2008-05-19 | 2008-06-03 |  | 44.83d |  |  | 60h |
| 186 | 1.3.34.1 | Design screen for SNR configuration | 1.54d? | 2008-05-19 | 2008-05-20 | 184 | 44.83d | 0d | Pallavi [65%] | 8h |
| 187 | 1.3.34.2 | Implement Framework for Temporary Measurement flow | 2.31d? | 2008-05-20 | 2008-05-22 | 186 | 44.83d | 0d | Pallavi [65%] | 12h |
| 188 | 1.3.34.3 | Implement screen ( With Live Chart) | 1.54d? | 2008-05-22 | 2008-05-26 | 187 | 44.83d | 0d | Pallavi [65%] | 8h |
| 189 | 1.3.34.4 | Hooks the value change on screen with Temporary Measurement flow | 1.54d? | 2008-05-26 | 2008-05-27 | 188 | 44.83d | 0d | Pallavi [65%] | 8h |
| 190 | 1.3.34.5 | Display SNR Measurement Value on Status bar | 1.54d | 2008-05-27 | 2008-05-29 | 189 | 44.83d | 0d | Pallavi [65%] | 8h |
| 191 | 1.3.34.6 | Unit test case | 1.54d? | 2008-05-29 | 2008-06-02 | 190 | 44.83d | 0d | Pallavi [65%] | 8h |
| 192 | 1.3.34.7 | Code Review/ Unit test case review/Design screen/ Screen usability reviews with Jan Ryles | 1.54d | 2008-06-02 | 2008-06-03 | 191 | 44.83d | 0d | Pallavi [65%] | 8h |
| 193 | 1.3.35 | **Configure Measurements : SFDR** | 11.54d? | 2008-06-03 | 2008-06-19 |  | 44.83d |  |  | 60h |
| 194 | 1.3.35.1 | Design screen for SFDR configuration | 1.54d? | 2008-06-03 | 2008-06-05 | 192 | 44.83d | 0d | Pallavi [65%] | 8h |
| 195 | 1.3.35.2 | Implement Framework for Temporary Measurement flow | 2.31d? | 2008-06-05 | 2008-06-09 | 194 | 44.83d | 0d | Pallavi [65%] | 12h |
| 196 | 1.3.35.3 | Implement screen ( With Live Chart) | 1.54d? | 2008-06-09 | 2008-06-10 | 195 | 44.83d | 0d | Pallavi [65%] | 8h |
| 197 | 1.3.35.4 | Hooks the value change on screen with Temporary Measurement flow | 1.54d? | 2008-06-10 | 2008-06-12 | 196 | 44.83d | 0d | Pallavi [65%] | 8h |
| 198 | 1.3.35.5 | Display SFDR Measurement Value on Status bar | 1.54d | 2008-06-12 | 2008-06-16 | 197 | 44.83d | 0d | Pallavi [65%] | 8h |
| 199 | 1.3.35.6 | Unit test case | 1.54d? | 2008-06-16 | 2008-06-17 | 198 | 45.83d | 0d | Pallavi [65%] | 8h |
| 200 | 1.3.35.7 | Code Review/ Unit test case review/Design screen/ Screen usability reviews with Jan Ryles | 1.54d | 2008-06-17 | 2008-06-19 | 199 | 45.83d | 0d | Pallavi [65%] | 8h |
| 201 | 1.3.36 | **Configure Measurements : SINAD** | 11.54d? | 2008-06-19 | 2008-07-04 |  | 45.83d |  |  | 60h |
| 202 | 1.3.36.1 | Design screen for SINAD configuration | 1.54d? | 2008-06-19 | 2008-06-20 | 200 | 45.83d | 0d | Pallavi [65%] | 8h |
| 203 | 1.3.36.2 | Implement Framework for Temporary Measurement flow | 2.31d? | 2008-06-20 | 2008-06-24 | 202 | 45.83d | 0d | Pallavi [65%] | 12h |
| 204 | 1.3.36.3 | Implement screen ( With Live Chart) | 1.54d? | 2008-06-24 | 2008-06-26 | 203 | 45.83d | 0d | Pallavi [65%] | 8h |
| 205 | 1.3.36.4 | Hooks the value change on screen with Temporary Measurement flow | 1.54d? | 2008-06-26 | 2008-06-30 | 204 | 45.83d | 0d | Pallavi [65%] | 8h |
| 206 | 1.3.36.5 | Display SINAD Measurement Value on Status bar | 1.54d | 2008-06-30 | 2008-07-01 | 205 | 45.83d | 0d | Pallavi [65%] | 8h |
| 207 | 1.3.36.6 | Unit test case | 1.54d? | 2008-07-01 | 2008-07-03 | 206 | 46.83d | 0d | Pallavi [65%] | 8h |
| 208 | 1.3.36.7 | Code Review/ Unit test case review/Design screen/ Screen usability reviews with Jan Ryles | 1.54d | 2008-07-03 | 2008-07-04 | 207 | 46.83d | 0d | Pallavi [65%] | 8h |

| ID | WBS | Task | Duration | Start | Finish | Predecessors | Total slack | Free slack | Resources | Work |
| --- | --- | --- | --- | --- | --- | --- | --- | --- | --- | --- |
| 209 | 1.3.37 | **Configure Measurements : Harmonic Power Value** | 11.54d? | 2008-07-04 | 2008-07-22 |  | 46.83d |  |  | 60h |
| 210 | 1.3.37.1 | Design screen for Harmonic Power configuration | 1.54d? | 2008-07-04 | 2008-07-08 | 208 | 46.83d | 0d | Pallavi [65%] | 8h |
| 211 | 1.3.37.2 | Implement Framework for Temporary Measurement flow | 2.31d? | 2008-07-08 | 2008-07-10 | 210 | 46.83d | 0d | Pallavi [65%] | 12h |
| 212 | 1.3.37.3 | Implement screen ( With Live Chart) | 1.54d? | 2008-07-10 | 2008-07-14 | 211 | 46.83d | 0d | Pallavi [65%] | 8h |
| 213 | 1.3.37.4 | Hooks the value change on screen with Temporary Measurement flow | 1.54d? | 2008-07-14 | 2008-07-15 | 212 | 46.83d | 0d | Pallavi [65%] | 8h |
| 214 | 1.3.37.5 | Display Harmonic power value Measurement Value on Status bar | 1.54d | 2008-07-15 | 2008-07-17 | 213 | 46.83d | 0d | Pallavi [65%] | 8h |
| 215 | 1.3.37.6 | Unit test case | 1.54d? | 2008-07-17 | 2008-07-18 | 214 | 46.83d | 0d | Pallavi [65%] | 8h |
| 216 | 1.3.37.7 | Code Review/ Unit test case review/Design screen/ Screen usability reviews with Jan Ryles | 1.54d | 2008-07-18 | 2008-07-22 | 215 | 46.83d | 0d | Pallavi [65%] | 8h |
| 217 | 1.3.38 | **Configure Measurements : Side band power** | 11.54d? | 2008-07-22 | 2008-08-06 |  | 46.83d |  |  | 60h |
| 218 | 1.3.38.1 | Design screen for Side band power configuration | 1.54d? | 2008-07-22 | 2008-07-23 | 216 | 46.83d | 0d | Pallavi [65%] | 8h |
| 219 | 1.3.38.2 | Implement Framework for Temporary Measurement flow | 2.31d? | 2008-07-23 | 2008-07-28 | 218 | 46.83d | 0d | Pallavi [65%] | 12h |
| 220 | 1.3.38.3 | Implement screen ( With Live Chart) | 1.54d? | 2008-07-28 | 2008-07-29 | 219 | 46.83d | 0d | Pallavi [65%] | 8h |
| 221 | 1.3.38.4 | Hooks the value change on screen with Temporary Measurement flow | 1.54d? | 2008-07-29 | 2008-07-31 | 220 | 47.83d | 0d | Pallavi [65%] | 8h |
| 222 | 1.3.38.5 | Display side band power Measurement Value on Status bar | 1.54d | 2008-07-31 | 2008-08-01 | 221 | 47.83d | 0d | Pallavi [65%] | 8h |
| 223 | 1.3.38.6 | Unit test case | 1.54d? | 2008-08-01 | 2008-08-05 | 222 | 47.83d | 0d | Pallavi [65%] | 8h |
| 224 | 1.3.38.7 | Code Review/ Unit test case review/Design screen/ Screen usability reviews with Jan Ryles | 1.54d | 2008-08-05 | 2008-08-06 | 223 | 48.83d | 0d | Pallavi [65%] | 8h |
| 225 | 1.3.39 | **Configure Measurements : Band power value** | 12.54d? | 2008-08-06 | 2008-08-25 |  | 48.83d |  |  | 60h |
| 226 | 1.3.39.1 | Design screen for band power configuration | 1.54d? | 2008-08-06 | 2008-08-08 | 224, 168 | 48.83d | 0d | Pallavi [65%] | 8h |
| 227 | 1.3.39.2 | Implement Framework for Temporary Measurement flow | 2.31d? | 2008-08-08 | 2008-08-12 | 226 | 48.83d | 0d | Pallavi [65%] | 12h |
| 228 | 1.3.39.3 | Implement screen ( With Live Chart) | 1.54d? | 2008-08-12 | 2008-08-14 | 227 | 48.83d | 0d | Pallavi [65%] | 8h |
| 229 | 1.3.39.4 | Hooks the value change on screen with Temporary Measurement flow | 1.54d? | 2008-08-14 | 2008-08-18 | 228 | 47.83d | 0d | Pallavi [65%] | 8h |
| 230 | 1.3.39.5 | Display band power Measurement Value on Status bar | 1.54d | 2008-08-18 | 2008-08-20 | 229 | 47.83d | 0d | Pallavi [65%] | 8h |
| 231 | 1.3.39.6 | Unit test case | 1.54d? | 2008-08-20 | 2008-08-21 | 230 | 47.83d | 0d | Pallavi [65%] | 8h |
| 232 | 1.3.39.7 | Code Review/ Unit test case review/Design screen/ Screen usability reviews with Jan Ryles | 1.54d | 2008-08-21 | 2008-08-25 | 231 | 48.83d | 0d | Pallavi [65%] | 8h |

| ID | WBS | Task | Duration | Start | Finish | Predecessors | Total slack | Free slack | Resources | Work |
| --- | --- | --- | --- | --- | --- | --- | --- | --- | --- | --- |
| 233 | 1.3.40 | **Configure Measurements : Gain & Phase margin** | 12.54d? | 2008-08-25 | 2008-09-10 |  | 47.83d |  |  | 60h |
| 234 | 1.3.40.1 | Design screen for band power configuration | 1.54d? | 2008-08-25 | 2008-08-26 | 232, 224 | 48.83d | 0d | Pallavi [65%] | 8h |
| 235 | 1.3.40.2 | Implement Framework for Temporary Measurement flow | 2.31d? | 2008-08-26 | 2008-08-29 | 234 | 48.83d | 0d | Pallavi [65%] | 12h |
| 236 | 1.3.40.3 | Implement screen ( With Live Chart) | 1.54d? | 2008-08-29 | 2008-09-01 | 235 | 48.83d | 0d | Pallavi [65%] | 8h |
| 237 | 1.3.40.4 | Hooks the value change on screen with Temporary Measurement flow | 1.54d? | 2008-09-01 | 2008-09-04 | 236 | 47.83d | 0d | Pallavi [65%] | 8h |
| 238 | 1.3.40.5 | Display band power Measurement Value on Status bar | 1.54d | 2008-09-04 | 2008-09-05 | 237 | 47.83d | 0d | Pallavi [65%] | 8h |
| 239 | 1.3.40.6 | Unit test case | 1.54d? | 2008-09-05 | 2008-09-09 | 238 | 47.83d | 0d | Pallavi [65%] | 8h |
| 240 | 1.3.40.7 | Code Review/ Unit test case review/Design screen/ Screen usability reviews with Jan Ryles | 1.54d | 2008-09-09 | 2008-09-10 | 239 | 47.83d | 0d | Pallavi [65%] | 8h |
| 241 | 1.3.41 | **Configure Measurements : Frequency dumping** | 11.71d? | 2008-04-30 | 2008-05-16 |  | 69.28d |  |  | 60h |
| 242 | 1.3.41.1 | Design screen for Frequency dumping configuration | 1.43d? | 2008-04-30 | 2008-05-05 | 121 | 68.28d | 0d | Anurag [70%] | 8h |
| 243 | 1.3.41.2 | Implement Framework for Temporary Measurement flow | 2.14d? | 2008-05-05 | 2008-05-07 | 242 | 68.28d | 0d | Anurag [70%] | 12h |
| 244 | 1.3.41.3 | Implement screen ( With Live Chart) | 1.43d? | 2008-05-07 | 2008-05-08 | 243 | 68.28d | 0d | Anurag [70%] | 8h |
| 245 | 1.3.41.4 | Hooks the value change on screen with Temporary Measurement flow | 1.43d? | 2008-05-08 | 2008-05-12 | 244 | 68.28d | 0d | Anurag [70%] | 8h |
| 246 | 1.3.41.5 | Display frequency dumping Value on Status bar | 1.43d | 2008-05-12 | 2008-05-13 | 245 | 68.28d | 0d | Anurag [70%] | 8h |
| 247 | 1.3.41.6 | Unit test case | 1.43d? | 2008-05-13 | 2008-05-15 | 246 | 69.28d | 0d | Anurag [70%] | 8h |
| 248 | 1.3.41.7 | Code Review/ Unit test case review/Design screen/ Screen usability reviews with Jan Ryles | 1.43d | 2008-05-15 | 2008-05-16 | 247 | 69.28d | 0d | Anurag [70%] | 8h |
| 249 | 1.3.42 | **Configure Measurements : Delay Time** | 10.77d? | 2008-09-10 | 2008-09-25 |  | 47.83d |  |  | 56h |
| 250 | 1.3.42.1 | Design screen forDelay time configuration | 1.54d? | 2008-09-10 | 2008-09-12 | 240, 232 | 47.83d | 0d | Pallavi [65%] | 8h |
| 251 | 1.3.42.2 | Implement Framework for Temporary Measurement flow | 1.54d? | 2008-09-12 | 2008-09-15 | 250 | 47.83d | 0d | Pallavi [65%] | 8h |
| 252 | 1.3.42.3 | Implement screen ( With Live Chart) | 1.54d? | 2008-09-15 | 2008-09-17 | 251 | 47.83d | 0d | Pallavi [65%] | 8h |
| 253 | 1.3.42.4 | Hooks the value change on screen with Temporary Measurement flow | 1.54d? | 2008-09-17 | 2008-09-18 | 252 | 47.83d | 0d | Pallavi [65%] | 8h |
| 254 | 1.3.42.5 | Display Delay time Value on Status bar | 1.54d | 2008-09-18 | 2008-09-22 | 253 | 47.83d | 0d | Pallavi [65%] | 8h |
| 255 | 1.3.42.6 | Unit test case | 1.54d? | 2008-09-22 | 2008-09-24 | 254 | 47.83d | 0d | Pallavi [65%] | 8h |
| 256 | 1.3.42.7 | Code Review/ Unit test case review/Design screen/ Screen usability reviews with Jan Ryles | 1.54d | 2008-09-24 | 2008-09-25 | 255 | 47.83d | 0d | Pallavi [65%] | 8h |

| ID | WBS | Task | Duration | Start | Finish | Predecessors | Total slack | Free slack | Resources | Work |
| --- | --- | --- | --- | --- | --- | --- | --- | --- | --- | --- |
| 257 | 1.3.43 | **Configure Measurements : Maximum overshoot** | 12.77d? | 2008-09-25 | 2008-10-14 |  | 46.83d |  |  | 56h |
| 258 | 1.3.43.1 | Design screen for maximum overshoot configuration | 1.54d? | 2008-09-25 | 2008-09-29 | 256, 240 | 47.83d | 0d | Pallavi [65%] | 8h |
| 259 | 1.3.43.2 | Implement Framework for Temporary Measurement flow | 1.54d? | 2008-09-29 | 2008-09-30 | 258 | 47.83d | 0d | Pallavi [65%] | 8h |
| 260 | 1.3.43.3 | Implement screen | 1.54d? | 2008-09-30 | 2008-10-03 | 259 | 46.83d | 0d | Pallavi [65%] | 8h |
| 261 | 1.3.43.4 | Hooks the value change on screen with Temporary Measurement flow | 1.54d? | 2008-10-03 | 2008-10-06 | 260 | 46.83d | 0d | Pallavi [65%] | 8h |
| 262 | 1.3.43.5 | Display maximum overshoot Value on Status bar | 1.54d | 2008-10-06 | 2008-10-08 | 261 | 47.83d | 0d | Pallavi [65%] | 8h |
| 263 | 1.3.43.6 | Unit test case | 1.54d? | 2008-10-08 | 2008-10-10 | 262 | 46.83d | 0d | Pallavi [65%] | 8h |
| 264 | 1.3.43.7 | Code Review/ Unit test case review/Design screen/ Screen usability reviews with Jan Ryles | 1.54d | 2008-10-10 | 2008-10-14 | 263 | 46.83d | 0d | Pallavi [65%] | 8h |
| 265 | 1.3.44 | **Configure Measurements : Rise time** | 10d? | 2008-05-16 | 2008-05-30 |  | 69.28d |  |  | 56h |
| 266 | 1.3.44.1 | Design screen for Rise time configuration | 1.43d? | 2008-05-16 | 2008-05-19 | 248 | 69.28d | 0d | Anurag [70%] | 8h |
| 267 | 1.3.44.2 | Implement Framework for Temporary Measurement flow | 1.43d? | 2008-05-19 | 2008-05-21 | 266 | 69.28d | 0d | Anurag [70%] | 8h |
| 268 | 1.3.44.3 | Implement screen | 1.43d? | 2008-05-21 | 2008-05-22 | 267 | 69.28d | 0d | Anurag [70%] | 8h |
| 269 | 1.3.44.4 | Hooks the value change on screen with Temporary Measurement flow | 1.43d? | 2008-05-22 | 2008-05-26 | 268 | 69.28d | 0d | Anurag [70%] | 8h |
| 270 | 1.3.44.5 | Display rise time Value on Status bar | 1.43d | 2008-05-26 | 2008-05-27 | 269 | 69.28d | 0d | Anurag [70%] | 8h |
| 271 | 1.3.44.6 | Unit test case | 1.43d? | 2008-05-27 | 2008-05-29 | 270 | 69.28d | 0d | Anurag [70%] | 8h |
| 272 | 1.3.44.7 | Code Review/ Unit test case review/Design screen/ Screen usability reviews with Jan Ryles | 1.43d | 2008-05-29 | 2008-05-30 | 271 | 70.28d | 0d | Anurag [70%] | 8h |
| 273 | 1.3.45 | **Configure Measurements : Setting time** | 10d | 2008-05-30 | 2008-06-13 |  | 70.28d |  |  | 56h |
| 274 | 1.3.45.1 | Design screen for Setting time configuration | 1.43d | 2008-05-30 | 2008-06-02 | 272, 256 | 70.28d | 0d | Anurag [70%] | 8h |
| 275 | 1.3.45.2 | Implement Framework for Temporary Measurement flow | 1.43d | 2008-06-02 | 2008-06-04 | 274 | 70.28d | 0d | Anurag [70%] | 8h |
| 276 | 1.3.45.3 | Implement screen | 1.43d | 2008-06-04 | 2008-06-05 | 275 | 70.28d | 0d | Anurag [70%] | 8h |
| 277 | 1.3.45.4 | Hooks the value change on screen with Temporary Measurement flow | 1.43d | 2008-06-05 | 2008-06-09 | 276 | 70.28d | 0d | Anurag [70%] | 8h |
| 278 | 1.3.45.5 | Display setting time Value on Status bar | 1.43d | 2008-06-09 | 2008-06-10 | 277 | 70.28d | 0d | Anurag [70%] | 8h |
| 279 | 1.3.45.6 | Unit test case | 1.43d | 2008-06-10 | 2008-06-12 | 278 | 70.28d | 0d | Anurag [70%] | 8h |
| 280 | 1.3.45.7 | Code Review/ Unit test case review/Design screen/ Screen usability reviews with Jan Ryles | 1.43d | 2008-06-12 | 2008-06-13 | 279 | 70.28d | 0d | Anurag [70%] | 8h |

| ID | WBS | Task | Duration | Start | Finish | Predecessors | Total slack | Free slack | Constraint | Resources | Work |
| --- | --- | --- | --- | --- | --- | --- | --- | --- | --- | --- | --- |
| 281 | 1.3.46 | **Configure Measurements : Decay Time** | 10.61d? | 2008-03-03 | 2008-03-17 |  | 95.81d |  |  |  | 59.43h |
| 282 | 1.3.46.1 | Design screen for decay time configuration | 2.04d? | 2008-03-03 | 2008-03-05 |  | 95.81d | 0d | start no earlier than 2008-03-03 | Himanshu [70%] | 11.43h |
| 283 | 1.3.46.2 | Implement Framework for Temporary Measurement flow | 1.43d? | 2008-03-05 | 2008-03-06 | 282 | 95.81d | 0d |  | Himanshu [70%] | 8h |
| 284 | 1.3.46.3 | Implement screen | 1.43d? | 2008-03-06 | 2008-03-07 | 283 | 95.81d | 0d |  | Himanshu [70%] | 8h |
| 285 | 1.3.46.4 | Hooks the value change on screen with Temporary Measurement flow | 1.43d? | 2008-03-07 | 2008-03-11 | 284 | 95.81d | 0d |  | Himanshu [70%] | 8h |
| 286 | 1.3.46.5 | Display decay time Value on Status bar | 1.43d | 2008-03-11 | 2008-03-12 | 285 | 95.81d | 0d |  | Himanshu [70%] | 8h |
| 287 | 1.3.46.6 | Unit test case | 1.43d? | 2008-03-12 | 2008-03-14 | 286 | 95.81d | 0d |  | Himanshu [70%] | 8h |
| 288 | 1.3.46.7 | Code Review/ Unit test case review/Design screen/ Screen usability reviews with Jan Ryles | 1.43d | 2008-03-14 | 2008-03-17 | 287 | 95.81d | 0d |  | Himanshu [70%] | 8h |
| 289 | 1.3.47 | **Configure Measurements : Pulse width** | 11d? | 2008-03-17 | 2008-04-01 |  | 94.81d |  |  |  | 56h |
| 290 | 1.3.47.1 | Design screen for pulse width configuration | 1.43d? | 2008-03-17 | 2008-03-19 | 288 | 95.81d | 0d |  | Himanshu [70%] | 8h |
| 291 | 1.3.47.2 | Implement Framework for Temporary Measurement flow | 1.43d? | 2008-03-19 | 2008-03-20 | 290 | 95.81d | 0d |  | Himanshu [70%] | 8h |
| 292 | 1.3.47.3 | Implement screen | 1.43d? | 2008-03-20 | 2008-03-24 | 291 | 94.81d | 0d |  | Himanshu [70%] | 8h |
| 293 | 1.3.47.4 | Hooks the value change on screen with Temporary Measurement flow | 1.43d? | 2008-03-24 | 2008-03-26 | 292 | 94.81d | 0d |  | Himanshu [70%] | 8h |
| 294 | 1.3.47.5 | Display pulse width Value on Status bar | 1.43d | 2008-03-26 | 2008-03-27 | 293 | 94.81d | 0d |  | Himanshu [70%] | 8h |
| 295 | 1.3.47.6 | Unit test case | 1.43d? | 2008-03-27 | 2008-03-31 | 294 | 94.81d | 0d |  | Himanshu [70%] | 8h |
| 296 | 1.3.47.7 | Code Review/ Unit test case review/Design screen/ Screen usability reviews with Jan Ryles | 1.43d | 2008-03-31 | 2008-04-01 | 295 | 94.81d | 0d |  | Himanshu [70%] | 8h |
| 297 | 1.3.48 | **Configure Measurements : Voltage Max** | 11d? | 2008-04-01 | 2008-04-16 |  | 94.81d |  |  |  | 56h |
| 298 | 1.3.48.1 | Design screen for voltage max configuration | 1.43d? | 2008-04-01 | 2008-04-03 | 296 | 94.81d | 0d |  | Himanshu [70%] | 8h |
| 299 | 1.3.48.2 | Implement Framework for Temporary Measurement flow | 1.43d? | 2008-04-03 | 2008-04-04 | 298 | 94.81d | 0d |  | Himanshu [70%] | 8h |
| 300 | 1.3.48.3 | Implement screen | 1.43d? | 2008-04-04 | 2008-04-07 | 299 | 95.81d | 0d |  | Himanshu [70%] | 8h |
| 301 | 1.3.48.4 | Hooks the value change on screen with Temporary Measurement flow | 1.43d? | 2008-04-07 | 2008-04-09 | 300 | 95.81d | 0d |  | Himanshu [70%] | 8h |
| 302 | 1.3.48.5 | Display voltage max value on Status bar | 1.43d | 2008-04-09 | 2008-04-10 | 301 | 95.81d | 0d |  | Himanshu [70%] | 8h |
| 303 | 1.3.48.6 | Unit test case | 1.43d? | 2008-04-10 | 2008-04-15 | 302 | 94.81d | 0d |  | Himanshu [70%] | 8h |
| 304 | 1.3.48.7 | Code Review/ Unit test case review/Design screen/ Screen usability reviews with Jan Ryles | 1.43d | 2008-04-15 | 2008-04-16 | 303 | 94.81d | 0d |  | Himanshu [70%] | 8h |

| ID | WBS | Task | Duration | Start | Finish | Predecessors | Total slack | Free slack | Resources | Work |
| --- | --- | --- | --- | --- | --- | --- | --- | --- | --- | --- |
| 305 | 1.3.49 | **Configure Measurements : Voltage Min** | 11.77d? | 2008-10-14 | 2008-10-30 |  | 46.83d |  |  | 56h |
| 306 | 1.3.49.1 | Design screen for voltage max configuration | 1.54d? | 2008-10-14 | 2008-10-15 | 264 | 46.83d | 0d | Pallavi [65%] | 8h |
| 307 | 1.3.49.2 | Implement Framework for Temporary Measurement flow | 1.54d? | 2008-10-15 | 2008-10-17 | 306 | 46.83d | 0d | Pallavi [65%] | 8h |
| 308 | 1.3.49.3 | Implement screen | 1.54d? | 2008-10-17 | 2008-10-20 | 307 | 46.83d | 0d | Pallavi [65%] | 8h |
| 309 | 1.3.49.4 | Hooks the value change on screen with Temporary Measurement flow | 1.54d? | 2008-10-20 | 2008-10-22 | 308 | 46.83d | 0d | Pallavi [65%] | 8h |
| 310 | 1.3.49.5 | Display voltage min value on Status bar | 1.54d | 2008-10-22 | 2008-10-24 | 309 | 47.83d | 0d | Pallavi [65%] | 8h |
| 311 | 1.3.49.6 | Unit test case | 1.54d? | 2008-10-24 | 2008-10-27 | 310 | 47.83d | 0d | Pallavi [65%] | 8h |
| 312 | 1.3.49.7 | Code Review/ Unit test case review/Design screen/ Screen usability reviews with Jan Ryles | 1.54d | 2008-10-27 | 2008-10-30 | 311 | 46.83d | 0d | Pallavi [65%] | 8h |
| 313 | 1.3.50 | **Configure Complex Conjugate** | 11.43d? | 2008-06-13 | 2008-06-30 |  | 70.28d |  |  | 64h |
| 314 | 1.3.50.1 | Design screen for complex conjugate configuration | 1.43d? | 2008-06-13 | 2008-06-16 | 280, 272 | 70.28d | 0d | Anurag [70%] | 8h |
| 315 | 1.3.50.2 | Implement Framework for Temporary Measurement flow to display Complex conjugate result | 2.86d? | 2008-06-16 | 2008-06-19 | 314 | 70.28d | 0d | Anurag [70%] | 16h |
| 316 | 1.3.50.3 | Implement screen | 2.14d? | 2008-06-19 | 2008-06-23 | 315 | 70.28d | 0d | Anurag [70%] | 12h |
| 317 | 1.3.50.4 | Hooks the value change on screen with Temporary Measurement flow | 2.14d? | 2008-06-23 | 2008-06-26 | 316 | 70.28d | 0d | Anurag [70%] | 12h |
| 318 | 1.3.50.5 | Unit test case | 1.43d? | 2008-06-26 | 2008-06-27 | 317 | 71.28d | 0d | Anurag [70%] | 8h |
| 319 | 1.3.50.6 | Code Review/ Unit test case review/Design screen/ Screen usability reviews with Jan Ryles | 1.43d | 2008-06-27 | 2008-06-30 | 318 | 71.28d | 0d | Anurag [70%] | 8h |
| 320 | 1.3.51 | **Configure Limit line Analysis** | 11.43d? | 2008-06-23 | 2008-07-08 |  | 50d |  |  | 64h |
| 321 | 1.3.51.1 | Design screen for limit line configuration | 1.43d? | 2008-06-23 | 2008-06-24 | 168, 280 | 50d | 0d | RKB [70%] | 8h |
| 322 | 1.3.51.2 | Implement Framework for Temporary Measurement flow to display Complex conjugate result | 2.86d? | 2008-06-24 | 2008-06-27 | 321 | 50d | 0d | RKB [70%] | 16h |
| 323 | 1.3.51.3 | Implement screen | 2.14d? | 2008-06-27 | 2008-07-01 | 322 | 51d | 0d | RKB [70%] | 12h |
| 324 | 1.3.51.4 | Hooks the value change on screen with Temporary Measurement flow | 2.14d? | 2008-07-01 | 2008-07-03 | 323 | 51d | 0d | RKB [70%] | 12h |
| 325 | 1.3.51.5 | Unit test case | 1.43d? | 2008-07-03 | 2008-07-07 | 324 | 51d | 0d | RKB [70%] | 8h |
| 326 | 1.3.51.6 | Code Review/ Unit test case review/Design screen/ Screen usability reviews with Jan Ryles | 1.43d | 2008-07-07 | 2008-07-08 | 325 | 51d | 0d | RKB [70%] | 8h |
| 327 | 1.3.52 | **Configure Math Analysis** | 12.31d? | 2008-10-30 | 2008-11-17 |  | 46.83d |  |  | 64h |
| 328 | 1.3.52.1 | Design screen for limit line configuration | 1.54d? | 2008-10-30 | 2008-10-31 | 312 | 46.83d | 0d | Pallavi [65%] | 8h |
| 329 | 1.3.52.2 | Implement Framework for Temporary Measurement flow to display Complex conjugate result | 3.08d? | 2008-10-31 | 2008-11-05 | 328 | 46.83d | 0d | Pallavi [65%] | 16h |
| 330 | 1.3.52.3 | Implement screen | 2.31d? | 2008-11-05 | 2008-11-10 | 329 | 46.83d | 0d | Pallavi [65%] | 12h |
| 331 | 1.3.52.4 | Hooks the value change on screen with Temporary Measurement flow | 2.31d? | 2008-11-10 | 2008-11-12 | 330 | 46.83d | 0d | Pallavi [65%] | 12h |
| 332 | 1.3.52.5 | Unit test case | 1.54d? | 2008-11-12 | 2008-11-13 | 331 | 46.83d | 0d | Pallavi [65%] | 8h |
| 333 | 1.3.52.6 | Code Review/ Unit test case review/Design screen/ Screen usability reviews with Jan Ryles | 1.54d | 2008-11-13 | 2008-11-17 | 332 | 46.83d | 0d | Pallavi [65%] | 8h |

| ID | WBS | Task | Duration | Start | Finish | Predecessors | Total slack | Free slack | Resources | Work |
| --- | --- | --- | --- | --- | --- | --- | --- | --- | --- | --- |
| 334 | 1.3.53 | **Local/Remote Mode Implication** | 4.29d? | 2008-07-08 | 2008-07-14 |  | 51d |  |  | 24h |
| 335 | 1.3.53.1 | Configuring all FP components in Local & Remote mode | 2.14d? | 2008-07-08 | 2008-07-10 | 326 | 51d | 0d | RKB [70%] | 12h |
| 336 | 1.3.53.2 | Unit testing | 2.14d? | 2008-07-10 | 2008-07-14 | 335 | 51d | 0d | RKB [70%] | 12h |
| 337 | 1.3.54 | **LAN Configuration** | 10d? | 2008-11-17 | 2008-12-01 |  | 46.83d |  |  | 52h |
| 338 | 1.3.54.1 | Screen design/Implemenattion | 2.31d? | 2008-11-17 | 2008-11-19 | 333 | 46.83d | 0d | Pallavi [65%] | 12h |
| 339 | 1.3.54.2 | Implementation | 4.62d? | 2008-11-19 | 2008-11-26 | 338 | 46.83d | 0d | Pallavi [65%] | 24h |
| 340 | 1.3.54.3 | Unit test case for Changing configuration | 3.08d? | 2008-11-26 | 2008-12-01 | 339 | 46.83d | 0d | Pallavi [65%] | 16h |
| 341 | 1.3.55 | **Display System Information** | 11d? | 2008-12-04 | 2008-12-19 |  | 38.13d |  |  | 52h |
| 342 | 1.3.55.1 | Screen for System information | 2.31d? | 2008-12-04 | 2008-12-08 | 149, 336 | 39.13d | 0d | 1ETW [65%] | 12h |
| 343 | 1.3.55.2 | Implementation | 4.62d? | 2008-12-08 | 2008-12-16 | 342 | 38.13d | 0d | 1ETW [65%] | 24h |
| 344 | 1.3.55.3 | Unit test case | 3.08d? | 2008-12-16 | 2008-12-19 | 343 | 38.13d | 0d | 1ETW [65%] | 16h |
| 345 | 1.3.56 | **Display Hardware information** | 7.15d? | 2008-12-01 | 2008-12-10 |  | 45.83d |  |  | 32h |
| 346 | 1.3.56.1 | Screen design for Hardware information | 1.54d? | 2008-12-01 | 2008-12-02 | 340 | 46.83d | 0d | Pallavi [65%] | 8h |
| 347 | 1.3.56.2 | Implementation | 3.08d? | 2008-12-02 | 2008-12-08 | 346 | 46.83d | 0d | Pallavi [65%] | 16h |
| 348 | 1.3.56.3 | Unit Test cases | 1.54d? | 2008-12-08 | 2008-12-10 | 347 | 45.83d | 0d | Pallavi [65%] | 8h |
| 349 | 1.3.57 | **Web service** | 6.15d? | 2008-12-10 | 2008-12-18 |  | 45.83d |  |  | 32h |
| 350 | 1.3.57.1 | Basix LXI support pages | 3.08d? | 2008-12-10 | 2008-12-15 | 348 | 45.83d | 0d | Pallavi [65%] | 16h |
| 351 | 1.3.57.2 | With in Device Testing | 3.08d? | 2008-12-15 | 2008-12-18 | 350 | 45.83d | 0d | Pallavi [65%] | 16h |
| 352 | 1.3.58 | **Software Licensing** | 20d? | 2008-07-14 | 2008-08-11 |  | 51d |  |  | 112h |
| 353 | 1.3.58.1 | Design screen for Display License | 2.86d? | 2008-07-14 | 2008-07-17 | 336, 344 | 51d | 0d | RKB [70%] | 16h |
| 354 | 1.3.58.2 | Design screen for License Activation | 2.86d? | 2008-07-17 | 2008-07-22 | 353 | 51d | 0d | RKB [70%] | 16h |
| 355 | 1.3.58.3 | Design screen for License De-Activation | 2.86d? | 2008-07-22 | 2008-07-25 | 354 | 51d | 0d | RKB [70%] | 16h |
| 356 | 1.3.58.4 | Implementing Licensing Framework | 4.29d? | 2008-07-25 | 2008-07-31 | 355 | 52d | 0d | RKB [70%] | 24h |
| 357 | 1.3.58.5 | Integrate Mirage Lic framework with CDF Licensing Capability | 4.29d? | 2008-07-31 | 2008-08-06 | 356 | 53d | 0d | RKB [70%] | 24h |
| 358 | 1.3.58.6 | Unit test case for Lic verification (GUI, Measurement, SCPI etc) | 2.86d? | 2008-08-06 | 2008-08-11 | 357 | 53d | 0d | RKB [70%] | 16h |

| ID | WBS | Task | Duration | Start | Finish | Predecessors | Total slack | Free slack | Resources | Work |
| --- | --- | --- | --- | --- | --- | --- | --- | --- | --- | --- |
| 359 | 1.3.59 | **Software Version Display / Install update** | 11.77d? | 2008-12-19 | 2009-01-06 |  | 37.13d |  |  | 56h |
| 360 | 1.3.59.1 | Design screen for displaying Software Version | 1.54d? | 2008-12-19 | 2008-12-23 | 344, 103 | 38.13d | 0d | 1ETW [65%] | 8h |
| 361 | 1.3.59.2 | Design screen for Installing software update | 2.31d? | 2008-12-23 | 2008-12-26 | 360 | 37.13d | 0d | 1ETW [65%] | 12h |
| 362 | 1.3.59.3 | Implemenation ( Display Software version) | 2.31d? | 2008-12-26 | 2008-12-30 | 361 | 37.13d | 0d | 1ETW [65%] | 12h |
| 363 | 1.3.59.4 | Implementation ( Install updates) | 2.31d? | 2008-12-30 | 2009-01-01 | 362 | 37.13d | 0d | 1ETW [65%] | 12h |
| 364 | 1.3.59.5 | Unit test case | 2.31d? | 2009-01-01 | 2009-01-06 | 363 | 37.13d | 0d | 1ETW [65%] | 12h |
| 365 | 1.3.60 | **Self Test** | 1.54d? | 2009-03-20 | 2009-03-23 |  | 43.29d |  |  | 8h |
| 366 | 1.3.60.1 | TBD | 1.54d? | 2009-03-20 | 2009-03-23 | 364 | 43.29d |  | Pallavi [65%] | 8h |
| 367 | 1.3.61 | **Calibration** | 5.62d? | 2008-12-18 | 2008-12-26 |  | 44.83d |  |  | 24h |
| 368 | 1.3.61.1 | Auto Calibration | 3.08d? | 2008-12-18 | 2008-12-23 | 351 | 45.83d | 0d | Pallavi [65%] | 16h |
| 369 | 1.3.61.2 | Calibrate once | 1.54d? | 2008-12-23 | 2008-12-26 | 368 | 44.83d | 0d | Pallavi [65%] | 8h |
| 370 | 1.3.62 | **User Preference** | 12.31d? | 2009-01-06 | 2009-01-22 |  | 37.13d |  |  | 64h |
| 371 | 1.3.62.1 | Warning Beap | 1.54d? | 2009-01-06 | 2009-01-07 | 364 | 37.13d | 0d | 1ETW [65%] | 8h |
| 372 | 1.3.62.2 | Front Panel lock out | 1.54d? | 2009-01-07 | 2009-01-09 | 371 | 37.13d | 0d | 1ETW [65%] | 8h |
| 373 | 1.3.62.3 | Date/Time Format | 1.54d? | 2009-01-09 | 2009-01-12 | 372 | 37.13d | 0d | 1ETW [65%] | 8h |
| 374 | 1.3.62.4 | Color Schema | 3.08d? | 2009-01-12 | 2009-01-15 | 373 | 37.13d | 0d | 1ETW [65%] | 16h |
| 375 | 1.3.62.5 | Power ON & Preset State | 4.62d? | 2009-01-15 | 2009-01-22 | 374 | 37.13d | 0d | 1ETW [65%] | 24h |
| 376 | 1.3.63 | **Help** | 9.23d? | 2009-01-22 | 2009-02-04 |  | 37.13d |  |  | 48h |
| 377 | 1.3.63.1 | Access online manual help & Display version | 2.31d? | 2009-01-22 | 2009-01-26 | 375 | 37.13d | 0d | 1ETW [65%] | 12h |
| 378 | 1.3.63.2 | Installed localized help file | 1.54d? | 2009-01-26 | 2009-01-28 | 377 | 37.13d | 0d | 1ETW [65%] | 8h |
| 379 | 1.3.63.3 | Print Help in different format | 1.54d? | 2009-01-28 | 2009-01-29 | 378 | 37.13d | 0d | 1ETW [65%] | 8h |
| 380 | 1.3.63.4 | Link each help button with its page | 3.85d? | 2009-01-29 | 2009-02-04 | 379 | 37.13d | 0d | 1ETW [65%] | 20h |
| 381 | 1.3.64 | **Charting** | 157.55d? | 2008-06-30 | 2009-02-05 |  | 44.83d |  |  | 752h |
| 382 | 1.3.64.1 | **Linear spectrum Chart** | 18.57d? | 2008-06-30 | 2008-07-25 |  | 71.28d |  |  | 104h |
| 383 | 1.3.64.1.1 | Implement Chart View Object | 3.57d? | 2008-06-30 | 2008-07-04 | 319 | 71.28d | 0d | Anurag [70%] | 20h |
| 384 | 1.3.64.1.2 | Support multiple X-Axis Type ( Lin, Log) | 2.86d? | 2008-07-04 | 2008-07-09 | 383 | 72.28d | 0d | Anurag [70%] | 16h |
| 385 | 1.3.64.1.3 | Support multiple Data point units | 1.43d? | 2008-07-09 | 2008-07-10 | 384 | 72.28d | 0d | Anurag [70%] | 8h |
| 386 | 1.3.64.1.4 | Y-Axis Scaling ( Auto Sclaing) Display only | 1.43d? | 2008-07-10 | 2008-07-14 | 385 | 72.28d | 0d | Anurag [70%] | 8h |
| 387 | 1.3.64.1.5 | Multiple channels support | 2.86d? | 2008-07-14 | 2008-07-17 | 386 | 72.28d | 0d | Anurag [70%] | 16h |
| 388 | 1.3.64.1.6 | Integrate with data push mechnaism | 1.43d? | 2008-07-17 | 2008-07-18 | 387 | 72.28d | 0d | Anurag [70%] | 8h |
| 389 | 1.3.64.1.7 | unit testing | 2.86d? | 2008-07-18 | 2008-07-23 | 388 | 73.28d | 0d | Anurag [70%] | 16h |
| 390 | 1.3.64.1.8 | Code Review/ Unit test case review/Design screen/ Screen usability reviews with Jan Ryles | 2.14d | 2008-07-23 | 2008-07-25 | 389 | 73.28d | 0d | Anurag [70%] | 12h |

| ID | WBS | Task | Duration | Start | Finish | Predecessors | Total slack | Free slack | Resources | Work |
| --- | --- | --- | --- | --- | --- | --- | --- | --- | --- | --- |
| 391 | 1.3.64.2 | **Auto Power spectrum Chart** | 7.14d? | 2008-07-25 | 2008-08-05 |  | 73.28d |  |  | 40h |
| 392 | 1.3.64.2.1 | Implement Chart View Object | 2.14d? | 2008-07-25 | 2008-07-29 | 390 | 73.28d | 0d | Anurag [70%] | 12h |
| 393 | 1.3.64.2.2 | Support multiple X-Axis Type ( Lin, Log) & Y-Axis scaling | 1.43d? | 2008-07-29 | 2008-07-31 | 392 | 73.28d | 0d | Anurag [70%] | 8h |
| 394 | 1.3.64.2.3 | Support multiple Data point units and Multiple channels support\Marker support | 1.43d? | 2008-07-31 | 2008-08-01 | 393 | 73.28d | 0d | Anurag [70%] | 8h |
| 395 | 1.3.64.2.4 | Unit test case | 1.43d? | 2008-08-01 | 2008-08-04 | 394 | 73.28d | 0d | Anurag [70%] | 8h |
| 396 | 1.3.64.2.5 | Code Review/ Unit test case review/Design screen/ Screen usability reviews with Jan Ryles | 0.71d | 2008-08-04 | 2008-08-05 | 395 | 73.28d | 0d | Anurag [70%] | 4h |
| 397 | 1.3.64.3 | **Cross Power spectrum Chart** | 18.86d? | 2008-08-05 | 2008-09-01 |  | 73.28d |  |  | 100h |
| 398 | 1.3.64.3.1 | Implement Chart View Object | 5.71d? | 2008-08-05 | 2008-08-13 | 396 | 73.28d | 0d | Anurag [70%] | 32h |
| 399 | 1.3.64.3.2 | Support multiple X-Axis Type ( Lin, Log) | 1.43d? | 2008-08-13 | 2008-08-14 | 398 | 73.28d | 0d | Anurag [70%] | 8h |
| 400 | 1.3.64.3.3 | Support multiple Data point units | 1.43d? | 2008-08-14 | 2008-08-19 | 399 | 72.28d | 0d | Anurag [70%] | 8h |
| 401 | 1.3.64.3.4 | Y-Axis Scaling ( Auto Sclaing) Display only | 1.43d? | 2008-08-19 | 2008-08-20 | 400 | 72.28d | 0d | Anurag [70%] | 8h |
| 402 | 1.3.64.3.5 | Multiple channels support | 1.43d? | 2008-08-20 | 2008-08-22 | 401 | 72.28d | 0d | Anurag [70%] | 8h |
| 403 | 1.3.64.3.6 | Marker support | 1.43d? | 2008-08-22 | 2008-08-25 | 402 | 72.28d | 0d | Anurag [70%] | 8h |
| 404 | 1.3.64.3.7 | Integrate with data push mechnaism | 1.43d? | 2008-08-25 | 2008-08-26 | 403 | 72.28d | 0d | Anurag [70%] | 8h |
| 405 | 1.3.64.3.8 | unit test case | 2.14d? | 2008-08-26 | 2008-08-29 | 404 | 72.28d | 0d | Anurag [70%] | 12h |
| 406 | 1.3.64.3.9 | Code Review/ Unit test case review/Design screen/ Screen usability reviews with Jan Ryles | 1.43d | 2008-08-29 | 2008-09-01 | 405 | 73.28d | 0d | Anurag [70%] | 8h |
| 407 | 1.3.64.4 | **Frequency Response Chart** | 7.43d? | 2008-09-01 | 2008-09-10 |  | 72.28d |  |  | 36h |
| 408 | 1.3.64.4.1 | Implement Chart View Object | 1.43d? | 2008-09-01 | 2008-09-02 | 406 | 73.28d | 0d | Anurag [70%] | 8h |
| 409 | 1.3.64.4.2 | Support multiple X-Axis Type ( Lin, Log) & Y-Axis scaling | 0.71d? | 2008-09-02 | 2008-09-04 | 408 | 72.28d | 0d | Anurag [70%] | 4h |
| 410 | 1.3.64.4.3 | Support multiple Data point units | 0.71d? | 2008-09-04 | 2008-09-05 | 409 | 72.28d | 0d | Anurag [70%] | 4h |
| 411 | 1.3.64.4.4 | Multiple channels support\Marker support | 1.43d? | 2008-09-05 | 2008-09-08 | 410 | 72.28d | 0d | Anurag [70%] | 8h |
| 412 | 1.3.64.4.5 | Unit test case | 1.43d? | 2008-09-08 | 2008-09-10 | 411 | 72.28d | 0d | Anurag [70%] | 8h |
| 413 | 1.3.64.4.6 | Code Review/ Unit test case review/Design screen/ Screen usability reviews with Jan Ryles | 0.71d? | 2008-09-10 | 2008-09-10 | 412 | 72.28d | 0d | Anurag [70%] | 4h |
| 414 | 1.3.64.5 | **Coherence Chart** | 5d? | 2008-09-10 | 2008-09-17 |  | 72.28d |  |  | 28h |
| 415 | 1.3.64.5.1 | Implement Chart View Object | 0.71d? | 2008-09-10 | 2008-09-11 | 413 | 72.28d | 0d | Anurag [70%] | 4h |
| 416 | 1.3.64.5.2 | Support multiple X-Axis Type ( Lin, Log) & Y-Axis scaling | 0.71d? | 2008-09-11 | 2008-09-12 | 415 | 72.28d | 0d | Anurag [70%] | 4h |
| 417 | 1.3.64.5.3 | Support multiple Data point units | 1.43d? | 2008-09-12 | 2008-09-15 | 416 | 72.28d | 0d | Anurag [70%] | 8h |
| 418 | 1.3.64.5.4 | Multiple channels support\Marker support | 0.71d? | 2008-09-15 | 2008-09-16 | 417 | 73.28d | 0d | Anurag [70%] | 4h |
| 419 | 1.3.64.5.5 | Unit test case | 0.71d? | 2008-09-16 | 2008-09-17 | 418 | 73.28d | 0d | Anurag [70%] | 4h |
| 420 | 1.3.64.5.6 | Code Review/ Unit test case review/Design screen/ Screen usability reviews with Jan Ryles | 0.71d? | 2008-09-17 | 2008-09-17 | 419 | 73.28d | 0d | Anurag [70%] | 4h |

| ID | WBS | Task | Duration | Start | Finish | Predecessors | Total slack | Free slack | Resources | Work |
| --- | --- | --- | --- | --- | --- | --- | --- | --- | --- | --- |
| 421 | 1.3.64.6 | **Orbit Chart** | 7.86d? | 2008-09-17 | 2008-09-29 |  | 73.28d |  |  | 44h |
| 422 | 1.3.64.6.1 | Implement Chart View Object | 2.14d? | 2008-09-17 | 2008-09-22 | 420 | 73.28d | 0d | Anurag [70%] | 12h |
| 423 | 1.3.64.6.2 | Support multiple X-Axis Type ( Lin, Log) & Y-Axis scaling | 1.43d? | 2008-09-22 | 2008-09-23 | 422 | 73.28d | 0d | Anurag [70%] | 8h |
| 424 | 1.3.64.6.3 | Support multiple Data point units | 1.43d? | 2008-09-23 | 2008-09-24 | 423 | 73.28d | 0d | Anurag [70%] | 8h |
| 425 | 1.3.64.6.4 | Multiple channels support\Marker support | 0.71d? | 2008-09-24 | 2008-09-25 | 424 | 73.28d | 0d | Anurag [70%] | 4h |
| 426 | 1.3.64.6.5 | Unit test case | 1.43d? | 2008-09-25 | 2008-09-29 | 425 | 73.28d | 0d | Anurag [70%] | 8h |
| 427 | 1.3.64.6.6 | Code Review/ Unit test case review/Design screen/ Screen usability reviews with Jan Ryles | 0.71d? | 2008-09-29 | 2008-09-29 | 426 | 73.28d | 0d | Anurag [70%] | 4h |
| 428 | 1.3.64.7 | **Scope View Chart** | 10.57d? | 2008-09-29 | 2008-10-14 |  | 71.28d |  |  | 48h |
| 429 | 1.3.64.7.1 | Implement Chart View Object | 2.86d? | 2008-09-29 | 2008-10-03 | 427 | 72.28d | 0d | Anurag [70%] | 16h |
| 430 | 1.3.64.7.2 | Support multiple X-Axis Type ( Lin, Log) & Y-Axis scaling | 1.43d? | 2008-10-03 | 2008-10-07 | 429 | 72.28d | 0d | Anurag [70%] | 8h |
| 431 | 1.3.64.7.3 | Support multiple Data point units | 1.43d? | 2008-10-07 | 2008-10-08 | 430 | 72.28d | 0d | Anurag [70%] | 8h |
| 432 | 1.3.64.7.4 | Multiple channels support\Marker support | 0.71d? | 2008-10-08 | 2008-10-10 | 431 | 71.28d | 0d | Anurag [70%] | 4h |
| 433 | 1.3.64.7.5 | Unit test case | 1.43d? | 2008-10-10 | 2008-10-13 | 432 | 71.28d | 0d | Anurag [70%] | 8h |
| 434 | 1.3.64.7.6 | Code Review/ Unit test case review/Design screen/ Screen usability reviews with Jan Ryles | 0.71d? | 2008-10-13 | 2008-10-14 | 433 | 71.28d | 0d | Anurag [70%] | 4h |
| 435 | 1.3.64.8 | **Normal Variance Chart** | 7.14d? | 2008-10-14 | 2008-10-23 |  | 71.28d |  |  | 40h |
| 436 | 1.3.64.8.1 | Implement Chart View Object | 1.43d? | 2008-10-14 | 2008-10-15 | 434 | 71.28d | 0d | Anurag [70%] | 8h |
| 437 | 1.3.64.8.2 | Support multiple X-Axis Type ( Lin, Log) & Y-Axis scaling | 1.43d? | 2008-10-15 | 2008-10-17 | 436 | 71.28d | 0d | Anurag [70%] | 8h |
| 438 | 1.3.64.8.3 | Support multiple Data point units | 1.43d? | 2008-10-17 | 2008-10-20 | 437 | 71.28d | 0d | Anurag [70%] | 8h |
| 439 | 1.3.64.8.4 | Multiple channels support\Marker support | 0.71d? | 2008-10-20 | 2008-10-21 | 438 | 71.28d | 0d | Anurag [70%] | 4h |
| 440 | 1.3.64.8.5 | Unit test case | 1.43d? | 2008-10-21 | 2008-10-22 | 439 | 71.28d | 0d | Anurag [70%] | 8h |
| 441 | 1.3.64.8.6 | Code Review/ Unit test case review/Design screen/ Screen usability reviews with Jan Ryles | 0.71d? | 2008-10-22 | 2008-10-23 | 440 | 71.28d | 0d | Anurag [70%] | 4h |
| 442 | 1.3.64.9 | **Common Graph Cordinate implementation** | 12.43d? | 2008-10-23 | 2008-11-10 |  | 70.28d |  |  | 64h |
| 443 | 1.3.64.9.1 | Linear Magnitude | 1.43d? | 2008-10-23 | 2008-10-24 | 441 | 71.28d | 0d | Anurag [70%] | 8h |
| 444 | 1.3.64.9.2 | Log Magnitude | 1.43d? | 2008-10-24 | 2008-10-29 | 443 | 70.28d | 0d | Anurag [70%] | 8h |
| 445 | 1.3.64.9.3 | DB Magnitude | 1.43d? | 2008-10-29 | 2008-10-30 | 444 | 70.28d | 0d | Anurag [70%] | 8h |
| 446 | 1.3.64.9.4 | Real Imagainary | 1.43d? | 2008-10-30 | 2008-11-03 | 445 | 70.28d | 0d | Anurag [70%] | 8h |
| 447 | 1.3.64.9.5 | Phase, UnWrapped Phase | 1.43d? | 2008-11-03 | 2008-11-04 | 446 | 70.28d | 0d | Anurag [70%] | 8h |
| 448 | 1.3.64.9.6 | Group Delay | 1.43d? | 2008-11-04 | 2008-11-06 | 447 | 70.28d | 0d | Anurag [70%] | 8h |
| 449 | 1.3.64.9.7 | Polar | 1.43d? | 2008-11-06 | 2008-11-07 | 448 | 70.28d | 0d | Anurag [70%] | 8h |
| 450 | 1.3.64.9.8 | Code Review/ Unit test case review/Design screen/ Screen usability reviews with Jan Ryles | 1.43d? | 2008-11-07 | 2008-11-10 | 449 | 70.28d | 0d | Anurag [70%] | 8h |

| ID | WBS | Task | Duration | Start | Finish | Predecessors | Total slack | Free slack | Resources | Work |
| --- | --- | --- | --- | --- | --- | --- | --- | --- | --- | --- |
| 451 | 1.3.64.10 | **Nyquist Chart** | 7.69d? | 2008-12-26 | 2009-01-07 |  | 44.83d |  |  | 40h |
| 452 | 1.3.64.10.1 | Implement Chart View Object | 1.54d? | 2008-12-26 | 2008-12-29 | 369 | 44.83d | 0d | Pallavi [65%] | 8h |
| 453 | 1.3.64.10.2 | Support multiple X-Axis Type ( Lin, Log) & Y-Axis scaling | 1.54d? | 2008-12-29 | 2008-12-31 | 452 | 44.83d | 0d | Pallavi [65%] | 8h |
| 454 | 1.3.64.10.3 | Support multiple Data point units | 1.54d? | 2008-12-31 | 2009-01-01 | 453 | 44.83d | 0d | Pallavi [65%] | 8h |
| 455 | 1.3.64.10.4 | Multiple channels support\Marker support | 0.77d? | 2009-01-01 | 2009-01-02 | 454 | 44.83d | 0d | Pallavi [65%] | 4h |
| 456 | 1.3.64.10.5 | Unit test case | 1.54d? | 2009-01-02 | 2009-01-06 | 455 | 44.83d | 0d | Pallavi [65%] | 8h |
| 457 | 1.3.64.10.6 | Code Review/ Unit test case review/Design screen/ Screen usability reviews with Jan Ryles | 0.77d? | 2009-01-06 | 2009-01-07 | 456 | 44.83d | 0d | Pallavi [65%] | 4h |
| 458 | 1.3.64.11 | **Nichols chart** | 7.69d? | 2009-01-07 | 2009-01-16 |  | 44.83d |  |  | 40h |
| 459 | 1.3.64.11.1 | Implement Chart View Object | 1.54d? | 2009-01-07 | 2009-01-08 | 457 | 44.83d | 0d | Pallavi [65%] | 8h |
| 460 | 1.3.64.11.2 | Support multiple X-Axis Type ( Lin, Log) & Y-Axis scaling | 1.54d? | 2009-01-08 | 2009-01-12 | 459 | 44.83d | 0d | Pallavi [65%] | 8h |
| 461 | 1.3.64.11.3 | Support multiple Data point units | 0.77d? | 2009-01-12 | 2009-01-12 | 460 | 44.83d | 0d | Pallavi [65%] | 4h |
| 462 | 1.3.64.11.4 | Multiple channels support\Marker support | 1.54d? | 2009-01-12 | 2009-01-14 | 461 | 44.83d | 0d | Pallavi [65%] | 8h |
| 463 | 1.3.64.11.5 | Unit test case | 1.54d? | 2009-01-14 | 2009-01-15 | 462 | 44.83d | 0d | Pallavi [65%] | 8h |
| 464 | 1.3.64.11.6 | Code Review/ Unit test case review/Design screen/ Screen usability reviews with Jan Ryles | 0.77d? | 2009-01-15 | 2009-01-16 | 463 | 44.83d | 0d | Pallavi [65%] | 4h |
| 465 | 1.3.64.12 | **WaterFall** | 17.14d? | 2008-11-10 | 2008-12-04 |  | 70.28d |  |  | 96h |
| 466 | 1.3.64.12.1 | Implement Chart View Object | 4.29d? | 2008-11-10 | 2008-11-17 | 450 | 70.28d | 0d | Anurag [70%] | 24h |
| 467 | 1.3.64.12.2 | Z-Axis Range support | 3.57d? | 2008-11-17 | 2008-11-20 | 466 | 70.28d | 0d | Anurag [70%] | 20h |
| 468 | 1.3.64.12.3 | Skew angle | 2.86d? | 2008-11-20 | 2008-11-25 | 467 | 70.28d | 0d | Anurag [70%] | 16h |
| 469 | 1.3.64.12.4 | Line clipping | 2.86d? | 2008-11-25 | 2008-11-28 | 468 | 70.28d | 0d | Anurag [70%] | 16h |
| 470 | 1.3.64.12.5 | Unit test case | 2.86d? | 2008-11-28 | 2008-12-03 | 469 | 70.28d | 0d | Anurag [70%] | 16h |
| 471 | 1.3.64.12.6 | Code Review/ Unit test case review/Design screen/ Screen usability reviews with Jan Ryles | 0.71d? | 2008-12-03 | 2008-12-04 | 470 | 70.28d | 0d | Anurag [70%] | 4h |
| 472 | 1.3.64.13 | **Spectrogram** | 13.85d? | 2009-01-16 | 2009-02-05 |  | 44.83d |  |  | 72h |
| 473 | 1.3.64.13.1 | Implement Chart View Object | 6.15d? | 2009-01-16 | 2009-01-26 | 464 | 44.83d | 0d | Pallavi [65%] | 32h |
| 474 | 1.3.64.13.2 | multiple color intensity | 1.54d? | 2009-01-26 | 2009-01-28 | 473 | 44.83d | 0d | Pallavi [65%] | 8h |
| 475 | 1.3.64.13.3 | Z-Axis Range , Top, Bottom | 2.31d? | 2009-01-28 | 2009-01-30 | 474 | 44.83d | 0d | Pallavi [65%] | 12h |
| 476 | 1.3.64.13.4 | Unit test case | 2.31d? | 2009-01-30 | 2009-02-04 | 475 | 44.83d | 0d | Pallavi [65%] | 12h |
| 477 | 1.3.64.13.5 | Code Review/ Unit test case review/Design screen/ Screen usability reviews with Jan Ryles | 1.54d? | 2009-02-04 | 2009-02-05 | 476 | 44.83d | 0d | Pallavi [65%] | 8h |

| ID | WBS | Task | Duration | Start | Finish | Predecessors | Total slack | Free slack | Resources | Work |
| --- | --- | --- | --- | --- | --- | --- | --- | --- | --- | --- |
| 478 | 1.3.65 | **Common Marker Development** | 22d? | 2008-12-04 | 2009-01-05 |  | 68.28d |  |  | 112h |
| 479 | 1.3.65.1 | Design Marker Framework | 2.14d? | 2008-12-04 | 2008-12-08 | 471 | 70.28d | 0d | Anurag [70%] | 12h |
| 480 | 1.3.65.2 | Implementation | 4.29d? | 2008-12-08 | 2008-12-15 | 479 | 69.28d | 0d | Anurag [70%] | 24h |
| 481 | 1.3.65.3 | Support Different shape | 0.71d? | 2008-12-15 | 2008-12-16 | 480 | 69.28d | 0d | Anurag [70%] | 4h |
| 482 | 1.3.65.4 | Support XY Marker | 1.43d? | 2008-12-16 | 2008-12-17 | 481 | 69.28d | 0d | Anurag [70%] | 8h |
| 483 | 1.3.65.5 | Support Marker Format Phase | 1.43d? | 2008-12-17 | 2008-12-19 | 482 | 69.28d | 0d | Anurag [70%] | 8h |
| 484 | 1.3.65.6 | Support Marker Format Magnitude | 1.43d? | 2008-12-19 | 2008-12-22 | 483 | 69.28d | 0d | Anurag [70%] | 8h |
| 485 | 1.3.65.7 | Support Marker Format DB | 1.43d? | 2008-12-22 | 2008-12-23 | 484 | 69.28d | 0d | Anurag [70%] | 8h |
| 486 | 1.3.65.8 | Support Peak Trace Marker | 1.43d? | 2008-12-23 | 2008-12-26 | 485 | 68.28d | 0d | Anurag [70%] | 8h |
| 487 | 1.3.65.9 | Support Next Peak | 1.43d? | 2008-12-26 | 2008-12-29 | 486 | 68.28d | 0d | Anurag [70%] | 8h |
| 488 | 1.3.65.10 | Support Next Largest Peak | 1.43d? | 2008-12-29 | 2008-12-31 | 487 | 68.28d | 0d | Anurag [70%] | 8h |
| 489 | 1.3.65.11 | Code Review/ Unit test case review/Design screen/ Screen usability reviews with Jan Ryles | 2.86d? | 2008-12-31 | 2009-01-05 | 488 | 68.28d | 0d | Anurag [70%] | 16h |
| 490 | 1.3.66 | **File Service** | 4.57d? | 2008-08-11 | 2008-08-18 |  | 53d |  |  | 20h |
| 491 | 1.3.66.1 | Define File/Directory structure hierarchy | 2.86d? | 2008-08-11 | 2008-08-14 | 358 | 53d | 0d | RKB [70%] | 16h |
| 492 | 1.3.66.2 | Review with team | 0.71d? | 2008-08-14 | 2008-08-18 | 491 | 53d | 0d | RKB [70%] | 4h |
| 493 | 1.3.67 | **Save Configuration** | 11.43d? | 2008-08-18 | 2008-09-02 |  | 53d |  |  | 64h |
| 494 | 1.3.67.1 | Save & Recall stratgies | 0.71d? | 2008-08-18 | 2008-08-18 | 492 | 53d | 0d | RKB [70%] | 4h |
| 495 | 1.3.67.2 | Design framework for Saving configuration | 1.43d? | 2008-08-19 | 2008-08-20 | 494 | 53d | 0d | RKB [70%] | 8h |
| 496 | 1.3.67.3 | Implement exposed interface in each searlizable objects | 3.57d? | 2008-08-20 | 2008-08-25 | 495 | 53d | 0d | RKB [70%] | 20h |
| 497 | 1.3.67.4 | Design & implement screen to trigger Saving mechanism | 1.43d? | 2008-08-26 | 2008-08-27 | 496 | 53d | 0d | RKB [70%] | 8h |
| 498 | 1.3.67.5 | unit testing | 2.86d? | 2008-08-27 | 2008-09-01 | 497 | 53d | 0d | RKB [70%] | 16h |
| 499 | 1.3.67.6 | design review/unit test review/usability review | 1.43d? | 2008-09-01 | 2008-09-02 | 498 | 53d | 0d | RKB [70%] | 8h |
| 500 | 1.3.68 | **Load Configuration** | 8.14d? | 2008-09-02 | 2008-09-12 |  | 52d |  |  | 40h |
| 501 | 1.3.68.1 | Design framework for loading configuration | 0.71d? | 2008-09-02 | 2008-09-04 | 499 | 52d | 0d | RKB [70%] | 4h |
| 502 | 1.3.68.2 | Implement exposed interface in each searlizable objects | 1.43d? | 2008-09-04 | 2008-09-05 | 501 | 52d | 0d | RKB [70%] | 8h |
| 503 | 1.3.68.3 | Design & implement screen to trigger loading mechanism | 1.43d? | 2008-09-05 | 2008-09-09 | 502 | 52d | 0d | RKB [70%] | 8h |
| 504 | 1.3.68.4 | unit testing | 2.86d? | 2008-09-09 | 2008-09-12 | 503 | 52d | 0d | RKB [70%] | 16h |
| 505 | 1.3.68.5 | design review/unit test review/usability review | 0.71d? | 2008-09-12 | 2008-09-12 | 504 | 52d | 0d | RKB [70%] | 4h |

| ID | WBS | Task | Duration | Start | Finish | Predecessors | Total slack | Free slack | Resources | Work |
| --- | --- | --- | --- | --- | --- | --- | --- | --- | --- | --- |
| 506 | 1.3.69 | **View Configuration** | 4.62d? | 2009-02-05 | 2009-02-12 |  | 44.83d |  |  | 24h |
| 507 | 1.3.69.1 | Design & implement screen to trigger loading mechanism | 2.31d? | 2009-02-05 | 2009-02-09 | 477 | 44.83d | 0d | Pallavi [65%] | 12h |
| 508 | 1.3.69.2 | unit testing | 1.54d? | 2009-02-09 | 2009-02-11 | 507 | 44.83d | 0d | Pallavi [65%] | 8h |
| 509 | 1.3.69.3 | design review/unit test review/usability review | 0.77d? | 2009-02-11 | 2009-02-12 | 508 | 44.83d | 0d | Pallavi [65%] | 4h |
| 510 | 1.3.70 | **Save Trace** | 8.57d? | 2009-01-05 | 2009-01-15 |  | 68.28d |  |  | 48h |
| 511 | 1.3.70.1 | Design framework for Saving trace | 2.14d? | 2009-01-05 | 2009-01-07 | 489, 505 | 68.28d | 0d | Anurag [70%] | 12h |
| 512 | 1.3.70.2 | Design & implement screen to trigger saving mechanism | 3.57d? | 2009-01-07 | 2009-01-12 | 511 | 68.28d | 0d | Anurag [70%] | 20h |
| 513 | 1.3.70.3 | unit testing | 2.14d? | 2009-01-12 | 2009-01-14 | 512 | 68.28d | 0d | Anurag [70%] | 12h |
| 514 | 1.3.70.4 | design review/unit test review/usability review | 0.71d? | 2009-01-14 | 2009-01-15 | 513 | 68.28d | 0d | Anurag [70%] | 4h |
| 515 | 1.3.71 | **Recall trace** | 4.29d? | 2009-01-15 | 2009-01-21 |  | 68.28d |  |  | 24h |
| 516 | 1.3.71.1 | Design framework for Loading trace | 0.71d? | 2009-01-15 | 2009-01-16 | 514 | 68.28d | 0d | Anurag [70%] | 4h |
| 517 | 1.3.71.2 | Design & implement screen to trigger Loading mechanism | 1.43d? | 2009-01-16 | 2009-01-19 | 516 | 68.28d | 0d | Anurag [70%] | 8h |
| 518 | 1.3.71.3 | unit testing | 1.43d? | 2009-01-19 | 2009-01-21 | 517 | 68.28d | 0d | Anurag [70%] | 8h |
| 519 | 1.3.71.4 | design review/unit test review/usability review | 0.71d? | 2009-01-21 | 2009-01-21 | 518 | 68.28d | 0d | Anurag [70%] | 4h |
| 520 | 1.3.72 | **Backward comptability** | 10d? | 2009-01-21 | 2009-02-04 |  | 68.28d |  |  | 56h |
| 521 | 1.3.72.1 | SDF Data Reader | 1.43d? | 2009-01-21 | 2009-01-23 | 519, 489 | 68.28d | 0d | Anurag [70%] | 8h |
| 522 | 1.3.72.2 | Design SDF Data Reader | 2.86d? | 2009-01-23 | 2009-01-28 | 521 | 68.28d | 0d | Anurag [70%] | 16h |
| 523 | 1.3.72.3 | Implement Data Reader | 2.14d? | 2009-01-28 | 2009-01-30 | 522 | 68.28d | 0d | Anurag [70%] | 12h |
| 524 | 1.3.72.4 | unit testing | 2.86d? | 2009-01-30 | 2009-02-04 | 523 | 68.28d | 0d | Anurag [70%] | 16h |
| 525 | 1.3.72.5 | design review/unit test review | 0.71d? | 2009-02-04 | 2009-02-04 | 524 | 68.28d | 0d | Anurag [70%] | 4h |
| 526 | 1.3.73 | **CSV Data Writer** | 6.15d? | 2009-02-04 | 2009-02-12 |  | 37.13d |  |  | 32h |
| 527 | 1.3.73.1 | Design CSV Data Writer | 0.77d? | 2009-02-04 | 2009-02-05 | 380 | 37.13d | 0d | 1ETW [65%] | 4h |
| 528 | 1.3.73.2 | Implement Data Writer | 3.08d? | 2009-02-05 | 2009-02-10 | 527 | 37.13d | 0d | 1ETW [65%] | 16h |
| 529 | 1.3.73.3 | unit testing | 1.54d? | 2009-02-10 | 2009-02-12 | 528 | 37.13d | 0d | 1ETW [65%] | 8h |
| 530 | 1.3.73.4 | design review/unit test review | 0.77d? | 2009-02-12 | 2009-02-12 | 529 | 37.13d | 0d | 1ETW [65%] | 4h |

| ID | WBS | Task | Duration | Start | Finish | Predecessors | Total slack | Free slack | Resources | Work |
| --- | --- | --- | --- | --- | --- | --- | --- | --- | --- | --- |
| 531 | 1.3.74 | **CSV Data Reader** | 6.15d? | 2009-02-12 | 2009-02-23 |  | 37.13d |  |  | 32h |
| 532 | 1.3.74.1 | Design CSV Data Reader | 0.77d? | 2009-02-12 | 2009-02-13 | 530 | 37.13d | 0d | 1ETW [65%] | 4h |
| 533 | 1.3.74.2 | Implement Data Reader | 3.08d? | 2009-02-13 | 2009-02-18 | 532 | 37.13d | 0d | 1ETW [65%] | 16h |
| 534 | 1.3.74.3 | unit testing | 1.54d? | 2009-02-18 | 2009-02-20 | 533 | 37.13d | 0d | 1ETW [65%] | 8h |
| 535 | 1.3.74.4 | design review/unit test review | 0.77d? | 2009-02-20 | 2009-02-23 | 534 | 37.13d | 0d | 1ETW [65%] | 4h |
| 536 | 1.3.75 | **HDF5 Data Writer** | 16.92d? | 2009-02-23 | 2009-03-18 |  | 37.13d |  |  | 88h |
| 537 | 1.3.75.1 | Design HDF5 Data Writer | 3.85d? | 2009-02-23 | 2009-02-26 | 535 | 37.13d | 0d | 1ETW [65%] | 20h |
| 538 | 1.3.75.2 | Implement Data Writer | 3.08d? | 2009-02-26 | 2009-03-04 | 537 | 37.13d | 0d | 1ETW [65%] | 16h |
| 539 | 1.3.75.3 | unit testing | 3.08d? | 2009-03-04 | 2009-03-09 | 538 | 37.13d | 0d | 1ETW [65%] | 16h |
| 540 | 1.3.75.4 | MathLab Compatbility test | 6.15d? | 2009-03-09 | 2009-03-17 | 539 | 37.13d | 0d | 1ETW [65%] | 32h |
| 541 | 1.3.75.5 | design review/unit test review | 0.77d? | 2009-03-17 | 2009-03-18 | 540 | 37.13d | 0d | 1ETW [65%] | 4h |
| 542 | 1.3.76 | **HDF5 Data Reader** | 10d? | 2009-03-18 | 2009-04-01 |  | 37.13d |  |  | 52h |
| 543 | 1.3.76.1 | Design HDF5 Data Reader | 0.77d? | 2009-03-18 | 2009-03-18 | 541 | 37.13d | 0d | 1ETW [65%] | 4h |
| 544 | 1.3.76.2 | Implement Data Reader | 3.08d? | 2009-03-18 | 2009-03-23 | 543 | 37.13d | 0d | 1ETW [65%] | 16h |
| 545 | 1.3.76.3 | unit testing | 1.54d? | 2009-03-23 | 2009-03-25 | 544 | 37.13d | 0d | 1ETW [65%] | 8h |
| 546 | 1.3.76.4 | Corrupt file handling | 3.08d? | 2009-03-25 | 2009-03-30 | 545 | 37.13d | 0d | 1ETW [65%] | 16h |
| 547 | 1.3.76.5 | design review/unit test review | 1.54d? | 2009-03-30 | 2009-04-01 | 546 | 37.13d |  | 1ETW [65%] | 8h |
| 548 | 1.3.77 | **Refactor at Swept sine mode** | 12.86d? | 2008-09-12 | 2008-10-01 |  | 52d |  |  | 72h |
| 549 | 1.3.77.1 | GUI | 4.29d? | 2008-09-12 | 2008-09-19 | 505, 519 | 52d | 0d | RKB [70%] | 24h |
| 550 | 1.3.77.2 | Automation Interface | 4.29d? | 2008-09-19 | 2008-09-25 | 549 | 52d | 0d | RKB [70%] | 24h |
| 551 | 1.3.77.3 | Analysis and Measurement Layer | 4.29d? | 2008-09-25 | 2008-10-01 | 550 | 52d | 0d | RKB [70%] | 24h |
| 552 | 1.3.78 | **Refactor at Octave Mode** | 14.86d? | 2008-10-01 | 2008-10-22 |  | 52d |  |  | 72h |
| 553 | 1.3.78.1 | GUI | 4.29d? | 2008-10-01 | 2008-10-08 | 551 | 52d | 0d | RKB [70%] | 24h |
| 554 | 1.3.78.2 | Automation Interface | 4.29d? | 2008-10-08 | 2008-10-16 | 553 | 52d | 0d | RKB [70%] | 24h |
| 555 | 1.3.78.3 | Analysis and Measurement Layer | 4.29d? | 2008-10-16 | 2008-10-22 | 554 | 52d | 0d | RKB [70%] | 24h |

| ID | WBS | Task | Duration | Start | Finish | Predecessors | Total slack | Free slack | Resources | Work |
| --- | --- | --- | --- | --- | --- | --- | --- | --- | --- | --- |
| 556 | 1.4 | **Analysis Layer** | 241.7d? | 2008-04-16 | 2009-03-20 |  | 44.83d |  |  | 1776h |
| 557 | 1.4.1 | **Trace management** | 13.86d? | 2008-10-22 | 2008-11-11 |  | 51d |  |  | 72h |
| 558 | 1.4.1.1 | Design Interface | 1.43d? | 2008-10-22 | 2008-10-23 | 555 | 52d | 0d | RKB [70%] | 8h |
| 559 | 1.4.1.2 | Review interface design with Team leads | 0.71d? | 2008-10-23 | 2008-10-24 | 558 | 52d | 0d | RKB [70%] | 4h |
| 560 | 1.4.1.3 | Implementation of Trace Management | 5.71d? | 2008-10-24 | 2008-11-04 | 559 | 51d | 0d | RKB [70%] | 32h |
| 561 | 1.4.1.4 | Unit testing | 4.29d? | 2008-11-04 | 2008-11-10 | 560 | 51d | 0d | RKB [70%] | 24h |
| 562 | 1.4.1.5 | Code Review | 0.71d? | 2008-11-10 | 2008-11-11 | 561 | 51d | 0d | RKB [70%] | 4h |
| 563 | 1.4.2 | **Measurement Flow management Framework** | 12.14d? | 2008-11-11 | 2008-11-27 |  | 51d |  |  | 68h |
| 564 | 1.4.2.1 | Design Interface | 2.14d? | 2008-11-11 | 2008-11-13 | 562 | 51d | 0d | RKB [70%] | 12h |
| 565 | 1.4.2.2 | Review interface design with Team leads | 0.71d? | 2008-11-13 | 2008-11-14 | 564 | 51d | 0d | RKB [70%] | 4h |
| 566 | 1.4.2.3 | Implementation of Measurement Flow Management | 5.71d? | 2008-11-14 | 2008-11-21 | 565 | 51d | 0d | RKB [70%] | 32h |
| 567 | 1.4.2.4 | Unit testing | 2.86d? | 2008-11-21 | 2008-11-26 | 566 | 51d | 0d | RKB [70%] | 16h |
| 568 | 1.4.2.5 | Code Review | 0.71d? | 2008-11-26 | 2008-11-27 | 567 | 51d | 0d | RKB [70%] | 4h |
| 569 | 1.4.3 | **Measurement Flow: Linear spectrum** | 5.71d? | 2008-11-27 | 2008-12-05 |  | 51d |  |  | 32h |
| 570 | 1.4.3.1 | Design Interface | 0.71d? | 2008-11-27 | 2008-11-28 | 568 | 51d | 0d | RKB [70%] | 4h |
| 571 | 1.4.3.2 | Review interface design with Team leads | 0.71d? | 2008-11-28 | 2008-11-28 | 570 | 51d | 0d | RKB [70%] | 4h |
| 572 | 1.4.3.3 | Implementation of Measurement Flow | 2.14d? | 2008-12-01 | 2008-12-03 | 571 | 51d | 0d | RKB [70%] | 12h |
| 573 | 1.4.3.4 | Unit testing | 1.43d? | 2008-12-03 | 2008-12-04 | 572 | 51d | 0d | RKB [70%] | 8h |
| 574 | 1.4.3.5 | Code Review | 0.71d? | 2008-12-04 | 2008-12-05 | 573 | 51d | 0d | RKB [70%] | 4h |
| 575 | 1.4.4 | **Measurement Flow: Auto power spectrum** | 7.43d? | 2008-12-05 | 2008-12-16 |  | 50d |  |  | 36h |
| 576 | 1.4.4.1 | Design Interface | 0.71d? | 2008-12-05 | 2008-12-08 | 574 | 51d | 0d | RKB [70%] | 4h |
| 577 | 1.4.4.2 | Review interface design with Team leads | 0.71d? | 2008-12-08 | 2008-12-08 | 576 | 51d | 0d | RKB [70%] | 4h |
| 578 | 1.4.4.3 | Implementation of Measurement Flow | 2.86d? | 2008-12-08 | 2008-12-12 | 577 | 50d | 0d | RKB [70%] | 16h |
| 579 | 1.4.4.4 | Unit testing | 1.43d? | 2008-12-12 | 2008-12-16 | 578 | 50d | 0d | RKB [70%] | 8h |
| 580 | 1.4.4.5 | Code Review | 0.71d? | 2008-12-16 | 2008-12-16 | 579 | 50d | 0d | RKB [70%] | 4h |

| ID | WBS | Task | Duration | Start | Finish | Predecessors | Total slack | Free slack | Resources | Work |
| --- | --- | --- | --- | --- | --- | --- | --- | --- | --- | --- |
| 581 | 1.4.5 | **Measurement Flow: Cross power spectrum** | 7.43d? | 2008-12-16 | 2008-12-26 |  | 49d |  |  | 36h |
| 582 | 1.4.5.1 | Design Interface | 0.71d? | 2008-12-16 | 2008-12-17 | 580 | 50d | 0d | RKB [70%] | 4h |
| 583 | 1.4.5.2 | Review interface design with Team leads | 0.71d? | 2008-12-17 | 2008-12-18 | 582 | 50d | 0d | RKB [70%] | 4h |
| 584 | 1.4.5.3 | Implementation of Measurement Flow | 2.86d? | 2008-12-18 | 2008-12-23 | 583 | 50d | 0d | RKB [70%] | 16h |
| 585 | 1.4.5.4 | Unit testing | 1.43d? | 2008-12-23 | 2008-12-24 | 584 | 50d | 0d | RKB [70%] | 8h |
| 586 | 1.4.5.5 | Code Review | 0.71d? | 2008-12-24 | 2008-12-26 | 585 | 49d | 0d | RKB [70%] | 4h |
| 587 | 1.4.6 | **Measurement Flow: FRF** | 9.29d? | 2008-12-26 | 2009-01-08 |  | 49d |  |  | 52h |
| 588 | 1.4.6.1 | Design Interface | 1.43d? | 2008-12-26 | 2008-12-29 | 586 | 49d | 0d | RKB [70%] | 8h |
| 589 | 1.4.6.2 | Review interface design with Team leads | 0.71d? | 2008-12-29 | 2008-12-30 | 588 | 49d | 0d | RKB [70%] | 4h |
| 590 | 1.4.6.3 | Implementation of Measurement Flow | 4.29d? | 2008-12-30 | 2009-01-05 | 589 | 49d | 0d | RKB [70%] | 24h |
| 591 | 1.4.6.4 | Unit testing | 2.14d? | 2009-01-05 | 2009-01-07 | 590 | 49d | 0d | RKB [70%] | 12h |
| 592 | 1.4.6.5 | Code Review | 0.71d? | 2009-01-07 | 2009-01-08 | 591 | 49d | 0d | RKB [70%] | 4h |
| 593 | 1.4.7 | **Measurement Flow: Coherance** | 6.43d? | 2009-01-08 | 2009-01-16 |  | 49d |  |  | 36h |
| 594 | 1.4.7.1 | Design Interface | 0.71d? | 2009-01-08 | 2009-01-09 | 592 | 49d | 0d | RKB [70%] | 4h |
| 595 | 1.4.7.2 | Review interface design with Team leads | 0.71d? | 2009-01-09 | 2009-01-09 | 594 | 49d | 0d | RKB [70%] | 4h |
| 596 | 1.4.7.3 | Implementation of Measurement Flow | 2.86d? | 2009-01-09 | 2009-01-14 | 595 | 49d | 0d | RKB [70%] | 16h |
| 597 | 1.4.7.4 | Unit testing | 1.43d? | 2009-01-14 | 2009-01-16 | 596 | 49d | 0d | RKB [70%] | 8h |
| 598 | 1.4.7.5 | Code Review | 0.71d? | 2009-01-16 | 2009-01-16 | 597 | 49d | 0d | RKB [70%] | 4h |
| 599 | 1.4.8 | **Measurement Flow: Normal Variance** | 6.92d? | 2009-02-12 | 2009-02-23 |  | 44.83d |  |  | 36h |
| 600 | 1.4.8.1 | Design Interface | 0.77d? | 2009-02-12 | 2009-02-12 | 509 | 44.83d | 0d | Pallavi [65%] | 4h |
| 601 | 1.4.8.2 | Review interface design with Team leads | 0.77d? | 2009-02-12 | 2009-02-13 | 600 | 44.83d | 0d | Pallavi [65%] | 4h |
| 602 | 1.4.8.3 | Implementation of Measurement Flow | 3.08d? | 2009-02-13 | 2009-02-18 | 601 | 44.83d | 0d | Pallavi [65%] | 16h |
| 603 | 1.4.8.4 | Unit testing | 1.54d? | 2009-02-18 | 2009-02-20 | 602 | 44.83d | 0d | Pallavi [65%] | 8h |
| 604 | 1.4.8.5 | Code Review | 0.77d? | 2009-02-20 | 2009-02-23 | 603 | 44.83d | 0d | Pallavi [65%] | 4h |

| ID | WBS | Task | Duration | Start | Finish | Predecessors | Total slack | Free slack | Resources | Work |
| --- | --- | --- | --- | --- | --- | --- | --- | --- | --- | --- |
| 605 | 1.4.9 | **Measurement : Harmonic Power, THD** | 16.29d? | 2008-04-16 | 2008-05-08 |  | 93.81d |  |  | 80h |
| 606 | 1.4.9.1 | Design Interface | 1.43d? | 2008-04-16 | 2008-04-21 | 304 | 93.81d | 0d | Himanshu [70%] | 8h |
| 607 | 1.4.9.2 | Review interface design with Team leads | 0.71d? | 2008-04-21 | 2008-04-21 | 606 | 93.81d | 0d | Himanshu [70%] | 4h |
| 608 | 1.4.9.3 | Implementation of Measurement Flow | 5.71d? | 2008-04-21 | 2008-04-29 | 607 | 93.81d | 0d | Himanshu [70%] | 32h |
| 609 | 1.4.9.4 | Intermediate result | 2.14d? | 2008-04-29 | 2008-05-02 | 608 | 93.81d | 0d | Himanshu [70%] | 12h |
| 610 | 1.4.9.5 | Unit testing | 3.57d? | 2008-05-02 | 2008-05-08 | 609 | 93.81d | 0d | Himanshu [70%] | 20h |
| 611 | 1.4.9.6 | Code Review | 0.71d? | 2008-05-08 | 2008-05-08 | 610 | 93.81d | 0d | Himanshu [70%] | 4h |
| 612 | 1.4.10 | **Measurement : Side band Power** | 10d? | 2008-05-08 | 2008-05-22 |  | 93.81d |  |  | 56h |
| 613 | 1.4.10.1 | Design Interface | 1.43d? | 2008-05-08 | 2008-05-12 | 611 | 93.81d | 0d | Himanshu [70%] | 8h |
| 614 | 1.4.10.2 | Review interface design with Team leads | 0.71d? | 2008-05-12 | 2008-05-13 | 613 | 93.81d | 0d | Himanshu [70%] | 4h |
| 615 | 1.4.10.3 | Implementation of Measurement Flow | 2.14d? | 2008-05-13 | 2008-05-15 | 614 | 93.81d | 0d | Himanshu [70%] | 12h |
| 616 | 1.4.10.4 | Intermediate result | 2.14d? | 2008-05-15 | 2008-05-19 | 615 | 93.81d | 0d | Himanshu [70%] | 12h |
| 617 | 1.4.10.5 | Unit testing | 2.86d? | 2008-05-19 | 2008-05-22 | 616 | 93.81d | 0d | Himanshu [70%] | 16h |
| 618 | 1.4.10.6 | Code Review | 0.71d? | 2008-05-22 | 2008-05-22 | 617 | 93.81d | 0d | Himanshu [70%] | 4h |
| 619 | 1.4.11 | **Measurement : Band Power** | 10d? | 2008-05-22 | 2008-06-05 |  | 93.81d |  |  | 56h |
| 620 | 1.4.11.1 | Design Interface | 1.43d? | 2008-05-22 | 2008-05-26 | 618 | 93.81d | 0d | Himanshu [70%] | 8h |
| 621 | 1.4.11.2 | Review interface design with Team leads | 0.71d? | 2008-05-26 | 2008-05-27 | 620 | 94.81d | 0d | Himanshu [70%] | 4h |
| 622 | 1.4.11.3 | Implementation of Measurement Flow | 2.14d? | 2008-05-27 | 2008-05-29 | 621 | 94.81d | 0d | Himanshu [70%] | 12h |
| 623 | 1.4.11.4 | Intermediate result | 2.14d? | 2008-05-29 | 2008-06-02 | 622 | 94.81d | 0d | Himanshu [70%] | 12h |
| 624 | 1.4.11.5 | Unit testing | 2.86d? | 2008-06-02 | 2008-06-05 | 623 | 95.81d | 0d | Himanshu [70%] | 16h |
| 625 | 1.4.11.6 | Code Review | 0.71d? | 2008-06-05 | 2008-06-05 | 624 | 95.81d | 0d | Himanshu [70%] | 4h |
| 626 | 1.4.12 | **Measurement : THD+n ENOB, SNR,SFDR,SINAD** | 12.14d? | 2008-06-05 | 2008-06-24 |  | 95.81d |  |  | 68h |
| 627 | 1.4.12.1 | Design Interface | 1.43d? | 2008-06-05 | 2008-06-09 | 625 | 95.81d | 0d | Himanshu [70%] | 8h |
| 628 | 1.4.12.2 | Review interface design with Team leads | 0.71d? | 2008-06-09 | 2008-06-10 | 627 | 95.81d | 0d | Himanshu [70%] | 4h |
| 629 | 1.4.12.3 | Implementation of Measurement Flow | 3.57d? | 2008-06-10 | 2008-06-13 | 628 | 95.81d | 0d | Himanshu [70%] | 20h |
| 630 | 1.4.12.4 | Intermediate result | 1.43d? | 2008-06-13 | 2008-06-17 | 629 | 95.81d | 0d | Himanshu [70%] | 8h |
| 631 | 1.4.12.5 | Unit testing | 4.29d? | 2008-06-17 | 2008-06-23 | 630 | 96.81d | 0d | Himanshu [70%] | 24h |
| 632 | 1.4.12.6 | Code Review | 0.71d? | 2008-06-23 | 2008-06-24 | 631 | 96.81d | 0d | Himanshu [70%] | 4h |

| ID | WBS | Task | Duration | Start | Finish | Predecessors | Total slack | Free slack | Resources | Work |
| --- | --- | --- | --- | --- | --- | --- | --- | --- | --- | --- |
| 633 | 1.4.13 | **Measurement : Gain & Phase margin** | 11.43d? | 2008-06-24 | 2008-07-09 |  | 96.81d |  |  | 64h |
| 634 | 1.4.13.1 | Design Interface | 1.43d? | 2008-06-24 | 2008-06-25 | 632 | 96.81d | 0d | Himanshu [70%] | 8h |
| 635 | 1.4.13.2 | Review interface design with Team leads | 0.71d? | 2008-06-25 | 2008-06-26 | 634 | 96.81d | 0d | Himanshu [70%] | 4h |
| 636 | 1.4.13.3 | Implementation of Measurement Flow | 2.86d? | 2008-06-26 | 2008-07-01 | 635 | 96.81d | 0d | Himanshu [70%] | 16h |
| 637 | 1.4.13.4 | Intermediate result | 2.86d? | 2008-07-01 | 2008-07-03 | 636 | 96.81d | 0d | Himanshu [70%] | 16h |
| 638 | 1.4.13.5 | Unit testing | 2.86d? | 2008-07-03 | 2008-07-08 | 637 | 96.81d | 0d | Himanshu [70%] | 16h |
| 639 | 1.4.13.6 | Code Review | 0.71d? | 2008-07-08 | 2008-07-09 | 638 | 96.81d | 0d | Himanshu [70%] | 4h |
| 640 | 1.4.14 | **Measurement : Frequency Damping** | 10d? | 2008-07-09 | 2008-07-23 |  | 96.81d |  |  | 56h |
| 641 | 1.4.14.1 | Design Interface | 1.43d? | 2008-07-09 | 2008-07-10 | 639 | 96.81d | 0d | Himanshu [70%] | 8h |
| 642 | 1.4.14.2 | Review interface design with Team leads | 0.71d? | 2008-07-10 | 2008-07-11 | 641 | 96.81d | 0d | Himanshu [70%] | 4h |
| 643 | 1.4.14.3 | Implementation of Measurement Flow | 4.29d? | 2008-07-11 | 2008-07-17 | 642 | 96.81d | 0d | Himanshu [70%] | 24h |
| 644 | 1.4.14.4 | Unit testing | 2.86d? | 2008-07-17 | 2008-07-22 | 643 | 96.81d | 0d | Himanshu [70%] | 16h |
| 645 | 1.4.14.5 | Code Review | 0.71d? | 2008-07-22 | 2008-07-23 | 644 | 96.81d | 0d | Himanshu [70%] | 4h |
| 646 | 1.4.15 | **Measurement : delay time, decay time, rise time, pulse width etc** | 13.57d? | 2008-07-23 | 2008-08-12 |  | 96.81d |  |  | 76h |
| 647 | 1.4.15.1 | Design Interface | 2.14d? | 2008-07-23 | 2008-07-25 | 645 | 96.81d | 0d | Himanshu [70%] | 12h |
| 648 | 1.4.15.2 | Review interface design with Team leads | 1.43d? | 2008-07-25 | 2008-07-29 | 647 | 97.81d | 0d | Himanshu [70%] | 8h |
| 649 | 1.4.15.3 | Implementation of Measurement Flow | 5.71d? | 2008-07-29 | 2008-08-05 | 648 | 97.81d | 0d | Himanshu [70%] | 32h |
| 650 | 1.4.15.4 | Unit testing | 3.57d? | 2008-08-05 | 2008-08-11 | 649 | 97.81d | 0d | Himanshu [70%] | 20h |
| 651 | 1.4.15.5 | Code Review | 0.71d? | 2008-08-11 | 2008-08-12 | 650 | 98.81d | 0d | Himanshu [70%] | 4h |
| 652 | 1.4.16 | **Analysis : Complex conjugate** | 7.86d? | 2009-02-04 | 2009-02-16 |  | 68.28d |  |  | 44h |
| 653 | 1.4.16.1 | Design Interface | 1.43d? | 2009-02-04 | 2009-02-06 | 525 | 68.28d | 0d | Anurag [70%] | 8h |
| 654 | 1.4.16.2 | Review interface design with Team leads | 0.71d? | 2009-02-06 | 2009-02-09 | 653 | 68.28d | 0d | Anurag [70%] | 4h |
| 655 | 1.4.16.3 | Implementation of Measurement Flow | 2.86d? | 2009-02-09 | 2009-02-11 | 654 | 68.28d | 0d | Anurag [70%] | 16h |
| 656 | 1.4.16.4 | Unit testing | 2.14d? | 2009-02-11 | 2009-02-16 | 655 | 68.28d | 0d | Anurag [70%] | 12h |
| 657 | 1.4.16.5 | Code Review | 0.71d | 2009-02-16 | 2009-02-16 | 656 | 68.28d |  | Anurag [70%] | 4h |

| ID | WBS | Task | Duration | Start | Finish | Predecessors | Total slack | Free slack | Resources | Work |
| --- | --- | --- | --- | --- | --- | --- | --- | --- | --- | --- |
| 658 | 1.4.17 | **Analysis : Limit Lines** | 7.14d? | 2009-01-16 | 2009-01-28 |  | 49d |  |  | 40h |
| 659 | 1.4.17.1 | Design Interface | 0.71d? | 2009-01-16 | 2009-01-19 | 598 | 49d | 0d | RKB [70%] | 4h |
| 660 | 1.4.17.2 | Review interface design with Team leads | 0.71d? | 2009-01-19 | 2009-01-20 | 659 | 49d | 0d | RKB [70%] | 4h |
| 661 | 1.4.17.3 | Implementation of Measurement Flow | 2.86d? | 2009-01-20 | 2009-01-23 | 660 | 49d | 0d | RKB [70%] | 16h |
| 662 | 1.4.17.4 | Unit testing | 2.14d? | 2009-01-23 | 2009-01-27 | 661 | 49d | 0d | RKB [70%] | 12h |
| 663 | 1.4.17.5 | Code Review | 0.71d | 2009-01-27 | 2009-01-28 | 662 | 49d | 0d | RKB [70%] | 4h |
| 664 | 1.4.18 | **Analysis : Basic Math** | 18.43d? | 2008-08-12 | 2008-09-05 |  | 96.81d |  |  | 92h |
| 665 | 1.4.18.1 | Design Interface | 2.86d? | 2008-08-12 | 2008-08-14 | 651 | 98.81d | 0d | Himanshu [70%] | 16h |
| 666 | 1.4.18.2 | Review interface design with Team leads | 0.71d? | 2008-08-14 | 2008-08-18 | 665 | 97.81d | 0d | Himanshu [70%] | 4h |
| 667 | 1.4.18.3 | Implementation of Measurement Flow | 5.71d? | 2008-08-18 | 2008-08-26 | 666 | 97.81d | 0d | Himanshu [70%] | 32h |
| 668 | 1.4.18.4 | Analysis advance math | 1.43d? | 2008-08-26 | 2008-08-27 | 667 | 97.81d | 0d | Himanshu [70%] | 8h |
| 669 | 1.4.18.5 | Unit testing | 5.71d? | 2008-08-27 | 2008-09-05 | 668 | 96.81d | 0d | Himanshu [70%] | 32h |
| 670 | 1.4.19 | **Not defined ( Advance math)** | 1.43d | 2008-09-05 | 2008-09-08 |  | 96.81d | 0d |  | 8h |
| 671 | 1.4.19.1 | Code Review | 1.43d | 2008-09-05 | 2008-09-08 | 669 | 96.81d |  | Himanshu [70%] | 8h |
| 672 | 1.4.20 | **Unit Conversion** | 21d? | 2008-09-08 | 2008-10-07 |  | 95.81d |  |  | 112h |
| 673 | 1.4.20.1 | Design interface for unit conversion | 2.86d? | 2008-09-08 | 2008-09-11 | 670 | 96.81d | 0d | Himanshu [70%] | 16h |
| 674 | 1.4.20.2 | Review with tech leads | 0.71d? | 2008-09-11 | 2008-09-12 | 673 | 96.81d | 0d | Himanshu [70%] | 4h |
| 675 | 1.4.20.3 | Implementation | 5.71d? | 2008-09-12 | 2008-09-22 | 674 | 96.81d | 0d | Himanshu [70%] | 32h |
| 676 | 1.4.20.4 | Unit testing | 3.57d? | 2008-09-22 | 2008-09-25 | 675 | 96.81d | 0d | Himanshu [70%] | 20h |
| 677 | 1.4.20.5 | How unit will ripple down | 5.71d? | 2008-09-25 | 2008-10-06 | 676 | 95.81d | 0d | Himanshu [70%] | 32h |
| 678 | 1.4.20.6 | Code Review | 1.43d | 2008-10-06 | 2008-10-07 | 677 | 95.81d | 0d | Himanshu [70%] | 8h |
| 679 | 1.4.21 | **Mode Management ( Local/remote)** | 7.14d? | 2009-01-28 | 2009-02-06 |  | 49d |  |  | 40h |
| 680 | 1.4.21.1 | Design interface for configuring AL mode | 1.43d? | 2009-01-28 | 2009-01-29 | 663 | 49d | 0d | RKB [70%] | 8h |
| 681 | 1.4.21.2 | Review with tech leads | 0.71d? | 2009-01-29 | 2009-01-30 | 680 | 49d | 0d | RKB [70%] | 4h |
| 682 | 1.4.21.3 | Implementation | 2.86d? | 2009-01-30 | 2009-02-04 | 681 | 49d | 0d | RKB [70%] | 16h |
| 683 | 1.4.21.4 | Unit testing | 1.43d? | 2009-02-04 | 2009-02-05 | 682 | 49d | 0d | RKB [70%] | 8h |
| 684 | 1.4.21.5 | Code Review | 0.71d | 2009-02-05 | 2009-02-06 | 683 | 49d | 0d | RKB [70%] | 4h |

| ID | WBS | Task | Duration | Start | Finish | Predecessors | Total slack | Free slack | Resources | Work |
| --- | --- | --- | --- | --- | --- | --- | --- | --- | --- | --- |
| 685 | 1.4.22 | **Averaging FFT Types** | 24.86d? | 2008-10-07 | 2008-11-11 |  | 93.81d |  |  | 128h |
| 686 | 1.4.22.1 | Design interface/framework | 2.86d? | 2008-10-07 | 2008-10-13 | 678 | 94.81d | 0d | Himanshu [70%] | 16h |
| 687 | 1.4.22.2 | Partial average Result Calculation | 1.43d? | 2008-10-13 | 2008-10-15 | 686 | 94.81d | 0d | Himanshu [70%] | 8h |
| 688 | 1.4.22.3 | reviews with tech leads | 1.43d? | 2008-10-15 | 2008-10-16 | 687 | 94.81d | 0d | Himanshu [70%] | 8h |
| 689 | 1.4.22.4 | Implementation (RMS) | 2.86d? | 2008-10-16 | 2008-10-21 | 688 | 94.81d | 0d | Himanshu [70%] | 16h |
| 690 | 1.4.22.5 | Verification (RMS) | 0.71d? | 2008-10-21 | 2008-10-22 | 689 | 94.81d | 0d | Himanshu [70%] | 4h |
| 691 | 1.4.22.6 | Unit testing (RMS) | 0.71d? | 2008-10-22 | 2008-10-22 | 690 | 94.81d | 0d | Himanshu [70%] | 4h |
| 692 | 1.4.22.7 | Implementation (RMS Exp) | 1.43d? | 2008-10-22 | 2008-10-24 | 691 | 94.81d | 0d | Himanshu [70%] | 8h |
| 693 | 1.4.22.8 | Verification (RMS Exp) | 0.71d? | 2008-10-24 | 2008-10-27 | 692 | 94.81d | 0d | Himanshu [70%] | 4h |
| 694 | 1.4.22.9 | Unit testing (RMS Exp) | 0.71d? | 2008-10-27 | 2008-10-27 | 693 | 94.81d | 0d | Himanshu [70%] | 4h |
| 695 | 1.4.22.10 | Implementation (Time) | 1.43d? | 2008-10-27 | 2008-10-30 | 694 | 93.81d | 0d | Himanshu [70%] | 8h |
| 696 | 1.4.22.11 | Verification (Time) | 0.71d? | 2008-10-30 | 2008-10-30 | 695 | 93.81d | 0d | Himanshu [70%] | 4h |
| 697 | 1.4.22.12 | Unit testing (Time) | 0.71d? | 2008-10-30 | 2008-10-31 | 696 | 93.81d | 0d | Himanshu [70%] | 4h |
| 698 | 1.4.22.13 | Implementation (Time Exp) | 1.43d? | 2008-10-31 | 2008-11-04 | 697 | 93.81d | 0d | Himanshu [70%] | 8h |
| 699 | 1.4.22.14 | Verification (Time Exp) | 0.71d? | 2008-11-04 | 2008-11-04 | 698 | 93.81d | 0d | Himanshu [70%] | 4h |
| 700 | 1.4.22.15 | Unit testing (Time Exp) | 0.71d? | 2008-11-04 | 2008-11-05 | 699 | 93.81d | 0d | Himanshu [70%] | 4h |
| 701 | 1.4.22.16 | Implementation (Peak Hold) | 1.43d? | 2008-11-05 | 2008-11-06 | 700 | 93.81d | 0d | Himanshu [70%] | 8h |
| 702 | 1.4.22.17 | Verification (Peak Hold) | 0.71d? | 2008-11-06 | 2008-11-07 | 701 | 93.81d | 0d | Himanshu [70%] | 4h |
| 703 | 1.4.22.18 | Unit testing (Peak Hold) | 0.71d? | 2008-11-07 | 2008-11-10 | 702 | 93.81d | 0d | Himanshu [70%] | 4h |
| 704 | 1.4.22.19 | Code Review | 1.43d? | 2008-11-10 | 2008-11-11 | 703 | 93.81d | 0d | Himanshu [70%] | 8h |
| 705 | 1.4.23 | **Averaging : Swept Sine** | 10d? | 2008-11-11 | 2008-11-25 |  | 93.81d |  |  | 56h |
| 706 | 1.4.23.1 | Design interface/framework | 1.43d? | 2008-11-11 | 2008-11-13 | 704 | 93.81d | 0d | Himanshu [70%] | 8h |
| 707 | 1.4.23.2 | Partial average Result Calculation | 1.43d? | 2008-11-13 | 2008-11-14 | 706 | 93.81d | 0d | Himanshu [70%] | 8h |
| 708 | 1.4.23.3 | reviews with tech leads | 0.71d? | 2008-11-14 | 2008-11-17 | 707 | 93.81d | 0d | Himanshu [70%] | 4h |
| 709 | 1.4.23.4 | Implementation | 2.86d? | 2008-11-17 | 2008-11-20 | 708 | 93.81d | 0d | Himanshu [70%] | 16h |
| 710 | 1.4.23.5 | Verification | 1.43d? | 2008-11-20 | 2008-11-21 | 709 | 93.81d | 0d | Himanshu [70%] | 8h |
| 711 | 1.4.23.6 | Unit testing | 1.43d? | 2008-11-21 | 2008-11-25 | 710 | 93.81d | 0d | Himanshu [70%] | 8h |
| 712 | 1.4.23.7 | Code Review | 0.71d? | 2008-11-25 | 2008-11-25 | 711 | 93.81d | 0d | Himanshu [70%] | 4h |

| ID | WBS | Task | Duration | Start | Finish | Predecessors | Total slack | Free slack | Resources | Work |
| --- | --- | --- | --- | --- | --- | --- | --- | --- | --- | --- |
| 713 | 1.4.24 | **Averaging : Octave** | 16.71d? | 2008-11-25 | 2008-12-18 |  | 92.81d |  |  | 88h |
| 714 | 1.4.24.1 | Design interface/framework | 1.43d? | 2008-11-25 | 2008-11-27 | 712 | 93.81d | 0d | Himanshu [70%] | 8h |
| 715 | 1.4.24.2 | Partial average Result Calculation | 1.43d? | 2008-11-27 | 2008-11-28 | 714 | 93.81d | 0d | Himanshu [70%] | 8h |
| 716 | 1.4.24.3 | reviews with tech leads | 1.43d? | 2008-11-28 | 2008-12-02 | 715 | 93.81d | 0d | Himanshu [70%] | 8h |
| 717 | 1.4.24.4 | Implementation | 5.71d? | 2008-12-02 | 2008-12-10 | 716 | 92.81d | 0d | Himanshu [70%] | 32h |
| 718 | 1.4.24.5 | Verification | 2.86d? | 2008-12-10 | 2008-12-15 | 717 | 92.81d | 0d | Himanshu [70%] | 16h |
| 719 | 1.4.24.6 | Unit testing | 1.43d? | 2008-12-15 | 2008-12-17 | 718 | 92.81d | 0d | Himanshu [70%] | 8h |
| 720 | 1.4.24.7 | Code Review | 1.43d? | 2008-12-17 | 2008-12-18 | 719 | 92.81d | 0d | Himanshu [70%] | 8h |
| 721 | 1.4.25 | **Analyzer mode management :: FFT Analyzer** | 8.57d? | 2009-02-06 | 2009-02-18 |  | 49d |  |  | 48h |
| 722 | 1.4.25.1 | Design interface/Framework for mode change | 1.43d? | 2009-02-06 | 2009-02-09 | 684, 663 | 49d | 0d | RKB [70%] | 8h |
| 723 | 1.4.25.2 | Review with tech leads | 0.71d? | 2009-02-09 | 2009-02-10 | 722 | 49d | 0d | RKB [70%] | 4h |
| 724 | 1.4.25.3 | implementation | 4.29d? | 2009-02-10 | 2009-02-16 | 723 | 49d | 0d | RKB [70%] | 24h |
| 725 | 1.4.25.4 | Unit testing | 1.43d? | 2009-02-16 | 2009-02-18 | 724 | 49d | 0d | RKB [70%] | 8h |
| 726 | 1.4.25.5 | Code Review | 0.71d | 2009-02-18 | 2009-02-18 | 725 | 49d | 0d | RKB [70%] | 4h |
| 727 | 1.4.26 | **Analyzer mode management: Swept Sine** | 7.86d? | 2009-02-18 | 2009-03-02 |  | 49d |  |  | 44h |
| 728 | 1.4.26.1 | Design interface/Framework for mode change | 1.43d? | 2009-02-18 | 2009-02-20 | 726 | 49d | 0d | RKB [70%] | 8h |
| 729 | 1.4.26.2 | Review with tech leads | 0.71d? | 2009-02-20 | 2009-02-20 | 728 | 49d | 0d | RKB [70%] | 4h |
| 730 | 1.4.26.3 | implementation | 3.57d? | 2009-02-20 | 2009-02-26 | 729 | 49d | 0d | RKB [70%] | 20h |
| 731 | 1.4.26.4 | Unit testing | 1.43d? | 2009-02-26 | 2009-02-27 | 730 | 49d | 0d | RKB [70%] | 8h |
| 732 | 1.4.26.5 | Code Review | 0.71d | 2009-02-27 | 2009-03-02 | 731 | 49d | 0d | RKB [70%] | 4h |
| 733 | 1.4.27 | **Analyzer mode management: Octave** | 10d? | 2009-03-02 | 2009-03-16 |  | 48.57d |  |  | 52h |
| 734 | 1.4.27.1 | Design interface/Framework for mode change | 1.43d? | 2009-03-02 | 2009-03-04 | 732, 731 | 49d | 0d | RKB [70%] | 8h |
| 735 | 1.4.27.2 | Review with tech leads | 1.43d? | 2009-03-04 | 2009-03-05 | 734 | 49d | 0d | RKB [70%] | 8h |
| 736 | 1.4.27.3 | implementation | 3.57d? | 2009-03-05 | 2009-03-11 | 735 | 49d | 0d | RKB [70%] | 20h |
| 737 | 1.4.27.4 | Unit testing | 2.14d? | 2009-03-11 | 2009-03-13 | 736 | 48.57d | 0d | RKB [70%] | 12h |
| 738 | 1.4.27.5 | Code Review | 0.71d | 2009-03-13 | 2009-03-16 | 737 | 48.57d |  | RKB [70%] | 4h |

| ID | WBS | Task | Duration | Start | Finish | Predecessors | Total slack | Free slack | Resources | Work |
| --- | --- | --- | --- | --- | --- | --- | --- | --- | --- | --- |
| 739 | 1.4.28 | **Error & Exception** | 2.86d? | 2008-12-18 | 2008-12-23 |  | 92.81d |  |  | 16h |
| 740 | 1.4.28.1 | Define Error code for AL | 1.43d? | 2008-12-18 | 2008-12-19 | 720 | 92.81d | 0d | Himanshu [70%] | 8h |
| 741 | 1.4.28.2 | Provide Error code Vs Description string | 1.43d? | 2008-12-19 | 2008-12-23 | 740 | 92.81d | 0d | Himanshu [70%] | 8h |
| 742 | 1.4.29 | **Marker measurements** | 62.99d? | 2008-12-23 | 2009-03-20 |  | 44.83d |  |  | 184h |
| 743 | 1.4.29.1 | Design Marker support in AML | 2.31d? | 2009-02-23 | 2009-02-25 | 604 | 44.83d | 0d | Pallavi [65%] | 12h |
| 744 | 1.4.29.2 | Review with Tech leads | 0.77d? | 2009-02-25 | 2009-02-26 | 743 | 44.83d | 0d | Pallavi [65%] | 4h |
| 745 | 1.4.29.3 | Implementation : THD | 1.54d? | 2009-02-26 | 2009-02-27 | 744 | 44.83d | 0d | Pallavi [65%] | 8h |
| 746 | 1.4.29.4 | Unit Testing : THD | 0.77d? | 2009-02-27 | 2009-03-02 | 745 | 44.83d | 0d | Pallavi [65%] | 4h |
| 747 | 1.4.29.5 | Implementation : THD + n | 1.54d? | 2009-03-02 | 2009-03-04 | 746 | 44.83d | 0d | Pallavi [65%] | 8h |
| 748 | 1.4.29.6 | Unit Testing : THD+n | 0.77d? | 2009-03-04 | 2009-03-04 | 747 | 44.83d | 0d | Pallavi [65%] | 4h |
| 749 | 1.4.29.7 | Implementation : ENOB | 1.54d? | 2009-03-04 | 2009-03-06 | 748 | 44.83d | 0d | Pallavi [65%] | 8h |
| 750 | 1.4.29.8 | Unit Testing : ENOB | 0.77d? | 2009-03-06 | 2009-03-09 | 749 | 44.83d | 0d | Pallavi [65%] | 4h |
| 751 | 1.4.29.9 | Implementation : SNR | 1.54d? | 2009-03-09 | 2009-03-10 | 750 | 44.83d | 0d | Pallavi [65%] | 8h |
| 752 | 1.4.29.10 | Unit Testing : SNR | 0.77d? | 2009-03-10 | 2009-03-11 | 751 | 44.83d | 0d | Pallavi [65%] | 4h |
| 753 | 1.4.29.11 | Implementation : SFDR | 1.54d? | 2009-03-11 | 2009-03-12 | 752 | 44.83d | 0d | Pallavi [65%] | 8h |
| 754 | 1.4.29.12 | Unit Testing : SFDR | 0.77d? | 2009-03-12 | 2009-03-13 | 753 | 44.83d | 0d | Pallavi [65%] | 4h |
| 755 | 1.4.29.13 | Implementation : SINAD | 1.54d? | 2009-03-13 | 2009-03-17 | 754 | 44.83d | 0d | Pallavi [65%] | 8h |
| 756 | 1.4.29.14 | Unit Testing : SINAD | 0.77d? | 2009-03-17 | 2009-03-18 | 755 | 44.83d | 0d | Pallavi [65%] | 4h |
| 757 | 1.4.29.15 | Implementation : Frequency Damping | 1.54d? | 2009-03-18 | 2009-03-19 | 756 | 44.83d | 0d | Pallavi [65%] | 8h |
| 758 | 1.4.29.16 | Unit Testing : Frequency Damping | 0.77d? | 2009-03-19 | 2009-03-20 | 757 | 44.83d |  | Pallavi [65%] | 4h |
| 759 | 1.4.29.17 | Implementation : Decay Time | 1.43d? | 2008-12-23 | 2008-12-24 | 741 | 92.81d | 0d | Himanshu [70%] | 8h |
| 760 | 1.4.29.18 | Unit Testing : Decay Time | 0.71d? | 2008-12-24 | 2008-12-26 | 759 | 91.81d | 0d | Himanshu [70%] | 4h |
| 761 | 1.4.29.19 | Implementation :Rise Time | 1.43d? | 2008-12-26 | 2008-12-29 | 760 | 91.81d | 0d | Himanshu [70%] | 8h |
| 762 | 1.4.29.20 | Unit Testing : Rise Time | 0.71d? | 2008-12-29 | 2008-12-30 | 761 | 91.81d | 0d | Himanshu [70%] | 4h |
| 763 | 1.4.29.21 | Implementation : setting Time | 1.43d? | 2008-12-30 | 2009-01-01 | 762 | 91.81d | 0d | Himanshu [70%] | 8h |
| 764 | 1.4.29.22 | Unit Testing : setting Time | 0.71d? | 2009-01-01 | 2009-01-01 | 763 | 91.81d | 0d | Himanshu [70%] | 4h |
| 765 | 1.4.29.23 | Implementation : Delay Time | 1.43d? | 2009-01-01 | 2009-01-05 | 764 | 91.81d | 0d | Himanshu [70%] | 8h |
| 766 | 1.4.29.24 | Unit Testing : Delay Time | 0.71d? | 2009-01-05 | 2009-01-05 | 765 | 91.81d | 0d | Himanshu [70%] | 4h |
| 767 | 1.4.29.25 | Implementation : Pulse width | 1.43d? | 2009-01-05 | 2009-01-07 | 766 | 91.81d | 0d | Himanshu [70%] | 8h |
| 768 | 1.4.29.26 | Unit Testing : Pulse width | 0.71d? | 2009-01-07 | 2009-01-08 | 767 | 91.81d | 0d | Himanshu [70%] | 4h |
| 769 | 1.4.29.27 | Implementation : Voltage Max | 1.43d? | 2009-01-08 | 2009-01-09 | 768 | 91.81d | 0d | Himanshu [70%] | 8h |
| 770 | 1.4.29.28 | Unit Testing : Voltage Max | 0.71d? | 2009-01-09 | 2009-01-12 | 769 | 91.81d | 0d | Himanshu [70%] | 4h |
| 771 | 1.4.29.29 | Implementation : Voltage Min | 1.43d? | 2009-01-12 | 2009-01-13 | 770 | 91.81d | 0d | Himanshu [70%] | 8h |
| 772 | 1.4.29.30 | Unit Testing : Voltage Min | 0.71d? | 2009-01-13 | 2009-01-14 | 771 | 91.81d |  | Himanshu [70%] | 4h |

| ID | WBS | Task | Duration | Start | Finish | Predecessors | Total slack | Free slack | Resources | Work | Text1 |
| --- | --- | --- | --- | --- | --- | --- | --- | --- | --- | --- | --- |
| 773 | 1.5 | **Measurement Layer** | 329.15d? | 2008-02-04 | 2009-05-08 |  | 9.99d |  |  | 5779.6h |  |
| 774 | 1.5.1 | **Managed interface definition** | 71.15d? | 2008-02-21 | 2008-06-02 |  | 9.99d |  |  | 320h |  |
| 775 | 1.5.1.1 | **Defining (first pass)interfaces for all MVP meas** | 2.86d | 2008-02-21 | 2008-02-26 |  | 9.99d |  |  | 16h | P1 |
| 776 | 1.5.1.1.1 | Review with team & Incorporate Review decisions | 2.86d | 2008-02-21 | 2008-02-26 | 1556 | 9.99d | 0d | Kapil [70%] | 16h |  |
| 777 | 1.5.1.2 | **Transforms** | 5d? | 2008-02-26 | 2008-03-04 |  | 9.99d |  |  | 28h |  |
| 778 | 1.5.1.2.1 | FFT | 0.71d? | 2008-02-26 | 2008-02-27 | 776 | 9.99d | 0d | Kapil [70%] | 4h | P1 |
| 779 | 1.5.1.2.2 | STFT | 0.71d? | 2008-02-27 | 2008-02-28 | 778 | 9.99d | 0d | Kapil [70%] | 4h | P4 |
| 780 | 1.5.1.2.3 | Windowing | 0.71d | 2008-02-28 | 2008-02-28 | 779 | 9.99d | 0d | Kapil [70%] | 4h | P1 |
| 781 | 1.5.1.2.4 | Window coeff for IE needs, Managed & Unmanaged | 1.43d? | 2008-02-28 | 2008-03-03 | 780 | 9.99d | 0d | Kapil [70%] | 8h | P1 |
| 782 | 1.5.1.2.5 | Resampling | 0.71d | 2008-03-03 | 2008-03-03 | 781 | 9.99d | 0d | Kapil [70%] | 4h | P3 |
| 783 | 1.5.1.2.6 | ZoomFFT | 0.71d | 2008-03-04 | 2008-03-04 | 782 | 9.99d | 0d | Kapil [70%] | 4h | P3 |
| 784 | 1.5.1.3 | **Spectrums** | 4.57d? | 2008-03-18 | 2008-03-25 |  | 9.99d |  |  | 20h |  |
| 785 | 1.5.1.3.1 | Linear | 0.71d | 2008-03-18 | 2008-03-19 | 1544 | 10.99d | 0d | Kapil [70%] | 4h | P1 |
| 786 | 1.5.1.3.2 | Power | 0.71d? | 2008-03-19 | 2008-03-20 | 785 | 10.99d | 0d | Kapil [70%] | 4h | P1 |
| 787 | 1.5.1.3.3 | Phase | 0.71d? | 2008-03-20 | 2008-03-20 | 786 | 10.99d | 0d | Kapil [70%] | 4h | P2 |
| 788 | 1.5.1.3.4 | Auto power | 0.71d? | 2008-03-20 | 2008-03-24 | 787 | 9.99d | 0d | Kapil [70%] | 4h | P2 |
| 789 | 1.5.1.3.5 | Cross power | 0.71d? | 2008-03-24 | 2008-03-25 | 788 | 9.99d | 0d | Kapil [70%] | 4h | P2 |
| 790 | 1.5.1.4 | **Filters** | 7.14d? | 2008-03-25 | 2008-04-03 |  | 9.99d |  |  | 40h | P5 |
| 791 | 1.5.1.4.1 | Weighting filters | 2.86d? | 2008-03-25 | 2008-03-28 | 789 | 9.99d | 0d | Kapil [70%] | 16h |  |
| 792 | 1.5.1.4.2 | CCIR | 2.14d? | 2008-03-28 | 2008-04-01 | 791 | 9.99d | 0d | Kapil [70%] | 12h |  |
| 793 | 1.5.1.4.3 | Low Pass, high pass, band pass, notch | 2.14d? | 2008-04-01 | 2008-04-03 | 792 | 10.99d | 0d | Kapil [70%] | 12h |  |
| 794 | 1.5.1.5 | **Distortion** | 4.29d? | 2008-04-03 | 2008-04-09 |  | 11.99d |  |  | 24h |  |
| 795 | 1.5.1.5.1 | THD | 0.71d? | 2008-04-03 | 2008-04-04 | 793 | 11.99d | 0d | Kapil [70%] | 4h | P1 |
| 796 | 1.5.1.5.2 | THD + Noise | 0.71d? | 2008-04-04 | 2008-04-04 | 795 | 11.99d | 0d | Kapil [70%] | 4h | P1 |
| 797 | 1.5.1.5.3 | SINAD | 0.71d? | 2008-04-04 | 2008-04-07 | 796 | 11.99d | 0d | Kapil [70%] | 4h | P3 |
| 798 | 1.5.1.5.4 | ENOB | 0.71d? | 2008-04-07 | 2008-04-08 | 797 | 11.99d | 0d | Kapil [70%] | 4h | P3 |
| 799 | 1.5.1.5.5 | SNR | 0.71d? | 2008-04-08 | 2008-04-09 | 798 | 11.99d | 0d | Kapil [70%] | 4h | P3 |
| 800 | 1.5.1.5.6 | SFDR | 0.71d? | 2008-04-09 | 2008-04-09 | 799 | 11.99d | 0d | Kapil [70%] | 4h | P3 |
| 801 | 1.5.1.6 | Averaging | 4.29d? | 2008-04-09 | 2008-04-17 | 800 | 11.99d | 0d | Kapil [70%] | 24h | P2 |
| 802 | 1.5.1.7 | Coherence | 1.43d? | 2008-04-17 | 2008-04-21 | 801 | 10.99d | 0d | Kapil [70%] | 8h | P2 |

Notes:
- 775: MVP meas defined
- 781: Need to understand what IE needs

| ID | WBS | Task | Duration | Start | Finish | Predecessors | Total slack | Free slack | Resources | Work | Text1 |
| --- | --- | --- | --- | --- | --- | --- | --- | --- | --- | --- | --- |
| 803 | 1.5.1.8 | **Signal Generation** | 4.29d? | 2008-04-21 | 2008-04-25 |  | 10.99d |  |  | 24h |  |
| 804 | 1.5.1.8.1 | Sine | 0.71d? | 2008-04-21 | 2008-04-22 | 802 | 10.99d | 0d | Kapil [70%] | 4h | P2 |
| 805 | 1.5.1.8.2 | Square | 0.71d? | 2008-04-22 | 2008-04-22 | 804 | 10.99d | 0d | Kapil [70%] | 4h | P3 |
| 806 | 1.5.1.8.3 | **Noise** | 2.86d? | 2008-04-22 | 2008-04-25 |  | 10.99d |  |  | 16h | P3 |
| 807 | 1.5.1.8.3.1 | Random | 0.71d? | 2008-04-22 | 2008-04-23 | 805 | 10.99d | 0d | Kapil [70%] | 4h |  |
| 808 | 1.5.1.8.3.2 | Pink | 0.71d? | 2008-04-23 | 2008-04-24 | 807 | 10.99d | 0d | Kapil [70%] | 4h |  |
| 809 | 1.5.1.8.3.3 | White | 0.71d? | 2008-04-24 | 2008-04-25 | 808 | 10.99d | 0d | Kapil [70%] | 4h |  |
| 810 | 1.5.1.8.3.4 | Gaussian | 0.71d? | 2008-04-25 | 2008-04-25 | 809 | 10.99d | 0d | Kapil [70%] | 4h |  |
| 811 | 1.5.1.9 | Octave | 1.43d? | 2008-04-25 | 2008-04-29 | 810 | 10.99d | 0d | Kapil [70%] | 8h | P6 |
| 812 | 1.5.1.10 | **Math** | 6.71d? | 2008-04-29 | 2008-05-07 |  | 9.99d |  |  | 32h | P6 |
| 813 | 1.5.1.10.1 | Cepstrum | 0.71d? | 2008-04-29 | 2008-04-29 | 811 | 10.99d | 0d | Kapil [70%] | 4h |  |
| 814 | 1.5.1.10.2 | Basic Complex math | 0.71d? | 2008-04-29 | 2008-04-30 | 813 | 10.99d | 0d | Kapil [70%] | 4h |  |
| 815 | 1.5.1.10.3 | Hilbert | 1.43d? | 2008-04-30 | 2008-05-05 | 814 | 9.99d | 0d | Kapil [70%] | 8h |  |
| 816 | 1.5.1.10.4 | Conversions | 1.43d? | 2008-05-05 | 2008-05-06 | 815 | 9.99d | 0d | Kapil [70%] | 8h |  |
| 817 | 1.5.1.10.5 | Differentiation/Integration | 0.71d? | 2008-05-06 | 2008-05-07 | 816 | 9.99d | 0d | Kapil [70%] | 4h |  |
| 818 | 1.5.1.10.6 | Statistical (mean,mode…) | 0.71d? | 2008-05-07 | 2008-05-07 | 817 | 9.99d | 0d | Kapil [70%] | 4h |  |
| 819 | 1.5.1.11 | **Limit lines** | 1.43d? | 2008-05-07 | 2008-05-09 |  | 9.99d |  |  | 8h | P6 |
| 820 | 1.5.1.11.1 | Upper limit | 0.71d? | 2008-05-07 | 2008-05-08 | 818 | 9.99d | 0d | Kapil [70%] | 4h |  |
| 821 | 1.5.1.11.2 | Lower limit | 0.71d? | 2008-05-08 | 2008-05-09 | 820 | 9.99d | 0d | Kapil [70%] | 4h |  |
| 822 | 1.5.1.12 | **Swept Sine** | 5d? | 2008-05-09 | 2008-05-16 |  | 9.99d |  |  | 28h |  |
| 823 | 1.5.1.12.1 | Gain, Phase margins | 0.71d? | 2008-05-09 | 2008-05-12 | 821 | 9.99d | 0d | Kapil [70%] | 4h | P5 |
| 824 | 1.5.1.12.2 | Frequency, Damping | 0.71d? | 2008-05-12 | 2008-05-12 | 823 | 9.99d | 0d | Kapil [70%] | 4h | P5 |
| 825 | 1.5.1.12.3 | Frequency Response | 1.43d? | 2008-05-12 | 2008-05-14 | 824 | 9.99d | 0d | Kapil [70%] | 8h | P2 |
| 826 | 1.5.1.12.4 | Variance | 0.71d? | 2008-05-14 | 2008-05-14 | 825 | 9.99d | 0d | Kapil [70%] | 4h | P5 |
| 827 | 1.5.1.12.5 | Group Delay | 1.43d? | 2008-05-14 | 2008-05-16 | 826 | 9.99d | 0d | Kapil [70%] | 8h | P2 |

| ID | WBS | Task | Duration | Start | Finish | Predecessors | Total slack | Free slack | Resources | Work | Text1 |
| --- | --- | --- | --- | --- | --- | --- | --- | --- | --- | --- | --- |
| 828 | 1.5.1.13 | **Marker Functions** | 4.29d? | 2008-05-16 | 2008-05-22 |  | 9.99d |  |  | 24h | P4 |
| 829 | 1.5.1.13.1 | Peak Search | 0.71d? | 2008-05-16 | 2008-05-19 | 827 | 9.99d | 0d | Kapil [70%] | 4h |  |
| 830 | 1.5.1.13.2 | Next Largest Peak | 0.71d? | 2008-05-19 | 2008-05-19 | 829 | 9.99d | 0d | Kapil [70%] | 4h |  |
| 831 | 1.5.1.13.3 | Next Peak Right | 0.71d? | 2008-05-19 | 2008-05-20 | 830 | 9.99d | 0d | Kapil [70%] | 4h |  |
| 832 | 1.5.1.13.4 | Next Peak Left | 0.71d? | 2008-05-20 | 2008-05-21 | 831 | 9.99d | 0d | Kapil [70%] | 4h |  |
| 833 | 1.5.1.13.5 | Peak Tracking | 0.71d? | 2008-05-21 | 2008-05-21 | 832 | 9.99d | 0d | Kapil [70%] | 4h |  |
| 834 | 1.5.1.13.6 | Marker to Center | 0.71d? | 2008-05-21 | 2008-05-22 | 833 | 9.99d | 0d | Kapil [70%] | 4h |  |
| 835 | 1.5.1.14 | Orbit | 0.71d? | 2008-05-22 | 2008-05-23 | 834 | 9.99d | 0d | Kapil [70%] | 4h | P3 |
| 836 | 1.5.1.15 | **Time measurements** | 5.71d? | 2008-05-23 | 2008-06-02 |  | 9.99d |  |  | 32h | P4 |
| 837 | 1.5.1.15.1 | Delay time function | 0.71d? | 2008-05-23 | 2008-05-26 | 835 | 9.99d | 0d | Kapil [70%] | 4h |  |
| 838 | 1.5.1.15.2 | Maximum overshoot | 0.71d? | 2008-05-26 | 2008-05-26 | 837 | 9.99d | 0d | Kapil [70%] | 4h |  |
| 839 | 1.5.1.15.3 | Rise time | 0.71d? | 2008-05-26 | 2008-05-27 | 838 | 9.99d | 0d | Kapil [70%] | 4h |  |
| 840 | 1.5.1.15.4 | Decay Time | 0.71d? | 2008-05-27 | 2008-05-28 | 839 | 9.99d | 0d | Kapil [70%] | 4h |  |
| 841 | 1.5.1.15.5 | Pulse Width | 0.71d? | 2008-05-28 | 2008-05-28 | 840 | 9.99d | 0d | Kapil [70%] | 4h |  |
| 842 | 1.5.1.15.6 | Voltage Max | 0.71d? | 2008-05-28 | 2008-05-29 | 841 | 9.99d | 0d | Kapil [70%] | 4h |  |
| 843 | 1.5.1.15.7 | Voltage Min | 0.71d? | 2008-05-29 | 2008-05-30 | 842 | 9.99d | 0d | Kapil [70%] | 4h |  |
| 844 | 1.5.1.15.8 | Settling time | 0.71d? | 2008-05-30 | 2008-06-02 | 843 | 9.99d | 0d | Kapil [70%] | 4h |  |
| 845 | 1.5.2 | **Data model design** | 6.43d? | 2008-06-02 | 2008-06-10 |  | 9.99d |  |  | 36h | P1 |
| 846 | 1.5.2.1 | Review the current design/implementation | 0.71d? | 2008-06-02 | 2008-06-02 | 844 | 9.99d | 0d | Kapil [70%] | 4h |  |
| 847 | 1.5.2.2 | Complete the implementation | 2.86d? | 2008-06-02 | 2008-06-05 | 846 | 9.99d | 0d | Kapil [70%] | 16h |  |
| 848 | 1.5.2.3 | Review with the team & update | 1.43d? | 2008-06-05 | 2008-06-09 | 847 | 9.99d | 0d | Kapil [70%] | 8h |  |
| 849 | 1.5.2.4 | Build some test cases | 1.43d? | 2008-06-09 | 2008-06-10 | 848 | 9.99d | 0d | Kapil [70%] | 8h |  |
| 850 | 1.5.3 | **Infrastrucutre development** | 12.14d? | 2008-06-10 | 2008-06-26 |  | 9.99d |  |  | 68h | P1 |
| 851 | 1.5.3.1 | VS Project setup and tuning | 2.86d? | 2008-06-10 | 2008-06-13 | 849 | 9.99d | 0d | Kapil [70%] | 16h |  |
| 852 | 1.5.3.2 | Performance test framework and setup | 2.86d? | 2008-06-13 | 2008-06-18 | 851 | 9.99d | 0d | Kapil [70%] | 16h |  |
| 853 | 1.5.3.3 | Verfication test process and guidelines | 3.57d? | 2008-06-18 | 2008-06-23 | 852 | 9.99d | 0d | Kapil [70%] | 20h |  |
| 854 | 1.5.3.4 | Documentation tool setup for library users | 0.71d? | 2008-06-23 | 2008-06-24 | 853 | 9.99d | 0d | Kapil [70%] | 4h |  |
| 855 | 1.5.3.5 | FxCop setup | 2.14d? | 2008-06-24 | 2008-06-26 | 854 | 9.99d | 0d | Kapil [70%] | 12h |  |

| ID | WBS | Task | Duration | Start | Finish | Predecessors | Total slack | Free slack | Resources | Work | Text1 |
| --- | --- | --- | --- | --- | --- | --- | --- | --- | --- | --- | --- |
| 856 | 1.5.4 | **Research/Implementation** | 329.15d? | 2008-02-04 | 2009-05-08 |  | 9.99d |  |  | 3183.6h |  |
| 857 | 1.5.4.1 | **FFT** | 8.57d? | 2008-06-26 | 2008-07-09 |  | 9.99d |  |  | 48h | P2 |
| 858 | 1.5.4.1.1 | Review meas catalog & update | 0.71d? | 2008-06-26 | 2008-06-27 | 855 | 9.99d | 0d | Kapil [70%] | 4h |  |
| 859 | 1.5.4.1.2 | Review managed & Native interface definitions | 0.71d? | 2008-06-27 | 2008-06-30 | 858 | 9.99d | 0d | Kapil [70%] | 4h |  |
| 860 | 1.5.4.1.3 | Implementation | 2.14d? | 2008-06-30 | 2008-07-02 | 859 | 9.99d | 0d | Kapil [70%] | 12h |  |
| 861 | 1.5.4.1.4 | Unit test the code | 0.71d? | 2008-07-02 | 2008-07-02 | 860 | 9.99d | 0d | Kapil [70%] | 4h |  |
| 862 | 1.5.4.1.5 | **Verifcation** | 2.14d? | 2008-07-02 | 2008-07-07 |  | 9.99d |  |  | 12h |  |
| 863 | 1.5.4.1.5.1 | Develop the verification code in Matlab | 0.71d? | 2008-07-02 | 2008-07-03 | 861 | 9.99d | 0d | Kapil [70%] | 4h |  |
| 864 | 1.5.4.1.5.2 | Define the test input data & pass to ML & MATLAB | 0.71d? | 2008-07-03 | 2008-07-04 | 863 | 9.99d | 0d | Kapil [70%] | 4h |  |
| 865 | 1.5.4.1.5.3 | Compare the outputs | 0.71d? | 2008-07-04 | 2008-07-07 | 864 | 9.99d | 0d | Kapil [70%] | 4h |  |
| 866 | 1.5.4.1.6 | Measure performance & document mesaurements | 1.43d? | 2008-07-07 | 2008-07-08 | 865 | 9.99d | 0d | Kapil [70%] | 8h |  |
| 867 | 1.5.4.1.7 | Interface definition, code, Nunit , Result & Doc review | 0.71d? | 2008-07-08 | 2008-07-09 | 866 | 9.99d | 0d | Kapil [70%] | 4h |  |
| 868 | 1.5.4.2 | **STFT** | 10.71d? | 2008-07-09 | 2008-07-23 |  | 9.99d |  |  | 60h | P5 |
| 869 | 1.5.4.2.1 | Review meas catalog & update | 0.71d? | 2008-07-09 | 2008-07-09 | 867 | 9.99d | 0d | Kapil [70%] | 4h |  |
| 870 | 1.5.4.2.2 | Review managed & Native interface definitions | 0.71d? | 2008-07-09 | 2008-07-10 | 869 | 9.99d | 0d | Kapil [70%] | 4h |  |
| 871 | 1.5.4.2.3 | Implementation Write code | 5d? | 2008-07-10 | 2008-07-17 | 870 | 9.99d | 0d | Kapil [70%] | 28h |  |
| 872 | 1.5.4.2.4 | Unit test the code | 0.71d? | 2008-07-17 | 2008-07-18 | 871 | 9.99d | 0d | Kapil [70%] | 4h |  |
| 873 | 1.5.4.2.5 | **Verifcation** | 2.14d? | 2008-07-18 | 2008-07-22 |  | 9.99d |  |  | 12h |  |
| 874 | 1.5.4.2.5.1 | Develop the verification code in Matlab | 0.71d? | 2008-07-18 | 2008-07-21 | 872 | 9.99d | 0d | Kapil [70%] | 4h |  |
| 875 | 1.5.4.2.5.2 | Define the test input data & pass to ML & MATLAB | 0.71d? | 2008-07-21 | 2008-07-21 | 874 | 9.99d | 0d | Kapil [70%] | 4h |  |
| 876 | 1.5.4.2.5.3 | Compare the outputs | 0.71d? | 2008-07-21 | 2008-07-22 | 875 | 9.99d | 0d | Kapil [70%] | 4h |  |
| 877 | 1.5.4.2.6 | Measure performance & document mesaurements | 0.71d? | 2008-07-22 | 2008-07-23 | 876 | 9.99d | 0d | Kapil [70%] | 4h |  |
| 878 | 1.5.4.2.7 | Interface definition, code, Nunit , Result & Doc review | 0.71d? | 2008-07-23 | 2008-07-23 | 877 | 9.99d | 0d | Kapil [70%] | 4h |  |
| 879 | 1.5.4.3 | **Windowing** | 7.14d? | 2008-07-23 | 2008-08-04 |  | 9.99d |  |  | 40h | P2 |
| 880 | 1.5.4.3.1 | Review meas catalog & update | 0.71d? | 2008-07-23 | 2008-07-24 | 878 | 9.99d | 0d | Kapil [70%] | 4h |  |
| 881 | 1.5.4.3.2 | Review managed & Native interface definitions | 0.71d? | 2008-07-24 | 2008-07-25 | 880 | 9.99d | 0d | Kapil [70%] | 4h |  |
| 882 | 1.5.4.3.3 | Write code | 1.43d? | 2008-07-25 | 2008-07-28 | 881 | 9.99d | 0d | Kapil [70%] | 8h |  |
| 883 | 1.5.4.3.4 | Unit test the code | 0.71d? | 2008-07-28 | 2008-07-29 | 882 | 9.99d | 0d | Kapil [70%] | 4h |  |

| ID | WBS | Task | Duration | Start | Finish | Predecessors | Total slack | Free slack | Resources | Work | Text1 |
| --- | --- | --- | --- | --- | --- | --- | --- | --- | --- | --- | --- |
| 884 | 1.5.4.3.5 | **Verifcation** | 2.14d? | 2008-07-29 | 2008-07-31 |  | 9.99d |  |  | 12h |  |
| 885 | 1.5.4.3.5.1 | Develop the verification code in Matlab | 0.71d? | 2008-07-29 | 2008-07-30 | 883 | 9.99d | 0d | Kapil [70%] | 4h |  |
| 886 | 1.5.4.3.5.2 | Define the test input data & pass to ML & MATLAB | 0.71d? | 2008-07-30 | 2008-07-30 | 885 | 9.99d | 0d | Kapil [70%] | 4h |  |
| 887 | 1.5.4.3.5.3 | Compare the outputs | 0.71d? | 2008-07-30 | 2008-07-31 | 886 | 9.99d | 0d | Kapil [70%] | 4h |  |
| 888 | 1.5.4.3.6 | Measure performance & document mesaurements | 0.71d? | 2008-07-31 | 2008-08-01 | 887 | 9.99d | 0d | Kapil [70%] | 4h |  |
| 889 | 1.5.4.3.7 | Interface definition, code, Nunit , Result & Doc review | 0.71d? | 2008-08-01 | 2008-08-04 | 888 | 10.99d | 0d | Kapil [70%] | 4h |  |
| 890 | 1.5.4.4 | **Resampling** | 11d? | 2008-08-04 | 2008-08-19 |  | 9.99d |  |  | 56h | P4 |
| 891 | 1.5.4.4.1 | Review meas catalog & update | 1.43d? | 2008-08-04 | 2008-08-05 | 889 | 10.99d | 0d | Kapil [70%] | 8h |  |
| 892 | 1.5.4.4.2 | Review managed & Native interface definitions | 1.43d? | 2008-08-05 | 2008-08-06 | 891 | 10.99d | 0d | Kapil [70%] | 8h |  |
| 893 | 1.5.4.4.3 | Write code | 2.86d? | 2008-08-06 | 2008-08-11 | 892 | 10.99d | 0d | Kapil [70%] | 16h |  |
| 894 | 1.5.4.4.4 | Unit test the code | 0.71d? | 2008-08-11 | 2008-08-12 | 893 | 10.99d | 0d | Kapil [70%] | 4h |  |
| 895 | 1.5.4.4.5 | **Verifcation** | 2.14d? | 2008-08-12 | 2008-08-14 |  | 10.99d |  |  | 12h |  |
| 896 | 1.5.4.4.5.1 | Develop the verification code in Matlab | 0.71d? | 2008-08-12 | 2008-08-13 | 894 | 10.99d | 0d | Kapil [70%] | 4h |  |
| 897 | 1.5.4.4.5.2 | Define the test input data & pass to ML & MATLAB | 0.71d? | 2008-08-13 | 2008-08-13 | 896 | 10.99d | 0d | Kapil [70%] | 4h |  |
| 898 | 1.5.4.4.5.3 | Compare the outputs | 0.71d? | 2008-08-13 | 2008-08-14 | 897 | 10.99d | 0d | Kapil [70%] | 4h |  |
| 899 | 1.5.4.4.6 | Measure performance & document mesaurements | 0.71d? | 2008-08-14 | 2008-08-18 | 898 | 9.99d | 0d | Kapil [70%] | 4h |  |
| 900 | 1.5.4.4.7 | Interface definition, code, Nunit , Result & Doc review | 0.71d? | 2008-08-18 | 2008-08-19 | 899 | 9.99d | 0d | Kapil [70%] | 4h |  |
| 901 | 1.5.4.5 | **ZoomFFT** | 10d? | 2008-08-19 | 2008-09-02 |  | 9.99d |  |  | 56h | P4 |
| 902 | 1.5.4.5.1 | Review meas catalog & update | 0.71d? | 2008-08-19 | 2008-08-19 | 900 | 9.99d | 0d | Kapil [70%] | 4h |  |
| 903 | 1.5.4.5.2 | Review managed & Native interface definitions | 0.71d? | 2008-08-19 | 2008-08-20 | 902 | 9.99d | 0d | Kapil [70%] | 4h |  |
| 904 | 1.5.4.5.3 | Write code | 2.86d? | 2008-08-20 | 2008-08-25 | 903 | 10.99d | 0d | Kapil [70%] | 16h |  |
| 905 | 1.5.4.5.4 | Unit test the code | 1.43d? | 2008-08-25 | 2008-08-26 | 904 | 10.99d | 0d | Kapil [70%] | 8h |  |
| 906 | 1.5.4.5.5 | **Verifcation** | 2.86d? | 2008-08-26 | 2008-08-29 |  | 10.99d |  |  | 16h |  |
| 907 | 1.5.4.5.5.1 | Develop the verification code in Matlab | 1.43d? | 2008-08-26 | 2008-08-28 | 905 | 10.99d | 0d | Kapil [70%] | 8h |  |
| 908 | 1.5.4.5.5.2 | Define the test input data & pass to ML & MATLAB | 0.71d? | 2008-08-28 | 2008-08-28 | 907 | 10.99d | 0d | Kapil [70%] | 4h |  |
| 909 | 1.5.4.5.5.3 | Compare the outputs | 0.71d? | 2008-08-28 | 2008-08-29 | 908 | 10.99d | 0d | Kapil [70%] | 4h |  |
| 910 | 1.5.4.5.6 | Measure performance & document mesaurements | 0.71d? | 2008-08-29 | 2008-09-01 | 909 | 10.99d | 0d | Kapil [70%] | 4h |  |
| 911 | 1.5.4.5.7 | Interface definition, code, Nunit , Result & Doc review | 0.71d? | 2008-09-01 | 2008-09-02 | 910 | 10.99d | 0d | Kapil [70%] | 4h |  |

| ID | WBS | Task | Duration | Start | Finish | Predecessors | Total slack | Free slack | Resources | Work | Text1 |
| --- | --- | --- | --- | --- | --- | --- | --- | --- | --- | --- | --- |
| 912 | 1.5.4.6 | **Spectrums** | 31.57d? | 2008-09-02 | 2008-10-15 |  | 10.99d |  |  | 160h |  |
| 913 | 1.5.4.6.1 | **Linear** | 7.43d? | 2008-09-02 | 2008-09-11 |  | 9.99d |  |  | 36h | P2 |
| 914 | 1.5.4.6.1.1 | Review meas catalog & update | 0.71d? | 2008-09-02 | 2008-09-02 | 911 | 10.99d | 0d | Kapil [70%] | 4h |  |
| 915 | 1.5.4.6.1.2 | Review managed & Native interface definitions | 0.71d? | 2008-09-02 | 2008-09-04 | 914 | 9.99d | 0d | Kapil [70%] | 4h |  |
| 916 | 1.5.4.6.1.3 | Write code | 0.71d? | 2008-09-04 | 2008-09-05 | 915 | 9.99d | 0d | Kapil [70%] | 4h |  |
| 917 | 1.5.4.6.1.4 | Unit test the code | 0.71d? | 2008-09-05 | 2008-09-05 | 916 | 9.99d | 0d | Kapil [70%] | 4h |  |
| 918 | 1.5.4.6.1.5 | **Verifcation** | 2.14d? | 2008-09-05 | 2008-09-10 |  | 9.99d |  |  | 12h |  |
| 919 | 1.5.4.6.1.5.1 | Develop the verification code in Matlab | 0.71d? | 2008-09-05 | 2008-09-08 | 917 | 9.99d | 0d | Kapil [70%] | 4h |  |
| 920 | 1.5.4.6.1.5.2 | Define the test input data & pass to ML & MATLAB | 0.71d? | 2008-09-08 | 2008-09-09 | 919 | 9.99d | 0d | Kapil [70%] | 4h |  |
| 921 | 1.5.4.6.1.5.3 | Compare the outputs | 0.71d? | 2008-09-09 | 2008-09-10 | 920 | 9.99d | 0d | Kapil [70%] | 4h |  |
| 922 | 1.5.4.6.1.6 | Measure performance & document mesaurements | 0.71d? | 2008-09-10 | 2008-09-10 | 921 | 9.99d | 0d | Kapil [70%] | 4h |  |
| 923 | 1.5.4.6.1.7 | Interface definition, code, Nunit , Result & Doc review | 0.71d? | 2008-09-10 | 2008-09-11 | 922 | 9.99d | 0d | Kapil [70%] | 4h |  |
| 924 | 1.5.4.6.2 | **Power** | 6.43d? | 2008-09-11 | 2008-09-19 |  | 9.99d |  |  | 36h | P2 |
| 925 | 1.5.4.6.2.1 | Review meas catalog & update | 0.71d? | 2008-09-11 | 2008-09-12 | 923 | 9.99d | 0d | Kapil [70%] | 4h |  |
| 926 | 1.5.4.6.2.2 | Review managed & Native interface definitions | 0.71d? | 2008-09-12 | 2008-09-12 | 925 | 9.99d | 0d | Kapil [70%] | 4h |  |
| 927 | 1.5.4.6.2.3 | Write code | 0.71d? | 2008-09-12 | 2008-09-15 | 926 | 9.99d | 0d | Kapil [70%] | 4h |  |
| 928 | 1.5.4.6.2.4 | Unit test the code | 0.71d? | 2008-09-15 | 2008-09-16 | 927 | 9.99d | 0d | Kapil [70%] | 4h |  |
| 929 | 1.5.4.6.2.5 | **Verifcation** | 2.14d? | 2008-09-16 | 2008-09-18 |  | 9.99d |  |  | 12h |  |
| 930 | 1.5.4.6.2.5.1 | Develop the verification code in Matlab | 0.71d? | 2008-09-16 | 2008-09-17 | 928 | 9.99d | 0d | Kapil [70%] | 4h |  |
| 931 | 1.5.4.6.2.5.2 | Define the test input data & pass to ML & MATLAB | 0.71d? | 2008-09-17 | 2008-09-17 | 930 | 9.99d | 0d | Kapil [70%] | 4h |  |
| 932 | 1.5.4.6.2.5.3 | Compare the outputs | 0.71d? | 2008-09-17 | 2008-09-18 | 931 | 9.99d | 0d | Kapil [70%] | 4h |  |
| 933 | 1.5.4.6.2.6 | Measure performance & document mesaurements | 0.71d? | 2008-09-18 | 2008-09-19 | 932 | 10.99d | 0d | Kapil [70%] | 4h |  |
| 934 | 1.5.4.6.2.7 | Interface definition, code, Nunit , Result & Doc review | 0.71d? | 2008-09-19 | 2008-09-19 | 933 | 10.99d | 0d | Kapil [70%] | 4h |  |
| 935 | 1.5.4.6.3 | **Phase** | 7.86d? | 2008-09-19 | 2008-10-01 |  | 10.99d |  |  | 44h | P3 |
| 936 | 1.5.4.6.3.1 | Review meas catalog & update | 0.71d? | 2008-09-19 | 2008-09-22 | 934 | 10.99d | 0d | Kapil [70%] | 4h |  |
| 937 | 1.5.4.6.3.2 | Review managed & Native interface definitions | 0.71d? | 2008-09-22 | 2008-09-23 | 936 | 10.99d | 0d | Kapil [70%] | 4h |  |
| 938 | 1.5.4.6.3.3 | Write code | 1.43d? | 2008-09-23 | 2008-09-24 | 937 | 10.99d | 0d | Kapil [70%] | 8h |  |
| 939 | 1.5.4.6.3.4 | Unit test the code | 0.71d? | 2008-09-24 | 2008-09-25 | 938 | 11.99d | 0d | Kapil [70%] | 4h |  |

| ID | WBS | Task | Duration | Start | Finish | Predecessors | Total slack | Free slack | Resources | Work | Text1 |
| --- | --- | --- | --- | --- | --- | --- | --- | --- | --- | --- | --- |
| 940 | 1.5.4.6.3.5 | **Verifcation** | 2.86d? | 2008-09-25 | 2008-09-30 |  | 11.99d |  |  | 16h |  |
| 941 | 1.5.4.6.3.5.1 | Develop the verification code in Matlab | 1.43d? | 2008-09-25 | 2008-09-26 | 939 | 11.99d | 0d | Kapil [70%] | 8h |  |
| 942 | 1.5.4.6.3.5.2 | Define the test input data & pass to ML & MATLAB | 0.71d? | 2008-09-26 | 2008-09-29 | 941 | 11.99d | 0d | Kapil [70%] | 4h |  |
| 943 | 1.5.4.6.3.5.3 | Compare the outputs | 0.71d? | 2008-09-29 | 2008-09-30 | 942 | 11.99d | 0d | Kapil [70%] | 4h |  |
| 944 | 1.5.4.6.3.6 | Measure performance & document mesaurements | 0.71d? | 2008-09-30 | 2008-10-01 | 943 | 11.99d | 0d | Kapil [70%] | 4h |  |
| 945 | 1.5.4.6.3.7 | Interface definition, code, Nunit , Result & Doc review | 0.71d? | 2008-10-01 | 2008-10-01 | 944 | 11.99d | 0d | Kapil [70%] | 4h |  |
| 946 | 1.5.4.6.4 | **Cross power** | 9.86d? | 2008-10-01 | 2008-10-15 |  | 10.99d |  |  | 44h |  |
| 947 | 1.5.4.6.4.1 | Review meas catalog & update | 0.71d? | 2008-10-01 | 2008-10-03 | 945 | 10.99d | 0d | Kapil [70%] | 4h |  |
| 948 | 1.5.4.6.4.2 | Review managed & Native interface definitions | 0.71d? | 2008-10-03 | 2008-10-06 | 947 | 10.99d | 0d | Kapil [70%] | 4h |  |
| 949 | 1.5.4.6.4.3 | Write code | 1.43d? | 2008-10-06 | 2008-10-07 | 948 | 10.99d | 0d | Kapil [70%] | 8h |  |
| 950 | 1.5.4.6.4.4 | Unit test the code | 0.71d? | 2008-10-07 | 2008-10-08 | 949 | 10.99d | 0d | Kapil [70%] | 4h |  |
| 951 | 1.5.4.6.4.5 | **Verifcation** | 3.86d? | 2008-10-08 | 2008-10-14 |  | 10.99d |  |  | 16h |  |
| 952 | 1.5.4.6.4.5.1 | Develop the verification code in Matlab | 1.43d? | 2008-10-08 | 2008-10-10 | 950 | 9.99d | 0d | Kapil [70%] | 8h |  |
| 953 | 1.5.4.6.4.5.2 | Define the test input data & pass to ML & MATLAB | 0.71d? | 2008-10-10 | 2008-10-13 | 952 | 9.99d | 0d | Kapil [70%] | 4h |  |
| 954 | 1.5.4.6.4.5.3 | Compare the outputs | 0.71d? | 2008-10-13 | 2008-10-14 | 953 | 9.99d | 0d | Kapil [70%] | 4h |  |
| 955 | 1.5.4.6.4.6 | Measure performance & document mesaurements | 0.71d? | 2008-10-14 | 2008-10-14 | 954 | 10.99d | 0d | Kapil [70%] | 4h |  |
| 956 | 1.5.4.6.4.7 | Interface definition, code, Nunit , Result & Doc review | 0.71d? | 2008-10-14 | 2008-10-15 | 955 | 10.99d | 0d | Kapil [70%] | 4h |  |
| 957 | 1.5.4.7 | **Limit lines** | 18.86d? | 2008-10-15 | 2008-11-11 |  | 9.99d |  |  | 100h | P7 |
| 958 | 1.5.4.7.1 | Review meas catalog & update | 0.71d? | 2008-10-15 | 2008-10-16 | 956 | 10.99d | 0d | Kapil [70%] | 4h |  |
| 959 | 1.5.4.7.2 | Review managed & Native interface definitions | 0.71d? | 2008-10-16 | 2008-10-17 | 958 | 10.99d | 0d | Kapil [70%] | 4h |  |
| 960 | 1.5.4.7.3 | Write code | 5d? | 2008-10-17 | 2008-10-24 | 959 | 10.99d | 0d | Kapil [70%] | 28h |  |
| 961 | 1.5.4.7.4 | Unit test the code | 2.14d? | 2008-10-24 | 2008-10-29 | 960 | 9.99d | 0d | Kapil [70%] | 12h |  |
| 962 | 1.5.4.7.5 | **Verifcation** | 3.57d? | 2008-10-29 | 2008-11-03 |  | 9.99d |  |  | 20h |  |
| 963 | 1.5.4.7.5.1 | Develop the verification code in Matlab | 1.43d? | 2008-10-29 | 2008-10-30 | 961 | 9.99d | 0d | Kapil [70%] | 8h |  |
| 964 | 1.5.4.7.5.2 | Define the test input data & pass to ML & MATLAB | 1.43d? | 2008-10-30 | 2008-11-03 | 963 | 9.99d | 0d | Kapil [70%] | 8h |  |
| 965 | 1.5.4.7.5.3 | Compare the outputs | 0.71d? | 2008-11-03 | 2008-11-03 | 964 | 9.99d | 0d | Kapil [70%] | 4h |  |
| 966 | 1.5.4.7.6 | Measure performance & document mesaurements | 0.71d? | 2008-11-03 | 2008-11-04 | 965 | 9.99d | 0d | Kapil [70%] | 4h |  |
| 967 | 1.5.4.7.7 | Interface definition, code, Nunit , Result & Doc review | 0.71d? | 2008-11-04 | 2008-11-05 | 966 | 9.99d | 0d | Kapil [70%] | 4h |  |
| 968 | 1.5.4.7.8 | Upper limit | 2.14d? | 2008-11-05 | 2008-11-07 | 967 | 9.99d | 0d | Kapil [70%] | 12h |  |
| 969 | 1.5.4.7.9 | Lower limit | 2.14d? | 2008-11-07 | 2008-11-11 | 968 | 9.99d | 0d | Kapil [70%] | 12h |  |

| ID | WBS | Task | Duration | Start | Finish | Predecessors | Total slack | Free slack | Resources | Work | Text1 |
| --- | --- | --- | --- | --- | --- | --- | --- | --- | --- | --- | --- |
| 970 | 1.5.4.8 | **Swept Sine** | 14.29d? | 2008-11-11 | 2008-12-01 |  | 9.99d |  |  | 80h | P6 |
| 971 | 1.5.4.8.1 | Review meas catalog & update | 0.71d? | 2008-11-11 | 2008-11-12 | 969 | 9.99d | 0d | Kapil [70%] | 4h |  |
| 972 | 1.5.4.8.2 | Review managed & Native interface definitions | 1.43d? | 2008-11-12 | 2008-11-13 | 971 | 9.99d | 0d | Kapil [70%] | 8h |  |
| 973 | 1.5.4.8.3 | Write code | 5d? | 2008-11-13 | 2008-11-20 | 972 | 9.99d | 0d | Kapil [70%] | 28h |  |
| 974 | 1.5.4.8.4 | Unit test the code | 2.14d? | 2008-11-20 | 2008-11-24 | 973 | 9.99d | 0d | Kapil [70%] | 12h |  |
| 975 | 1.5.4.8.5 | **Verifcation** | 3.57d? | 2008-11-24 | 2008-11-28 |  | 9.99d |  |  | 20h |  |
| 976 | 1.5.4.8.5.1 | Develop the verification code in Matlab | 1.43d? | 2008-11-24 | 2008-11-26 | 974 | 9.99d | 0d | Kapil [70%] | 8h |  |
| 977 | 1.5.4.8.5.2 | Define the test input data & pass to ML & MATLAB | 1.43d? | 2008-11-26 | 2008-11-27 | 976 | 10.99d | 0d | Kapil [70%] | 8h |  |
| 978 | 1.5.4.8.5.3 | Compare the outputs | 0.71d? | 2008-11-27 | 2008-11-28 | 977 | 10.99d | 0d | Kapil [70%] | 4h |  |
| 979 | 1.5.4.8.6 | Measure performance & document mesaurements | 0.71d? | 2008-11-28 | 2008-12-01 | 978 | 10.99d | 0d | Kapil [70%] | 4h |  |
| 980 | 1.5.4.8.7 | Interface definition, code, Nunit , Result & Doc review | 0.71d? | 2008-12-01 | 2008-12-01 | 979 | 10.99d | 0d | Kapil [70%] | 4h |  |
| 981 | 1.5.4.9 | **Gain, Phase margins** | 15.29d? | 2008-12-01 | 2008-12-23 |  | 10.99d |  |  | 80h | P6 |
| 982 | 1.5.4.9.1 | Review meas catalog & update | 0.71d? | 2008-12-01 | 2008-12-02 | 980 | 10.99d | 0d | Kapil [70%] | 4h |  |
| 983 | 1.5.4.9.2 | Review managed & Native interface definitions | 1.43d? | 2008-12-02 | 2008-12-03 | 982 | 10.99d | 0d | Kapil [70%] | 8h |  |
| 984 | 1.5.4.9.3 | Write code | 5d? | 2008-12-03 | 2008-12-11 | 983 | 10.99d | 0d | Kapil [70%] | 28h |  |
| 985 | 1.5.4.9.4 | Unit test the code | 2.14d? | 2008-12-11 | 2008-12-16 | 984 | 10.99d | 0d | Kapil [70%] | 12h |  |
| 986 | 1.5.4.9.5 | **Verifcation** | 3.57d? | 2008-12-16 | 2008-12-19 |  | 10.99d |  |  | 20h |  |
| 987 | 1.5.4.9.5.1 | Develop the verification code in Matlab | 1.43d? | 2008-12-16 | 2008-12-17 | 985 | 10.99d | 0d | Kapil [70%] | 8h |  |
| 988 | 1.5.4.9.5.2 | Define the test input data & pass to ML & MATLAB | 1.43d? | 2008-12-17 | 2008-12-18 | 987 | 10.99d | 0d | Kapil [70%] | 8h |  |
| 989 | 1.5.4.9.5.3 | Compare the outputs | 0.71d? | 2008-12-18 | 2008-12-19 | 988 | 10.99d | 0d | Kapil [70%] | 4h |  |
| 990 | 1.5.4.9.6 | Measure performance & document mesaurements | 0.71d? | 2008-12-19 | 2008-12-22 | 989 | 10.99d | 0d | Kapil [70%] | 4h |  |
| 991 | 1.5.4.9.7 | Interface definition, code, Nunit , Result & Doc review | 0.71d? | 2008-12-22 | 2008-12-23 | 990 | 10.99d | 0d | Kapil [70%] | 4h |  |
| 992 | 1.5.4.10 | **Frequency, Damping** | 15.29d? | 2008-12-23 | 2009-01-13 |  | 9.99d |  |  | 80h | P6 |
| 993 | 1.5.4.10.1 | Review meas catalog & update | 0.71d? | 2008-12-23 | 2008-12-23 | 991 | 10.99d | 0d | Kapil [70%] | 4h |  |
| 994 | 1.5.4.10.2 | Review managed & Native interface definitions | 1.43d? | 2008-12-23 | 2008-12-26 | 993 | 9.99d | 0d | Kapil [70%] | 8h |  |
| 995 | 1.5.4.10.3 | Write code | 5d? | 2008-12-26 | 2009-01-02 | 994 | 9.99d | 0d | Kapil [70%] | 28h |  |
| 996 | 1.5.4.10.4 | Unit test the code | 2.14d? | 2009-01-02 | 2009-01-06 | 995 | 9.99d | 0d | Kapil [70%] | 12h |  |

| ID | WBS | Task | Duration | Start | Finish | Predecessors | Total slack | Free slack | Resources | Work | Text1 |
| --- | --- | --- | --- | --- | --- | --- | --- | --- | --- | --- | --- |
| 997 | 1.5.4.10.5 | **Verifcation** | 3.57d? | 2009-01-06 | 2009-01-09 |  | 9.99d |  |  | 20h |  |
| 998 | 1.5.4.10.5.1 | Develop the verification code in Matlab | 1.43d? | 2009-01-06 | 2009-01-07 | 996 | 9.99d | 0d | Kapil [70%] | 8h |  |
| 999 | 1.5.4.10.5.2 | Define the test input data & pass to ML & MATLAB | 1.43d? | 2009-01-07 | 2009-01-09 | 998 | 9.99d | 0d | Kapil [70%] | 8h |  |
| 1000 | 1.5.4.10.5.3 | Compare the outputs | 0.71d? | 2009-01-09 | 2009-01-09 | 999 | 9.99d | 0d | Kapil [70%] | 4h |  |
| 1001 | 1.5.4.10.6 | Measure performance & document mesaurements | 0.71d? | 2009-01-09 | 2009-01-12 | 1000 | 9.99d | 0d | Kapil [70%] | 4h |  |
| 1002 | 1.5.4.10.7 | Interface definition, code, Nunit , Result & Doc review | 0.71d? | 2009-01-12 | 2009-01-13 | 1001 | 9.99d | 0d | Kapil [70%] | 4h |  |
| 1003 | 1.5.4.11 | **Frequency Response** | 20d? | 2009-01-13 | 2009-02-10 |  | 9.99d |  |  | 112h | P3 |
| 1004 | 1.5.4.11.1 | Review meas catalog & update | 0.71d? | 2009-01-13 | 2009-01-14 | 1002 | 9.99d | 0d | Kapil [70%] | 4h |  |
| 1005 | 1.5.4.11.2 | Review managed & Native interface definitions | 2.14d? | 2009-01-14 | 2009-01-16 | 1004 | 9.99d | 0d | Kapil [70%] | 12h |  |
| 1006 | 1.5.4.11.3 | Write code | 5.71d? | 2009-01-16 | 2009-01-23 | 1005 | 9.99d | 0d | Kapil [70%] | 32h |  |
| 1007 | 1.5.4.11.4 | Unit test the code | 3.57d? | 2009-01-23 | 2009-01-29 | 1006 | 9.99d | 0d | Kapil [70%] | 20h |  |
| 1008 | 1.5.4.11.5 | **Verifcation** | 5.71d? | 2009-01-29 | 2009-02-06 |  | 9.99d |  |  | 32h |  |
| 1009 | 1.5.4.11.5.1 | Develop the verification code in Matlab | 2.14d? | 2009-01-29 | 2009-02-02 | 1007 | 9.99d | 0d | Kapil [70%] | 12h |  |
| 1010 | 1.5.4.11.5.2 | Define the test input data & pass to ML & MATLAB | 2.14d? | 2009-02-02 | 2009-02-04 | 1009 | 9.99d | 0d | Kapil [70%] | 12h |  |
| 1011 | 1.5.4.11.5.3 | Compare the outputs | 1.43d? | 2009-02-04 | 2009-02-06 | 1010 | 9.99d | 0d | Kapil [70%] | 8h |  |
| 1012 | 1.5.4.11.6 | Measure performance & document mesaurements | 0.71d? | 2009-02-06 | 2009-02-06 | 1011 | 9.99d | 0d | Kapil [70%] | 4h |  |
| 1013 | 1.5.4.11.7 | Interface definition, code, Nunit , Result & Doc review | 1.43d? | 2009-02-06 | 2009-02-10 | 1012 | 9.99d | 0d | Kapil [70%] | 8h |  |
| 1014 | 1.5.4.12 | **Variance** | 11.43d? | 2009-02-10 | 2009-02-25 |  | 9.99d |  |  | 64h | P6 |
| 1015 | 1.5.4.12.1 | Review meas catalog & update | 0.71d? | 2009-02-10 | 2009-02-11 | 1013 | 9.99d | 0d | Kapil [70%] | 4h |  |
| 1016 | 1.5.4.12.2 | Review managed & Native interface definitions | 1.43d? | 2009-02-11 | 2009-02-12 | 1015 | 9.99d | 0d | Kapil [70%] | 8h |  |
| 1017 | 1.5.4.12.3 | Write code | 2.14d? | 2009-02-12 | 2009-02-16 | 1016 | 9.99d | 0d | Kapil [70%] | 12h |  |
| 1018 | 1.5.4.12.4 | Unit test the code | 1.43d? | 2009-02-16 | 2009-02-18 | 1017 | 9.99d | 0d | Kapil [70%] | 8h |  |
| 1019 | 1.5.4.12.5 | **Verifcation** | 3.57d? | 2009-02-18 | 2009-02-23 |  | 9.99d |  |  | 20h |  |
| 1020 | 1.5.4.12.5.1 | Develop the verification code in Matlab | 1.43d? | 2009-02-18 | 2009-02-19 | 1018 | 9.99d | 0d | Kapil [70%] | 8h |  |
| 1021 | 1.5.4.12.5.2 | Define the test input data & pass to ML & MATLAB | 1.43d? | 2009-02-19 | 2009-02-20 | 1020 | 9.99d | 0d | Kapil [70%] | 8h |  |
| 1022 | 1.5.4.12.5.3 | Compare the outputs | 0.71d? | 2009-02-20 | 2009-02-23 | 1021 | 9.99d | 0d | Kapil [70%] | 4h |  |
| 1023 | 1.5.4.12.6 | Measure performance & document mesaurements | 0.71d? | 2009-02-23 | 2009-02-24 | 1022 | 9.99d | 0d | Kapil [70%] | 4h |  |
| 1024 | 1.5.4.12.7 | Interface definition, code, Nunit , Result & Doc review | 1.43d? | 2009-02-24 | 2009-02-25 | 1023 | 9.99d | 0d | Kapil [70%] | 8h |  |

| ID | WBS | Task | Duration | Start | Finish | Predecessors | Total slack | Free slack | Resources | Work | Text1 |
| --- | --- | --- | --- | --- | --- | --- | --- | --- | --- | --- | --- |
| 1025 | 1.5.4.13 | **Group Delay** | 51.43d? | 2009-02-25 | 2009-05-08 |  | 9.99d |  |  | 80h | P3 |
| 1026 | 1.5.4.13.1 | Review meas catalog & update | 0.71d? | 2009-02-25 | 2009-02-26 | 1024 | 9.99d | 0d | Kapil [70%] | 4h |  |
| 1027 | 1.5.4.13.2 | Review managed & Native interface definitions | 1.43d? | 2009-02-26 | 2009-02-27 | 1026 | 9.99d | 0d | Kapil [70%] | 8h |  |
| 1028 | 1.5.4.13.3 | Write code | 4.29d? | 2009-02-27 | 2009-03-06 | 1027 | 9.99d | 0d | Kapil [70%] | 24h |  |
| 1029 | 1.5.4.13.4 | Unit test the code | 2.14d? | 2009-03-06 | 2009-03-10 | 1028 | 9.99d | 0d | Kapil [70%] | 12h |  |
| 1030 | 1.5.4.13.5 | **Verifcation** | 3.57d? | 2009-03-10 | 2009-03-13 |  | 9.99d |  |  | 20h |  |
| 1031 | 1.5.4.13.5.1 | Develop the verification code in Matlab | 1.43d? | 2009-03-10 | 2009-03-11 | 1029 | 9.99d | 0d | Kapil [70%] | 8h |  |
| 1032 | 1.5.4.13.5.2 | Define the test input data & pass to ML & MATLAB | 1.43d? | 2009-03-11 | 2009-03-13 | 1031 | 9.99d | 0d | Kapil [70%] | 8h |  |
| 1033 | 1.5.4.13.5.3 | Compare the outputs | 0.71d? | 2009-03-13 | 2009-03-13 | 1032 | 9.99d | 0d | Kapil [70%] | 4h |  |
| 1034 | 1.5.4.13.6 | Measure performance & document mesaurements | 0.71d? | 2009-03-13 | 2009-03-16 | 1033 | 9.99d | 0d | Kapil [70%] | 4h |  |
| 1035 | 1.5.4.13.7 | Interface definition, code, Nunit , Result & Doc review | 1.43d? | 2009-05-06 | 2009-05-08 | 1034 | 9.99d |  | Kapil [70%] | 8h |  |
| 1036 | 1.5.4.14 | **Distortion** | 287.08d? | 2008-02-27 | 2009-04-03 |  | 34.14d |  |  | 348h |  |
| 1037 | 1.5.4.14.1 | **THD** | 26d? | 2008-12-31 | 2009-02-04 |  | 31d |  |  | 56h | P2 |
| 1038 | 1.5.4.14.1.1 | Review meas catalog & update | 0.5d? | 2008-12-31 | 2008-12-31 | 1557 | 31d | 0d | Mike [50%] | 2h |  |
| 1039 | 1.5.4.14.1.2 | Review managed & Native interface definitions | 0.5d? | 2008-12-31 | 2008-12-31 | 1038 | 31d | 0d | Mike [50%] | 2h |  |
| 1040 | 1.5.4.14.1.3 | Write code | 3d? | 2009-01-06 | 2009-01-08 | 1039 | 31d | 0d | Mike [50%] | 12h |  |
| 1041 | 1.5.4.14.1.4 | Unit test the code | 2d? | 2009-01-12 | 2009-01-13 | 1040 | 32d | 0d | Mike [50%] | 8h |  |
| 1042 | 1.5.4.14.1.5 | **Verifcation** | 9d? | 2009-01-20 | 2009-01-30 |  | 32d |  |  | 24h |  |
| 1043 | 1.5.4.14.1.5.1 | Develop the verification code in Matlab | 4d? | 2009-01-20 | 2009-01-23 | 1041 | 32d | 0d | Mike [50%] | 16h |  |
| 1044 | 1.5.4.14.1.5.2 | Define the test input data & pass to ML & MATLAB | 1d? | 2009-01-28 | 2009-01-28 | 1043 | 32d | 0d | Mike [50%] | 4h |  |
| 1045 | 1.5.4.14.1.5.3 | Compare the outputs | 1d? | 2009-01-30 | 2009-01-30 | 1044 | 32d | 0d | Mike [50%] | 4h |  |
| 1046 | 1.5.4.14.1.6 | Measure performance & document mesaurements | 1d? | 2009-02-03 | 2009-02-03 | 1045 | 32d | 0d | Mike [50%] | 4h |  |
| 1047 | 1.5.4.14.1.7 | Interface definition, code, Nunit , Result & Doc review | 1d? | 2009-02-04 | 2009-02-04 | 1046 | 32d | 0d | Mike [50%] | 4h |  |
| 1048 | 1.5.4.14.2 | **THD + Noise** | 40d? | 2009-02-09 | 2009-04-03 |  | 33d |  |  | 80h | P2 |
| 1049 | 1.5.4.14.2.1 | Review meas catalog & update | 1d? | 2009-02-09 | 2009-02-09 | 1047 | 33d | 0d | Mike [50%] | 4h |  |
| 1050 | 1.5.4.14.2.2 | Review managed & Native interface definitions | 1d? | 2009-02-10 | 2009-02-10 | 1049 | 33d | 0d | Mike [50%] | 4h |  |
| 1051 | 1.5.4.14.2.3 | Write code | 7d? | 2009-02-23 | 2009-03-03 | 1050 | 34.14d | 0d | Mike [50%] | 28h |  |
| 1052 | 1.5.4.14.2.4 | Unit test the code | 2d? | 2009-03-06 | 2009-03-09 | 1051 | 34.14d | 0d | Mike [50%] | 8h |  |

| ID | WBS | Task | Duration | Start | Finish | Predecessors | Total slack | Free slack | Resources | Work | Text1 |
| --- | --- | --- | --- | --- | --- | --- | --- | --- | --- | --- | --- |
| 1053 | 1.5.4.14.2.5 | **Verifcation** | 10d? | 2009-03-12 | 2009-03-25 |  | 34.14d |  |  | 24h |  |
| 1054 | 1.5.4.14.2.5.1 | Develop the verification code in Matlab | 4d? | 2009-03-12 | 2009-03-17 | 1052 | 34.14d | 0d | Mike [50%] | 16h |  |
| 1055 | 1.5.4.14.2.5.2 | Define the test input data & pass to ML & MATLAB | 1d? | 2009-03-18 | 2009-03-18 | 1054 | 34.14d | 0d | Mike [50%] | 4h |  |
| 1056 | 1.5.4.14.2.5.3 | Compare the outputs | 1d? | 2009-03-25 | 2009-03-25 | 1055 | 34.14d | 0d | Mike [50%] | 4h |  |
| 1057 | 1.5.4.14.2.6 | Measure performance & document mesaurements | 1d? | 2009-03-26 | 2009-03-26 | 1056 | 34.14d | 0d | Mike [50%] | 4h |  |
| 1058 | 1.5.4.14.2.7 | Interface definition, code, Nunit , Result & Doc review | 2d? | 2009-04-02 | 2009-04-03 | 1057 | 34.14d |  | Mike [50%] | 8h |  |
| 1059 | 1.5.4.14.3 | **SINAD** | 10.77d? | 2008-02-27 | 2008-03-13 |  | 188.53d |  |  | 56h | P4 |
| 1060 | 1.5.4.14.3.1 | Review meas catalog & update | 0.77d? | 2008-02-27 | 2008-02-28 | 1113, 1058 | 188.53d | 0d | ShashiP [65%] | 4h |  |
| 1061 | 1.5.4.14.3.2 | Review managed & Native interface definitions | 0.77d? | 2008-02-28 | 2008-02-29 | 1060 | 188.53d | 0d | ShashiP [65%] | 4h |  |
| 1062 | 1.5.4.14.3.3 | Write code | 3.08d? | 2008-02-29 | 2008-03-05 | 1061 | 188.53d | 0d | ShashiP [65%] | 16h |  |
| 1063 | 1.5.4.14.3.4 | Unit test the code | 1.54d? | 2008-03-05 | 2008-03-07 | 1062 | 188.53d | 0d | ShashiP [65%] | 8h |  |
| 1064 | 1.5.4.14.3.5 | **Verifcation** | 3.08d? | 2008-03-07 | 2008-03-12 |  | 188.53d |  |  | 16h |  |
| 1065 | 1.5.4.14.3.5.1 | Develop the verification code in Matlab | 1.54d? | 2008-03-07 | 2008-03-10 | 1063 | 188.53d | 0d | ShashiP [65%] | 8h |  |
| 1066 | 1.5.4.14.3.5.2 | Define the test input data & pass to ML & MATLAB | 0.77d? | 2008-03-10 | 2008-03-11 | 1065 | 188.53d | 0d | ShashiP [65%] | 4h |  |
| 1067 | 1.5.4.14.3.5.3 | Compare the outputs | 0.77d? | 2008-03-11 | 2008-03-12 | 1066 | 188.53d | 0d | ShashiP [65%] | 4h |  |
| 1068 | 1.5.4.14.3.6 | Measure performance & document mesaurements | 0.77d? | 2008-03-12 | 2008-03-12 | 1067 | 188.53d | 0d | ShashiP [65%] | 4h |  |
| 1069 | 1.5.4.14.3.7 | Interface definition, code, Nunit , Result & Doc review | 0.77d? | 2008-03-12 | 2008-03-13 | 1068 | 188.53d | 0d | ShashiP [65%] | 4h |  |
| 1070 | 1.5.4.14.4 | **ENOB** | 11d? | 2008-03-13 | 2008-03-28 |  | 188.53d |  |  | 52h | P4 |
| 1071 | 1.5.4.14.4.1 | Review meas catalog & update | 0.77d? | 2008-03-13 | 2008-03-14 | 1069 | 188.53d | 0d | ShashiP [65%] | 4h |  |
| 1072 | 1.5.4.14.4.2 | Review managed & Native interface definitions | 0.77d? | 2008-03-14 | 2008-03-17 | 1071 | 188.53d | 0d | ShashiP [65%] | 4h |  |
| 1073 | 1.5.4.14.4.3 | Write code | 1.54d? | 2008-03-17 | 2008-03-18 | 1072 | 188.53d | 0d | ShashiP [65%] | 8h |  |
| 1074 | 1.5.4.14.4.4 | Unit test the code | 1.54d? | 2008-03-18 | 2008-03-20 | 1073 | 188.53d | 0d | ShashiP [65%] | 8h |  |
| 1075 | 1.5.4.14.4.5 | **Verifcation** | 4.08d? | 2008-03-20 | 2008-03-26 |  | 188.53d |  |  | 16h |  |
| 1076 | 1.5.4.14.4.5.1 | Develop the verification code in Matlab | 1.54d? | 2008-03-20 | 2008-03-24 | 1074 | 188.53d | 0d | ShashiP [65%] | 8h |  |
| 1077 | 1.5.4.14.4.5.2 | Define the test input data & pass to ML & MATLAB | 0.77d? | 2008-03-24 | 2008-03-25 | 1076 | 188.53d | 0d | ShashiP [65%] | 4h |  |
| 1078 | 1.5.4.14.4.5.3 | Compare the outputs | 0.77d? | 2008-03-25 | 2008-03-26 | 1077 | 188.53d | 0d | ShashiP [65%] | 4h |  |
| 1079 | 1.5.4.14.4.6 | Measure performance & document mesaurements | 0.77d? | 2008-03-26 | 2008-03-27 | 1078 | 188.53d | 0d | ShashiP [65%] | 4h |  |
| 1080 | 1.5.4.14.4.7 | Interface definition, code, Nunit , Result & Doc review | 1.54d? | 2008-03-27 | 2008-03-28 | 1079 | 188.53d | 0d | ShashiP [65%] | 8h |  |

| ID | WBS | Task | Duration | Start | Finish | Predecessors | Total slack | Free slack | Resources | Work | Text1 |
| --- | --- | --- | --- | --- | --- | --- | --- | --- | --- | --- | --- |
| 1081 | 1.5.4.14.5 | **SNR** | 9.23d? | 2008-03-28 | 2008-04-10 |  | 188.53d |  |  | 48h | P4 |
| 1082 | 1.5.4.14.5.1 | Review meas catalog & update | 0.77d? | 2008-03-28 | 2008-03-31 | 1080 | 188.53d | 0d | ShashiP [65%] | 4h |  |
| 1083 | 1.5.4.14.5.2 | Review managed & Native interface definitions | 0.77d? | 2008-03-31 | 2008-04-01 | 1082 | 188.53d | 0d | ShashiP [65%] | 4h |  |
| 1084 | 1.5.4.14.5.3 | Write code | 1.54d? | 2008-04-01 | 2008-04-02 | 1083 | 188.53d | 0d | ShashiP [65%] | 8h |  |
| 1085 | 1.5.4.14.5.4 | Unit test the code | 1.54d? | 2008-04-02 | 2008-04-04 | 1084 | 188.53d | 0d | ShashiP [65%] | 8h |  |
| 1086 | 1.5.4.14.5.5 | **Verifcation** | 3.08d? | 2008-04-04 | 2008-04-09 |  | 188.53d |  |  | 16h |  |
| 1087 | 1.5.4.14.5.5.1 | Develop the verification code in Matlab | 1.54d? | 2008-04-04 | 2008-04-07 | 1085 | 188.53d | 0d | ShashiP [65%] | 8h |  |
| 1088 | 1.5.4.14.5.5.2 | Define the test input data & pass to ML & MATLAB | 0.77d? | 2008-04-07 | 2008-04-08 | 1087 | 189.53d | 0d | ShashiP [65%] | 4h |  |
| 1089 | 1.5.4.14.5.5.3 | Compare the outputs | 0.77d? | 2008-04-08 | 2008-04-09 | 1088 | 189.53d | 0d | ShashiP [65%] | 4h |  |
| 1090 | 1.5.4.14.5.6 | Measure performance & document mesaurements | 0.77d? | 2008-04-09 | 2008-04-10 | 1089 | 189.53d | 0d | ShashiP [65%] | 4h |  |
| 1091 | 1.5.4.14.5.7 | Interface definition, code, Nunit , Result & Doc review | 0.77d? | 2008-04-10 | 2008-04-10 | 1090 | 189.53d | 0d | ShashiP [65%] | 4h |  |
| 1092 | 1.5.4.14.6 | **SFDR** | 12.77d? | 2008-04-10 | 2008-04-29 |  | 187.53d |  |  | 56h | P4 |
| 1093 | 1.5.4.14.6.1 | Review meas catalog & update | 0.77d? | 2008-04-10 | 2008-04-11 | 1091 | 189.53d | 0d | ShashiP [65%] | 4h |  |
| 1094 | 1.5.4.14.6.2 | Review managed & Native interface definitions | 0.77d? | 2008-04-11 | 2008-04-15 | 1093 | 188.53d | 0d | ShashiP [65%] | 4h |  |
| 1095 | 1.5.4.14.6.3 | Write code | 3.08d? | 2008-04-15 | 2008-04-21 | 1094 | 187.53d | 0d | ShashiP [65%] | 16h |  |
| 1096 | 1.5.4.14.6.4 | Unit test the code | 1.54d? | 2008-04-21 | 2008-04-23 | 1095 | 187.53d | 0d | ShashiP [65%] | 8h |  |
| 1097 | 1.5.4.14.6.5 | **Verifcation** | 3.08d? | 2008-04-23 | 2008-04-28 |  | 187.53d |  |  | 16h |  |
| 1098 | 1.5.4.14.6.5.1 | Develop the verification code in Matlab | 1.54d? | 2008-04-23 | 2008-04-24 | 1096 | 187.53d | 0d | ShashiP [65%] | 8h |  |
| 1099 | 1.5.4.14.6.5.2 | Define the test input data & pass to ML & MATLAB | 0.77d? | 2008-04-24 | 2008-04-25 | 1098 | 187.53d | 0d | ShashiP [65%] | 4h |  |
| 1100 | 1.5.4.14.6.5.3 | Compare the outputs | 0.77d? | 2008-04-25 | 2008-04-28 | 1099 | 187.53d | 0d | ShashiP [65%] | 4h |  |
| 1101 | 1.5.4.14.6.6 | Measure performance & document mesaurements | 0.77d? | 2008-04-28 | 2008-04-28 | 1100 | 187.53d | 0d | ShashiP [65%] | 4h |  |
| 1102 | 1.5.4.14.6.7 | Interface definition, code, Nunit , Result & Doc review | 0.77d? | 2008-04-28 | 2008-04-29 | 1101 | 187.53d | 0d | ShashiP [65%] | 4h |  |
| 1103 | 1.5.4.15 | **Averaging** | 17.92d? | 2008-02-04 | 2008-02-27 |  | 38d |  |  | 88h | P3 |
| 1104 | 1.5.4.15.1 | Review meas catalog & update | 1.54d? | 2008-02-04 | 2008-02-05 | 1102 | 38d | 0d | ShashiP [65%] | 8h |  |
| 1105 | 1.5.4.15.2 | Review managed & Native interface definitions | 0.77d? | 2008-02-05 | 2008-02-06 | 1104 | 38d | 0d | ShashiP [65%] | 4h |  |
| 1106 | 1.5.4.15.3 | Write code | 4.62d? | 2008-02-06 | 2008-02-13 | 1105 | 37d | 0d | ShashiP [65%] | 24h |  |
| 1107 | 1.5.4.15.4 | Unit test the code | 1.54d? | 2008-02-13 | 2008-02-15 | 1106 | 37d | 0d | ShashiP [65%] | 8h |  |

| ID | WBS | Task | Duration | Start | Finish | Predecessors | Total slack | Free slack | Resources | Work | Text1 |
| --- | --- | --- | --- | --- | --- | --- | --- | --- | --- | --- | --- |
| 1108 | 1.5.4.15.5 | **Verifcation** | 6.15d? | 2008-02-15 | 2008-02-25 |  | 37d |  |  | 32h |  |
| 1109 | 1.5.4.15.5.1 | Develop the verification code in Matlab | 4.62d? | 2008-02-15 | 2008-02-22 | 1107 | 37d | 0d | ShashiP [65%] | 24h |  |
| 1110 | 1.5.4.15.5.2 | Define the test input data & pass to ML & MATLAB | 0.77d? | 2008-02-22 | 2008-02-22 | 1109 | 38d | 0d | ShashiP [65%] | 4h |  |
| 1111 | 1.5.4.15.5.3 | Compare the outputs | 0.77d? | 2008-02-22 | 2008-02-25 | 1110 | 38d | 0d | ShashiP [65%] | 4h |  |
| 1112 | 1.5.4.15.6 | Measure performance & document mesaurements | 0.77d? | 2008-02-25 | 2008-02-26 | 1111 | 38d | 0d | ShashiP [65%] | 4h |  |
| 1113 | 1.5.4.15.7 | Interface definition, code, Nunit , Result & Doc review | 1.54d? | 2008-02-26 | 2008-02-27 | 1112 | 39d | 0d | ShashiP [65%] | 8h |  |
| 1114 | 1.5.4.16 | **Signal Generation** | 65d? | 2008-02-04 | 2008-05-02 |  | 37.91d |  |  | 312h |  |
| 1115 | 1.5.4.16.1 | **Sine** | 8.69d? | 2008-02-04 | 2008-02-14 |  | 38.91d |  |  | 40h | P2 |
| 1116 | 1.5.4.16.1.1 | Review meas catalog & update | 0.77d? | 2008-02-04 | 2008-02-04 |  | 39.91d | 0d | Ramkumar [65%] | 4h |  |
| 1117 | 1.5.4.16.1.2 | Review managed & Native interface definitions | 0.77d? | 2008-02-04 | 2008-02-05 | 1116 | 39.91d | 0d | Ramkumar [65%] | 4h |  |
| 1118 | 1.5.4.16.1.3 | Write code | 0.77d? | 2008-02-05 | 2008-02-06 | 1117 | 39.91d | 0d | Ramkumar [65%] | 4h |  |
| 1119 | 1.5.4.16.1.4 | Unit test the code | 0.77d? | 2008-02-06 | 2008-02-07 | 1118 | 39.91d | 0d | Ramkumar [65%] | 4h |  |
| 1120 | 1.5.4.16.1.5 | **Verifcation** | 4.08d? | 2008-02-07 | 2008-02-13 |  | 38.91d |  |  | 16h |  |
| 1121 | 1.5.4.16.1.5.1 | Develop the verification code in Matlab | 1.54d? | 2008-02-07 | 2008-02-08 | 1119 | 39.91d | 0d | Ramkumar [65%] | 8h |  |
| 1122 | 1.5.4.16.1.5.2 | Define the test input data & pass to ML & MATLAB | 0.77d? | 2008-02-08 | 2008-02-12 | 1121 | 38.91d | 0d | Ramkumar [65%] | 4h |  |
| 1123 | 1.5.4.16.1.5.3 | Compare the outputs | 0.77d? | 2008-02-12 | 2008-02-13 | 1122 | 38.91d | 0d | Ramkumar [65%] | 4h |  |
| 1124 | 1.5.4.16.1.6 | Measure performance & document mesaurements | 0.77d? | 2008-02-13 | 2008-02-13 | 1123 | 38.91d | 0d | Ramkumar [65%] | 4h |  |
| 1125 | 1.5.4.16.1.7 | Interface definition, code, Nunit , Result & Doc review | 0.77d? | 2008-02-13 | 2008-02-14 | 1124 | 38.91d | 0d | Ramkumar [65%] | 4h |  |
| 1126 | 1.5.4.16.2 | **Square** | 7.69d? | 2008-02-14 | 2008-02-26 |  | 38.91d |  |  | 40h | P4 |
| 1127 | 1.5.4.16.2.1 | Review meas catalog & update | 0.77d? | 2008-02-14 | 2008-02-15 | 1125 | 38.91d | 0d | Ramkumar [65%] | 4h |  |
| 1128 | 1.5.4.16.2.2 | Review managed & Native interface definitions | 0.77d? | 2008-02-15 | 2008-02-18 | 1127 | 38.91d | 0d | Ramkumar [65%] | 4h |  |
| 1129 | 1.5.4.16.2.3 | Write code | 0.77d? | 2008-02-18 | 2008-02-18 | 1128 | 38.91d | 0d | Ramkumar [65%] | 4h |  |
| 1130 | 1.5.4.16.2.4 | Unit test the code | 0.77d? | 2008-02-18 | 2008-02-19 | 1129 | 38.91d | 0d | Ramkumar [65%] | 4h |  |
| 1131 | 1.5.4.16.2.5 | **Verifcation** | 3.08d? | 2008-02-19 | 2008-02-22 |  | 39.91d |  |  | 16h |  |
| 1132 | 1.5.4.16.2.5.1 | Develop the verification code in Matlab | 1.54d? | 2008-02-19 | 2008-02-21 | 1130 | 39.91d | 0d | Ramkumar [65%] | 8h |  |
| 1133 | 1.5.4.16.2.5.2 | Define the test input data & pass to ML & MATLAB | 0.77d? | 2008-02-21 | 2008-02-22 | 1132 | 39.91d | 0d | Ramkumar [65%] | 4h |  |
| 1134 | 1.5.4.16.2.5.3 | Compare the outputs | 0.77d? | 2008-02-22 | 2008-02-22 | 1133 | 39.91d | 0d | Ramkumar [65%] | 4h |  |
| 1135 | 1.5.4.16.2.6 | Measure performance & document mesaurements | 0.77d? | 2008-02-22 | 2008-02-25 | 1134 | 40.91d | 0d | Ramkumar [65%] | 4h |  |
| 1136 | 1.5.4.16.2.7 | Interface definition, code, Nunit , Result & Doc review | 0.77d? | 2008-02-25 | 2008-02-26 | 1135 | 40.91d | 0d | Ramkumar [65%] | 4h |  |

| ID | WBS | Task | Duration | Start | Finish | Predecessors | Total slack | Free slack | Resources | Work | Text1 |
| --- | --- | --- | --- | --- | --- | --- | --- | --- | --- | --- | --- |
| 1137 | 1.5.4.16.3 | **Noise** | 48.61d? | 2008-02-26 | 2008-05-02 |  | 37.91d |  |  | 232h | P4 |
| 1138 | 1.5.4.16.3.1 | **Random** | 9.23d? | 2008-02-26 | 2008-03-10 |  | 40.91d |  |  | 48h |  |
| 1139 | 1.5.4.16.3.1.1 | Review meas catalog & update | 0.77d? | 2008-02-26 | 2008-02-27 | 1136 | 40.91d | 0d | Ramkumar [65%] | 4h |  |
| 1140 | 1.5.4.16.3.1.2 | Review managed & Native interface definitions | 0.77d? | 2008-02-27 | 2008-02-27 | 1139 | 40.91d | 0d | Ramkumar [65%] | 4h |  |
| 1141 | 1.5.4.16.3.1.3 | Write code | 0.77d? | 2008-02-27 | 2008-02-28 | 1140 | 40.91d | 0d | Ramkumar [65%] | 4h |  |
| 1142 | 1.5.4.16.3.1.4 | Unit test the code | 0.77d? | 2008-02-28 | 2008-02-29 | 1141 | 40.91d | 0d | Ramkumar [65%] | 4h |  |
| 1143 | 1.5.4.16.3.1.5 | **Verifcation** | 4.62d? | 2008-02-29 | 2008-03-07 |  | 40.91d |  |  | 24h |  |
| 1144 | 1.5.4.16.3.1.5.1 | Develop the verification code in Matlab | 3.08d? | 2008-02-29 | 2008-03-05 | 1142 | 40.91d | 0d | Ramkumar [65%] | 16h |  |
| 1145 | 1.5.4.16.3.1.5.2 | Define the test input data & pass to ML & MATLAB | 0.77d? | 2008-03-05 | 2008-03-06 | 1144 | 41.91d | 0d | Ramkumar [65%] | 4h |  |
| 1146 | 1.5.4.16.3.1.5.3 | Compare the outputs | 0.77d? | 2008-03-06 | 2008-03-07 | 1145 | 41.91d | 0d | Ramkumar [65%] | 4h |  |
| 1147 | 1.5.4.16.3.1.6 | Measure performance & document mesaurements | 0.77d? | 2008-03-07 | 2008-03-07 | 1146 | 41.91d | 0d | Ramkumar [65%] | 4h |  |
| 1148 | 1.5.4.16.3.1.7 | Interface definition, code, Nunit , Result & Doc review | 0.77d? | 2008-03-07 | 2008-03-10 | 1147 | 41.91d | 0d | Ramkumar [65%] | 4h |  |
| 1149 | 1.5.4.16.3.2 | **Pink** | 14.08d? | 2008-03-10 | 2008-03-28 |  | 40.91d |  |  | 68h |  |
| 1150 | 1.5.4.16.3.2.1 | Review meas catalog & update | 0.77d? | 2008-03-10 | 2008-03-11 | 1148 | 41.91d | 0d | Ramkumar [65%] | 4h |  |
| 1151 | 1.5.4.16.3.2.2 | Review managed & Native interface definitions | 0.77d? | 2008-03-11 | 2008-03-12 | 1150 | 41.91d | 0d | Ramkumar [65%] | 4h |  |
| 1152 | 1.5.4.16.3.2.3 | Write code | 3.08d? | 2008-03-12 | 2008-03-17 | 1151 | 41.91d | 0d | Ramkumar [65%] | 16h |  |
| 1153 | 1.5.4.16.3.2.4 | Unit test the code | 1.54d? | 2008-03-17 | 2008-03-18 | 1152 | 41.91d | 0d | Ramkumar [65%] | 8h |  |
| 1154 | 1.5.4.16.3.2.5 | **Verifcation** | 5.62d? | 2008-03-18 | 2008-03-26 |  | 40.91d |  |  | 24h |  |
| 1155 | 1.5.4.16.3.2.5.1 | Develop the verification code in Matlab | 3.08d? | 2008-03-18 | 2008-03-24 | 1153 | 40.91d | 0d | Ramkumar [65%] | 16h |  |
| 1156 | 1.5.4.16.3.2.5.2 | Define the test input data & pass to ML & MATLAB | 0.77d? | 2008-03-24 | 2008-03-25 | 1155 | 40.91d | 0d | Ramkumar [65%] | 4h |  |
| 1157 | 1.5.4.16.3.2.5.3 | Compare the outputs | 0.77d? | 2008-03-25 | 2008-03-26 | 1156 | 40.91d | 0d | Ramkumar [65%] | 4h |  |
| 1158 | 1.5.4.16.3.2.6 | Measure performance & document mesaurements | 0.77d? | 2008-03-26 | 2008-03-27 | 1157 | 40.91d | 0d | Ramkumar [65%] | 4h |  |
| 1159 | 1.5.4.16.3.2.7 | Interface definition, code, Nunit , Result & Doc review | 1.54d? | 2008-03-27 | 2008-03-28 | 1158 | 40.91d | 0d | Ramkumar [65%] | 8h |  |
| 1160 | 1.5.4.16.3.3 | **White** | 11.77d? | 2008-03-28 | 2008-04-15 |  | 39.91d |  |  | 56h |  |
| 1161 | 1.5.4.16.3.3.1 | Review meas catalog & update | 0.77d? | 2008-03-28 | 2008-03-31 | 1159 | 40.91d | 0d | Ramkumar [65%] | 4h |  |
| 1162 | 1.5.4.16.3.3.2 | Review managed & Native interface definitions | 0.77d? | 2008-03-31 | 2008-04-01 | 1161 | 40.91d | 0d | Ramkumar [65%] | 4h |  |
| 1163 | 1.5.4.16.3.3.3 | Write code | 1.54d? | 2008-04-01 | 2008-04-02 | 1162 | 40.91d | 0d | Ramkumar [65%] | 8h |  |
| 1164 | 1.5.4.16.3.3.4 | Unit test the code | 1.54d? | 2008-04-02 | 2008-04-04 | 1163 | 40.91d | 0d | Ramkumar [65%] | 8h |  |

| ID | WBS | Task | Duration | Start | Finish | Predecessors | Total slack | Free slack | Resources | Work | Text1 |
| --- | --- | --- | --- | --- | --- | --- | --- | --- | --- | --- | --- |
| 1165 | 1.5.4.16.3.3.5 | **Verifcation** | 4.62d? | 2008-04-04 | 2008-04-10 |  | 40.91d |  |  | 24h |  |
| 1166 | 1.5.4.16.3.3.5.1 | Develop the verification code in Matlab | 3.08d? | 2008-04-04 | 2008-04-09 | 1164 | 40.91d | 0d | Ramkumar [65%] | 16h |  |
| 1167 | 1.5.4.16.3.3.5.2 | Define the test input data & pass to ML & MATLAB | 0.77d? | 2008-04-09 | 2008-04-10 | 1166 | 40.91d | 0d | Ramkumar [65%] | 4h |  |
| 1168 | 1.5.4.16.3.3.5.3 | Compare the outputs | 0.77d? | 2008-04-10 | 2008-04-10 | 1167 | 40.91d | 0d | Ramkumar [65%] | 4h |  |
| 1169 | 1.5.4.16.3.3.6 | Measure performance & document mesaurements | 0.77d? | 2008-04-10 | 2008-04-11 | 1168 | 40.91d | 0d | Ramkumar [65%] | 4h |  |
| 1170 | 1.5.4.16.3.3.7 | Interface definition, code, Nunit , Result & Doc review | 0.77d? | 2008-04-11 | 2008-04-15 | 1169 | 39.91d | 0d | Ramkumar [65%] | 4h |  |
| 1171 | 1.5.4.16.3.4 | **Gaussian** | 13.54d? | 2008-04-15 | 2008-05-02 |  | 37.91d |  |  | 60h |  |
| 1172 | 1.5.4.16.3.4.1 | Review meas catalog & update | 0.77d? | 2008-04-15 | 2008-04-16 | 1170 | 39.91d | 0d | Ramkumar [65%] | 4h |  |
| 1173 | 1.5.4.16.3.4.2 | Review managed & Native interface definitions | 0.77d? | 2008-04-16 | 2008-04-16 | 1172 | 39.91d | 0d | Ramkumar [65%] | 4h |  |
| 1174 | 1.5.4.16.3.4.3 | Write code | 3.08d? | 2008-04-16 | 2008-04-23 | 1173 | 38.91d | 0d | Ramkumar [65%] | 16h |  |
| 1175 | 1.5.4.16.3.4.4 | Unit test the code | 0.77d? | 2008-04-23 | 2008-04-23 | 1174 | 38.91d | 0d | Ramkumar [65%] | 4h |  |
| 1176 | 1.5.4.16.3.4.5 | **Verifcation** | 4.62d? | 2008-04-23 | 2008-04-30 |  | 38.91d |  |  | 24h |  |
| 1177 | 1.5.4.16.3.4.5.1 | Develop the verification code in Matlab | 3.08d? | 2008-04-23 | 2008-04-28 | 1175 | 38.91d | 0d | Ramkumar [65%] | 16h |  |
| 1178 | 1.5.4.16.3.4.5.2 | Define the test input data & pass to ML & MATLAB | 0.77d? | 2008-04-28 | 2008-04-29 | 1177 | 38.91d | 0d | Ramkumar [65%] | 4h |  |
| 1179 | 1.5.4.16.3.4.5.3 | Compare the outputs | 0.77d? | 2008-04-29 | 2008-04-30 | 1178 | 38.91d | 0d | Ramkumar [65%] | 4h |  |
| 1180 | 1.5.4.16.3.4.6 | Measure performance & document mesaurements | 0.77d? | 2008-04-30 | 2008-05-02 | 1179 | 37.91d | 0d | Ramkumar [65%] | 4h |  |
| 1181 | 1.5.4.16.3.4.7 | Interface definition, code, Nunit , Result & Doc review | 0.77d? | 2008-05-02 | 2008-05-02 | 1180 | 37.91d | 0d | Ramkumar [65%] | 4h |  |
| 1182 | 1.5.4.17 | **Marker Functions** | 13.31d? | 2008-09-19 | 2008-10-08 |  | 39.91d |  |  | 64h | P5 |
| 1183 | 1.5.4.17.1 | Review meas catalog & update | 0.77d? | 2008-09-19 | 2008-09-22 | 1342, 1181 | 40.91d | 0d | Ramkumar [65%] | 4h |  |
| 1184 | 1.5.4.17.2 | Review managed & Native interface definitions | 0.77d? | 2008-09-22 | 2008-09-23 | 1183 | 40.91d | 0d | Ramkumar [65%] | 4h |  |
| 1185 | 1.5.4.17.3 | Write code | 3.08d? | 2008-09-23 | 2008-09-26 | 1184 | 40.91d | 0d | Ramkumar [65%] | 16h |  |
| 1186 | 1.5.4.17.4 | Unit test the code | 3.08d? | 2008-09-26 | 2008-10-01 | 1185 | 40.91d | 0d | Ramkumar [65%] | 16h |  |
| 1187 | 1.5.4.17.5 | **Verifcation** | 4.08d? | 2008-10-01 | 2008-10-07 |  | 39.91d |  |  | 16h |  |
| 1188 | 1.5.4.17.5.1 | Develop the verification code in Matlab | 1.54d? | 2008-10-01 | 2008-10-03 | 1186 | 39.91d | 0d | Ramkumar [65%] | 8h |  |
| 1189 | 1.5.4.17.5.2 | Define the test input data & pass to ML & MATLAB | 0.77d? | 2008-10-03 | 2008-10-06 | 1188 | 39.91d | 0d | Ramkumar [65%] | 4h |  |
| 1190 | 1.5.4.17.5.3 | Compare the outputs | 0.77d? | 2008-10-06 | 2008-10-07 | 1189 | 39.91d | 0d | Ramkumar [65%] | 4h |  |
| 1191 | 1.5.4.17.6 | Measure performance & document mesaurements | 0.77d? | 2008-10-07 | 2008-10-08 | 1190 | 39.91d | 0d | Ramkumar [65%] | 4h |  |
| 1192 | 1.5.4.17.7 | Interface definition, code, Nunit , Result & Doc review | 0.77d? | 2008-10-08 | 2008-10-08 | 1191 | 39.91d | 0d | Ramkumar [65%] | 4h |  |

| ID | WBS | Task | Duration | Start | Finish | Predecessors | Total slack | Free slack | Resources | Work | Text1 |
| --- | --- | --- | --- | --- | --- | --- | --- | --- | --- | --- | --- |
| 1193 | 1.5.4.18 | **Octave** | 62.46d? | 2008-10-08 | 2009-01-05 |  | 37.91d |  |  | 304h | P7 |
| 1194 | 1.5.4.18.1 | Review meas catalog & update | 1.54d? | 2008-10-08 | 2008-10-13 | 1192 | 38.91d | 0d | Ramkumar [65%] | 8h |  |
| 1195 | 1.5.4.18.2 | Review managed & Native interface definitions | 1.54d? | 2008-10-13 | 2008-10-15 | 1194 | 38.91d | 0d | Ramkumar [65%] | 8h |  |
| 1196 | 1.5.4.18.3 | Overall interface structure for Octave | 3.85d? | 2008-10-15 | 2008-10-20 | 1195 | 38.91d | 0d | Ramkumar [65%] | 20h |  |
| 1197 | 1.5.4.18.4 | Octave band filter Design | 9.23d? | 2008-10-20 | 2008-11-04 | 1196 | 39.91d | 0d | Ramkumar [65%] | 48h |  |
| 1198 | 1.5.4.18.5 | Filtering Operation | 12.31d? | 2008-11-04 | 2008-11-20 | 1197 | 39.91d | 0d | Ramkumar [65%] | 64h |  |
| 1199 | 1.5.4.18.6 | Averaging Operation and Octave band power estimation | 7.69d? | 2008-11-20 | 2008-12-02 | 1198 | 39.91d | 0d | Ramkumar [65%] | 40h |  |
| 1200 | 1.5.4.18.7 | Weighting Filter Operation | 3.08d? | 2008-12-02 | 2008-12-05 | 1199 | 39.91d | 0d | Ramkumar [65%] | 16h |  |
| 1201 | 1.5.4.18.8 | Write code | 7.69d? | 2008-12-05 | 2008-12-17 | 1200 | 38.91d | 0d | Ramkumar [65%] | 40h |  |
| 1202 | 1.5.4.18.9 | Unit test the code | 3.85d? | 2008-12-17 | 2008-12-23 | 1201 | 38.91d | 0d | Ramkumar [65%] | 20h |  |
| 1203 | 1.5.4.18.10 | **Verifcation** | 5.62d? | 2008-12-23 | 2008-12-31 |  | 37.91d |  |  | 24h |  |
| 1204 | 1.5.4.18.10.1 | Develop the verification code in Matlab | 1.54d? | 2008-12-23 | 2008-12-26 | 1202 | 37.91d | 0d | Ramkumar [65%] | 8h |  |
| 1205 | 1.5.4.18.10.2 | Define the test input data & pass to ML & MATLAB | 1.54d? | 2008-12-26 | 2008-12-29 | 1204 | 37.91d | 0d | Ramkumar [65%] | 8h |  |
| 1206 | 1.5.4.18.10.3 | Compare the outputs | 1.54d? | 2008-12-29 | 2008-12-31 | 1205 | 37.91d | 0d | Ramkumar [65%] | 8h |  |
| 1207 | 1.5.4.18.11 | Measure performance & document mesaurements | 1.54d? | 2008-12-31 | 2009-01-01 | 1206 | 37.91d | 0d | Ramkumar [65%] | 8h |  |
| 1208 | 1.5.4.18.12 | Interface definition, code, Nunit , Result & Doc review | 1.54d? | 2009-01-01 | 2009-01-05 | 1207 | 37.91d | 0d | Ramkumar [65%] | 8h |  |
| 1209 | 1.5.4.19 | **Orbit** | 14.62d? | 2009-01-05 | 2009-01-26 |  | 37.91d |  |  | 76h | P4 |
| 1210 | 1.5.4.19.1 | Review meas catalog & update | 0.77d? | 2009-01-05 | 2009-01-06 | 1208 | 37.91d | 0d | Ramkumar [65%] | 4h |  |
| 1211 | 1.5.4.19.2 | Review managed & Native interface definitions | 0.77d? | 2009-01-06 | 2009-01-06 | 1210 | 37.91d | 0d | Ramkumar [65%] | 4h |  |
| 1212 | 1.5.4.19.3 | Write code | 5.38d? | 2009-01-06 | 2009-01-14 | 1211 | 37.91d | 0d | Ramkumar [65%] | 28h |  |
| 1213 | 1.5.4.19.4 | Unit test the code | 2.31d? | 2009-01-14 | 2009-01-16 | 1212 | 37.91d | 0d | Ramkumar [65%] | 12h |  |
| 1214 | 1.5.4.19.5 | **Verifcation** | 2.31d? | 2009-01-16 | 2009-01-20 |  | 37.91d |  |  | 12h |  |
| 1215 | 1.5.4.19.5.1 | Develop the verification code in Matlab | 0.77d? | 2009-01-16 | 2009-01-19 | 1213 | 37.91d | 0d | Ramkumar [65%] | 4h |  |
| 1216 | 1.5.4.19.5.2 | Define the test input data & pass to ML & MATLAB | 0.77d? | 2009-01-19 | 2009-01-20 | 1215 | 37.91d | 0d | Ramkumar [65%] | 4h |  |
| 1217 | 1.5.4.19.5.3 | Compare the outputs | 0.77d? | 2009-01-20 | 2009-01-20 | 1216 | 37.91d | 0d | Ramkumar [65%] | 4h |  |
| 1218 | 1.5.4.19.6 | Measure performance & document mesaurements | 1.54d? | 2009-01-20 | 2009-01-22 | 1217 | 37.91d | 0d | Ramkumar [65%] | 8h |  |
| 1219 | 1.5.4.19.7 | Interface definition, code, Nunit , Result & Doc review | 1.54d? | 2009-01-22 | 2009-01-26 | 1218 | 37.91d | 0d | Ramkumar [65%] | 8h |  |

| ID | WBS | Task | Duration | Start | Finish | Predecessors | Total slack | Free slack | Constraint | Resources | Work | Text1 |
| --- | --- | --- | --- | --- | --- | --- | --- | --- | --- | --- | --- | --- |
| 1220 | 1.5.4.20 | **Filters** | 92.92d? | 2008-04-29 | 2008-09-05 |  | 184.53d |  |  |  | 467.6h | P6 |
| 1221 | 1.5.4.20.1 | **Weighting filters for octave analysis A- weighting filter + B-weigghting filter +C- weighting filter** | 17.92d? | 2008-04-29 | 2008-05-23 |  | 186.53d |  |  |  | 88h |  |
| 1222 | 1.5.4.20.1.1 | Review meas catalog & update | 0.77d? | 2008-04-29 | 2008-04-30 | 1102 | 187.53d | 0d | start no earlier than 2008-02-04 | ShashiP [65%] | 4h |  |
| 1223 | 1.5.4.20.1.2 | Review managed & Native interface definitions | 1.54d? | 2008-04-30 | 2008-05-02 | 1222 | 186.53d | 0d |  | ShashiP [65%] | 8h |  |
| 1224 | 1.5.4.20.1.3 | Write code | 6.92d? | 2008-05-02 | 2008-05-13 | 1223 | 186.53d | 0d |  | ShashiP [65%] | 36h |  |
| 1225 | 1.5.4.20.1.4 | Unit test the code | 1.54d? | 2008-05-13 | 2008-05-15 | 1224 | 186.53d | 0d |  | ShashiP [65%] | 8h |  |
| 1226 | 1.5.4.20.1.5 | **Verifcation** | 3.85d? | 2008-05-15 | 2008-05-21 |  | 186.53d |  |  |  | 20h |  |
| 1227 | 1.5.4.20.1.5.1 | Develop the verification code in Matlab | 1.54d? | 2008-05-15 | 2008-05-16 | 1225 | 186.53d | 0d |  | ShashiP [65%] | 8h |  |
| 1228 | 1.5.4.20.1.5.2 | Define the test input data & pass to ML & MATLAB | 1.54d? | 2008-05-16 | 2008-05-20 | 1227 | 186.53d | 0d |  | ShashiP [65%] | 8h |  |
| 1229 | 1.5.4.20.1.5.3 | Compare the outputs | 0.77d? | 2008-05-20 | 2008-05-21 | 1228 | 186.53d | 0d |  | ShashiP [65%] | 4h |  |
| 1230 | 1.5.4.20.1.6 | Measure performance & document mesaurements | 0.77d? | 2008-05-21 | 2008-05-22 | 1229 | 186.53d | 0d |  | ShashiP [65%] | 4h |  |
| 1231 | 1.5.4.20.1.7 | Interface definition, code, Nunit , Result & Doc review | 1.54d? | 2008-05-22 | 2008-05-23 | 1230 | 186.53d | 0d |  | ShashiP [65%] | 8h |  |
| 1232 | 1.5.4.20.2 | **General Weighting filters (A+B+C-weighting filter)** | 17.92d? | 2008-05-23 | 2008-06-18 |  | 186.53d |  |  |  | 93.2h |  |
| 1233 | 1.5.4.20.2.1 | Review meas catalog & update | 1.54d? | 2008-05-23 | 2008-05-27 | 1231 | 186.53d | 0d |  | ShashiP [65%] | 8h |  |
| 1234 | 1.5.4.20.2.2 | Review managed & Native interface definitions | 1.54d? | 2008-05-27 | 2008-05-28 | 1233 | 186.53d | 0d |  | ShashiP [65%] | 8h |  |
| 1235 | 1.5.4.20.2.3 | Write code | 7.69d? | 2008-05-28 | 2008-06-09 | 1234 | 186.53d | 0d |  | ShashiP [65%] | 40h |  |
| 1236 | 1.5.4.20.2.4 | Unit test the code | 1.54d? | 2008-06-09 | 2008-06-10 | 1235 | 186.53d | 0d |  | ShashiP [65%] | 8h |  |
| 1237 | 1.5.4.20.2.5 | **Verifcation** | 3.08d? | 2008-06-10 | 2008-06-13 |  | 186.53d |  |  |  | 16h |  |
| 1238 | 1.5.4.20.2.5.1 | Develop the verification code in Matlab | 1.54d? | 2008-06-10 | 2008-06-12 | 1236 | 186.53d | 0d |  | ShashiP [65%] | 8h |  |
| 1239 | 1.5.4.20.2.5.2 | Define the test input data & pass to ML & MATLAB | 0.77d? | 2008-06-12 | 2008-06-13 | 1238 | 186.53d | 0d |  | ShashiP [65%] | 4h |  |
| 1240 | 1.5.4.20.2.5.3 | Compare the outputs | 0.77d? | 2008-06-13 | 2008-06-13 | 1239 | 186.53d | 0d |  | ShashiP [65%] | 4h |  |
| 1241 | 1.5.4.20.2.6 | Measure performance & document mesaurements | 1.54d? | 2008-06-13 | 2008-06-17 | 1240 | 186.53d | 0d |  | ShashiP [65%] | 8h |  |
| 1242 | 1.5.4.20.2.7 | Interface definition, code, Nunit , Result & Doc review | 1d | 2008-06-17 | 2008-06-18 | 1241 | 186.53d | 0d |  | ShashiP [65%] | 5.2h |  |
| 1243 | 1.5.4.20.3 | **CCIR filters** | 22.77d? | 2008-06-18 | 2008-07-21 |  | 186.53d |  |  |  | 118.4h |  |
| 1244 | 1.5.4.20.3.1 | Review meas catalog & update | 1.54d? | 2008-06-18 | 2008-06-20 | 1242 | 186.53d | 0d |  | ShashiP [65%] | 8h |  |
| 1245 | 1.5.4.20.3.2 | Review managed & Native interface definitions | 1.54d? | 2008-06-20 | 2008-06-23 | 1244 | 186.53d | 0d |  | ShashiP [65%] | 8h |  |
| 1246 | 1.5.4.20.3.3 | Write code | 9.23d? | 2008-06-23 | 2008-07-04 | 1245 | 186.53d | 0d |  | ShashiP [65%] | 48h |  |
| 1247 | 1.5.4.20.3.4 | Unit test the code | 3.08d? | 2008-07-04 | 2008-07-09 | 1246 | 186.53d | 0d |  | ShashiP [65%] | 16h |  |

| ID | WBS | Task | Duration | Start | Finish | Predecessors | Total slack | Free slack | Resources | Work |
| --- | --- | --- | --- | --- | --- | --- | --- | --- | --- | --- |
| 1248 | 1.5.4.20.3.5 | **Verifcation** | 4.62d? | 2008-07-09 | 2008-07-16 |  | 186.53d |  |  | 24h |
| 1249 | 1.5.4.20.3.5.1 | Develop the verification code in Matlab | 3.08d? | 2008-07-09 | 2008-07-14 | 1247 | 186.53d | 0d | ShashiP [65%] | 16h |
| 1250 | 1.5.4.20.3.5.2 | Define the test input data & pass to ML & MATLAB | 0.77d? | 2008-07-15 | 2008-07-15 | 1249 | 186.53d | 0d | ShashiP [65%] | 4h |
| 1251 | 1.5.4.20.3.5.3 | Compare the outputs | 0.77d? | 2008-07-15 | 2008-07-16 | 1250 | 186.53d | 0d | ShashiP [65%] | 4h |
| 1252 | 1.5.4.20.3.6 | Measure performance & document mesaurements | 0.77d? | 2008-07-16 | 2008-07-17 | 1251 | 186.53d | 0d | ShashiP [65%] | 4h |
| 1253 | 1.5.4.20.3.7 | Interface definition, code, Nunit , Result & Doc review | 2d? | 2008-07-17 | 2008-07-21 | 1252 | 186.53d | 0d | ShashiP [65%] | 10.4h |
| 1254 | 1.5.4.20.4 | **Low Pass, high pass, band pass, notch** | 18.46d? | 2008-07-21 | 2008-08-14 |  | 186.53d |  |  | 96h |
| 1255 | 1.5.4.20.4.1 | Review meas catalog & update | 1.54d? | 2008-07-21 | 2008-07-22 | 1253 | 186.53d | 0d | ShashiP [65%] | 8h |
| 1256 | 1.5.4.20.4.2 | Review managed & Native interface definitions | 1.54d? | 2008-07-22 | 2008-07-24 | 1255 | 186.53d | 0d | ShashiP [65%] | 8h |
| 1257 | 1.5.4.20.4.3 | Write code | 7.69d? | 2008-07-24 | 2008-08-05 | 1256 | 186.53d | 0d | ShashiP [65%] | 40h |
| 1258 | 1.5.4.20.4.4 | Unit test the code | 1.54d? | 2008-08-05 | 2008-08-06 | 1257 | 186.53d | 0d | ShashiP [65%] | 8h |
| 1259 | 1.5.4.20.4.5 | **Verifcation** | 3.85d? | 2008-08-06 | 2008-08-12 |  | 186.53d |  |  | 20h |
| 1260 | 1.5.4.20.4.5.1 | Develop the verification code in Matlab | 2.31d? | 2008-08-06 | 2008-08-08 | 1258 | 186.53d | 0d | ShashiP [65%] | 12h |
| 1261 | 1.5.4.20.4.5.2 | Define the test input data & pass to ML & MATLAB | 0.77d? | 2008-08-08 | 2008-08-11 | 1260 | 186.53d | 0d | ShashiP [65%] | 4h |
| 1262 | 1.5.4.20.4.5.3 | Compare the outputs | 0.77d? | 2008-08-11 | 2008-08-12 | 1261 | 186.53d | 0d | ShashiP [65%] | 4h |
| 1263 | 1.5.4.20.4.6 | Measure performance & document mesaurements | 1.54d? | 2008-08-12 | 2008-08-13 | 1262 | 186.53d | 0d | ShashiP [65%] | 8h |
| 1264 | 1.5.4.20.4.7 | Interface definition, code, Nunit , Result & Doc review | 0.77d? | 2008-08-14 | 2008-08-14 | 1263 | 186.53d | 0d | ShashiP [65%] | 4h |
| 1265 | 1.5.4.20.5 | **Coherence** | 15.85d? | 2008-08-14 | 2008-09-05 |  | 184.53d |  |  | 72h |
| 1266 | 1.5.4.20.5.1 | Review meas catalog & update | 0.77d? | 2008-08-14 | 2008-08-18 | 1264 | 185.53d | 0d | ShashiP [65%] | 4h |
| 1267 | 1.5.4.20.5.2 | Review managed & Native interface definitions | 0.77d? | 2008-08-18 | 2008-08-19 | 1266 | 185.53d | 0d | ShashiP [65%] | 4h |
| 1268 | 1.5.4.20.5.3 | Write code | 4.62d? | 2008-08-19 | 2008-08-25 | 1267 | 185.53d | 0d | ShashiP [65%] | 24h |
| 1269 | 1.5.4.20.5.4 | Unit test the code | 1.54d? | 2008-08-25 | 2008-08-27 | 1268 | 185.53d | 0d | ShashiP [65%] | 8h |
| 1270 | 1.5.4.20.5.5 | **Verifcation** | 3.08d? | 2008-08-27 | 2008-09-01 |  | 185.53d |  |  | 16h |
| 1271 | 1.5.4.20.5.5.1 | Develop the verification code in Matlab | 1.54d? | 2008-08-27 | 2008-08-28 | 1269 | 185.53d | 0d | ShashiP [65%] | 8h |
| 1272 | 1.5.4.20.5.5.2 | Define the test input data & pass to ML & MATLAB | 0.77d? | 2008-08-29 | 2008-08-29 | 1271 | 185.53d | 0d | ShashiP [65%] | 4h |
| 1273 | 1.5.4.20.5.5.3 | Compare the outputs | 0.77d? | 2008-08-29 | 2008-09-01 | 1272 | 185.53d | 0d | ShashiP [65%] | 4h |
| 1274 | 1.5.4.20.5.6 | Measure performance & document mesaurements | 1.54d? | 2008-09-01 | 2008-09-04 | 1273 | 184.53d | 0d | ShashiP [65%] | 8h |
| 1275 | 1.5.4.20.5.7 | Interface definition, code, Nunit , Result & Doc review | 1.54d? | 2008-09-04 | 2008-09-05 | 1274 | 184.53d |  | ShashiP [65%] | 8h |

| ID | WBS | Task | Duration | Start | Finish | Predecessors | Total slack | Free slack | Resources | Work | Text1 |
| --- | --- | --- | --- | --- | --- | --- | --- | --- | --- | --- | --- |
| 1276 | 1.5.4.21 | **Math** | 99.69d? | 2008-05-02 | 2008-09-19 |  | 37.91d |  |  | 508h | P7 |
| 1277 | 1.5.4.21.1 | **Cepstrum** | 13.08d? | 2008-05-02 | 2008-05-22 |  | 37.91d |  |  | 68h |  |
| 1278 | 1.5.4.21.1.1 | Review meas catalog & update | 0.77d? | 2008-05-02 | 2008-05-05 | 1181, 1275 | 37.91d | 0d | Ramkumar [65%] | 4h |  |
| 1279 | 1.5.4.21.1.2 | Review managed & Native interface definitions | 0.77d? | 2008-05-05 | 2008-05-06 | 1278 | 37.91d | 0d | Ramkumar [65%] | 4h |  |
| 1280 | 1.5.4.21.1.3 | Write code | 4.62d? | 2008-05-06 | 2008-05-13 | 1279 | 37.91d | 0d | Ramkumar [65%] | 24h |  |
| 1281 | 1.5.4.21.1.4 | Unit test the code | 1.54d? | 2008-05-13 | 2008-05-14 | 1280 | 37.91d | 0d | Ramkumar [65%] | 8h |  |
| 1282 | 1.5.4.21.1.5 | **Verifcation** | 3.08d? | 2008-05-14 | 2008-05-19 |  | 37.91d |  |  | 16h |  |
| 1283 | 1.5.4.21.1.5.1 | Develop the verification code in Matlab | 1.54d? | 2008-05-14 | 2008-05-16 | 1281 | 37.91d | 0d | Ramkumar [65%] | 8h |  |
| 1284 | 1.5.4.21.1.5.2 | Define the test input data & pass to ML & MATLAB | 0.77d? | 2008-05-16 | 2008-05-16 | 1283 | 37.91d | 0d | Ramkumar [65%] | 4h |  |
| 1285 | 1.5.4.21.1.5.3 | Compare the outputs | 0.77d? | 2008-05-16 | 2008-05-19 | 1284 | 37.91d | 0d | Ramkumar [65%] | 4h |  |
| 1286 | 1.5.4.21.1.6 | Measure performance & document mesaurements | 0.77d? | 2008-05-19 | 2008-05-20 | 1285 | 37.91d | 0d | Ramkumar [65%] | 4h |  |
| 1287 | 1.5.4.21.1.7 | Interface definition, code, Nunit , Result & Doc review | 1.54d? | 2008-05-20 | 2008-05-22 | 1286 | 37.91d | 0d | Ramkumar [65%] | 8h |  |
| 1288 | 1.5.4.21.2 | **Basic Complex math** | 15.38d? | 2008-05-22 | 2008-06-12 |  | 37.91d |  |  | 80h |  |
| 1289 | 1.5.4.21.2.1 | Review meas catalog & update | 0.77d? | 2008-05-22 | 2008-05-22 | 1287 | 37.91d | 0d | Ramkumar [65%] | 4h |  |
| 1290 | 1.5.4.21.2.2 | Review managed & Native interface definitions | 0.77d? | 2008-05-22 | 2008-05-23 | 1289 | 37.91d | 0d | Ramkumar [65%] | 4h |  |
| 1291 | 1.5.4.21.2.3 | Write code | 6.15d? | 2008-05-23 | 2008-06-02 | 1290 | 37.91d | 0d | Ramkumar [65%] | 32h |  |
| 1292 | 1.5.4.21.2.4 | Unit test the code | 1.54d? | 2008-06-02 | 2008-06-04 | 1291 | 37.91d | 0d | Ramkumar [65%] | 8h |  |
| 1293 | 1.5.4.21.2.5 | **Verifcation** | 3.08d | 2008-06-04 | 2008-06-09 |  | 37.91d |  |  | 16h |  |
| 1294 | 1.5.4.21.2.5.1 | Develop the verification code in Matlab | 1.54d | 2008-06-04 | 2008-06-05 | 1292 | 37.91d | 0d | Ramkumar [65%] | 8h |  |
| 1295 | 1.5.4.21.2.5.2 | Define the test input data & pass to ML & MATLAB | 0.77d | 2008-06-05 | 2008-06-06 | 1294 | 37.91d | 0d | Ramkumar [65%] | 4h |  |
| 1296 | 1.5.4.21.2.5.3 | Compare the outputs | 0.77d | 2008-06-06 | 2008-06-09 | 1295 | 37.91d | 0d | Ramkumar [65%] | 4h |  |
| 1297 | 1.5.4.21.2.6 | Measure performance & document mesaurements | 1.54d? | 2008-06-09 | 2008-06-10 | 1296 | 37.91d | 0d | Ramkumar [65%] | 8h |  |
| 1298 | 1.5.4.21.2.7 | Interface definition, code, Nunit , Result & Doc review | 1.54d | 2008-06-10 | 2008-06-12 | 1297 | 37.91d | 0d | Ramkumar [65%] | 8h |  |
| 1299 | 1.5.4.21.3 | **Hilbert** | 15.38d | 2008-06-12 | 2008-07-03 |  | 37.91d |  |  | 80h |  |
| 1300 | 1.5.4.21.3.1 | Review meas catalog & update | 0.77d | 2008-06-12 | 2008-06-13 | 1298 | 37.91d | 0d | Ramkumar [65%] | 4h |  |
| 1301 | 1.5.4.21.3.2 | Review managed & Native interface definitions | 0.77d | 2008-06-13 | 2008-06-13 | 1300 | 37.91d | 0d | Ramkumar [65%] | 4h |  |
| 1302 | 1.5.4.21.3.3 | Write code | 6.15d | 2008-06-13 | 2008-06-24 | 1301 | 37.91d | 0d | Ramkumar [65%] | 32h |  |
| 1303 | 1.5.4.21.3.4 | Unit test the code | 1.54d | 2008-06-24 | 2008-06-25 | 1302 | 38.91d | 0d | Ramkumar [65%] | 8h |  |

| ID | WBS | Task | Duration | Start | Finish | Predecessors | Total slack | Free slack | Resources | Work |
| --- | --- | --- | --- | --- | --- | --- | --- | --- | --- | --- |
| 1304 | 1.5.4.21.3.5 | **Verifcation** | 3.08d | 2008-06-25 | 2008-06-30 |  | 38.91d |  |  | 16h |
| 1305 | 1.5.4.21.3.5.1 | Develop the verification code in Matlab | 1.54d | 2008-06-25 | 2008-06-27 | 1303 | 38.91d | 0d | Ramkumar [65%] | 8h |
| 1306 | 1.5.4.21.3.5.2 | Define the test input data & pass to ML & MATLAB | 0.77d | 2008-06-27 | 2008-06-27 | 1305 | 38.91d | 0d | Ramkumar [65%] | 4h |
| 1307 | 1.5.4.21.3.5.3 | Compare the outputs | 0.77d | 2008-06-27 | 2008-06-30 | 1306 | 38.91d | 0d | Ramkumar [65%] | 4h |
| 1308 | 1.5.4.21.3.6 | Measure performance & document mesaurements | 1.54d | 2008-06-30 | 2008-07-02 | 1307 | 38.91d | 0d | Ramkumar [65%] | 8h |
| 1309 | 1.5.4.21.3.7 | Interface definition, code, Nunit , Result & Doc review | 1.54d | 2008-07-02 | 2008-07-03 | 1308 | 38.91d | 0d | Ramkumar [65%] | 8h |
| 1310 | 1.5.4.21.4 | **Conversions** | 21.54d? | 2008-07-03 | 2008-08-04 |  | 38.91d |  |  | 112h |
| 1311 | 1.5.4.21.4.1 | Review meas catalog & update | 0.77d? | 2008-07-03 | 2008-07-04 | 1309 | 38.91d | 0d | Ramkumar [65%] | 4h |
| 1312 | 1.5.4.21.4.2 | Review managed & Native interface definitions | 0.77d? | 2008-07-04 | 2008-07-07 | 1311 | 38.91d | 0d | Ramkumar [65%] | 4h |
| 1313 | 1.5.4.21.4.3 | Write code | 9.23d? | 2008-07-07 | 2008-07-18 | 1312 | 38.91d | 0d | Ramkumar [65%] | 48h |
| 1314 | 1.5.4.21.4.4 | Unit test the code | 3.08d? | 2008-07-18 | 2008-07-23 | 1313 | 39.91d | 0d | Ramkumar [65%] | 16h |
| 1315 | 1.5.4.21.4.5 | **Verifcation** | 4.62d? | 2008-07-23 | 2008-07-30 |  | 39.91d |  |  | 24h |
| 1316 | 1.5.4.21.4.5.1 | Develop the verification code in Matlab | 3.08d? | 2008-07-23 | 2008-07-28 | 1314 | 39.91d | 0d | Ramkumar [65%] | 16h |
| 1317 | 1.5.4.21.4.5.2 | Define the test input data & pass to ML & MATLAB | 0.77d? | 2008-07-28 | 2008-07-29 | 1316 | 39.91d | 0d | Ramkumar [65%] | 4h |
| 1318 | 1.5.4.21.4.5.3 | Compare the outputs | 0.77d? | 2008-07-29 | 2008-07-30 | 1317 | 39.91d | 0d | Ramkumar [65%] | 4h |
| 1319 | 1.5.4.21.4.6 | Measure performance & document mesaurements | 1.54d? | 2008-07-30 | 2008-07-31 | 1318 | 39.91d | 0d | Ramkumar [65%] | 8h |
| 1320 | 1.5.4.21.4.7 | Interface definition, code, Nunit , Result & Doc review | 1.54d? | 2008-07-31 | 2008-08-04 | 1319 | 39.91d | 0d | Ramkumar [65%] | 8h |
| 1321 | 1.5.4.21.5 | **Differentiation/Integration** | 15.62d? | 2008-08-04 | 2008-08-25 |  | 39.91d |  |  | 76h |
| 1322 | 1.5.4.21.5.1 | Review meas catalog & update | 0.77d? | 2008-08-04 | 2008-08-05 | 1320 | 39.91d | 0d | Ramkumar [65%] | 4h |
| 1323 | 1.5.4.21.5.2 | Review managed & Native interface definitions | 0.77d? | 2008-08-05 | 2008-08-05 | 1322 | 39.91d | 0d | Ramkumar [65%] | 4h |
| 1324 | 1.5.4.21.5.3 | Write code | 6.15d? | 2008-08-05 | 2008-08-14 | 1323 | 39.91d | 0d | Ramkumar [65%] | 32h |
| 1325 | 1.5.4.21.5.4 | Unit test the code | 1.54d? | 2008-08-14 | 2008-08-18 | 1324 | 40.91d | 0d | Ramkumar [65%] | 8h |
| 1326 | 1.5.4.21.5.5 | **Verifcation** | 3.08d? | 2008-08-18 | 2008-08-21 |  | 40.91d |  |  | 16h |
| 1327 | 1.5.4.21.5.5.1 | Develop the verification code in Matlab | 1.54d? | 2008-08-18 | 2008-08-20 | 1325 | 40.91d | 0d | Ramkumar [65%] | 8h |
| 1328 | 1.5.4.21.5.5.2 | Define the test input data & pass to ML & MATLAB | 0.77d? | 2008-08-20 | 2008-08-20 | 1327 | 40.91d | 0d | Ramkumar [65%] | 4h |
| 1329 | 1.5.4.21.5.5.3 | Compare the outputs | 0.77d? | 2008-08-20 | 2008-08-21 | 1328 | 40.91d | 0d | Ramkumar [65%] | 4h |
| 1330 | 1.5.4.21.5.6 | Measure performance & document mesaurements | 0.77d? | 2008-08-21 | 2008-08-22 | 1329 | 40.91d | 0d | Ramkumar [65%] | 4h |
| 1331 | 1.5.4.21.5.7 | Interface definition, code, Nunit , Result & Doc review | 1.54d? | 2008-08-22 | 2008-08-25 | 1330 | 40.91d | 0d | Ramkumar [65%] | 8h |

| ID | WBS | Task | Duration | Start | Finish | Predecessors | Total slack | Free slack | Resources | Work | Text1 |
| --- | --- | --- | --- | --- | --- | --- | --- | --- | --- | --- | --- |
| 1332 | 1.5.4.21.6 | **Statistical (mean,mode…)** | 18.69d? | 2008-08-25 | 2008-09-19 |  | 40.91d |  |  | 92h |  |
| 1333 | 1.5.4.21.6.1 | Review meas catalog & update | 0.77d? | 2008-08-25 | 2008-08-26 | 1331 | 40.91d | 0d | Ramkumar [65%] | 4h |  |
| 1334 | 1.5.4.21.6.2 | Review managed & Native interface definitions | 1.54d? | 2008-08-26 | 2008-08-28 | 1333 | 40.91d | 0d | Ramkumar [65%] | 8h |  |
| 1335 | 1.5.4.21.6.3 | Write code | 6.15d? | 2008-08-28 | 2008-09-08 | 1334 | 40.91d | 0d | Ramkumar [65%] | 32h |  |
| 1336 | 1.5.4.21.6.4 | Unit test the code | 1.54d? | 2008-09-08 | 2008-09-09 | 1335 | 40.91d | 0d | Ramkumar [65%] | 8h |  |
| 1337 | 1.5.4.21.6.5 | **Verifcation** | 4.62d? | 2008-09-09 | 2008-09-16 |  | 40.91d |  |  | 24h |  |
| 1338 | 1.5.4.21.6.5.1 | Develop the verification code in Matlab | 3.08d? | 2008-09-09 | 2008-09-15 | 1336 | 40.91d | 0d | Ramkumar [65%] | 16h |  |
| 1339 | 1.5.4.21.6.5.2 | Define the test input data & pass to ML & MATLAB | 0.77d? | 2008-09-15 | 2008-09-15 | 1338 | 40.91d | 0d | Ramkumar [65%] | 4h |  |
| 1340 | 1.5.4.21.6.5.3 | Compare the outputs | 0.77d? | 2008-09-15 | 2008-09-16 | 1339 | 40.91d | 0d | Ramkumar [65%] | 4h |  |
| 1341 | 1.5.4.21.6.6 | Measure performance & document mesaurements | 1.54d? | 2008-09-16 | 2008-09-18 | 1340 | 40.91d | 0d | Ramkumar [65%] | 8h |  |
| 1342 | 1.5.4.21.6.7 | Interface definition, code, Nunit , Result & Doc review | 1.54d? | 2008-09-18 | 2008-09-19 | 1341 | 40.91d | 0d | Ramkumar [65%] | 8h |  |
| 1343 | 1.5.5 | **Testing and Result Verification** | 286.73d? | 2008-04-01 | 2009-05-06 |  | 11.42d |  |  | 1048h |  |
| 1344 | 1.5.5.1 | Verify THD | 4.29d? | 2009-03-16 | 2009-03-20 | 1034 | 11.42d | 0d | Kapil [70%] | 24h | P2 |
| 1345 | 1.5.5.2 | Verify THD+N | 2.86d? | 2009-03-20 | 2009-03-25 | 1344 | 11.42d | 0d | Kapil [70%] | 16h | P2 |
| 1346 | 1.5.5.3 | Verify SINAD | 2.86d? | 2009-03-25 | 2009-03-30 | 1345 | 11.42d | 0d | Kapil [70%] | 16h | P4 |
| 1347 | 1.5.5.4 | Verify ENOB | 4.29d? | 2009-03-30 | 2009-04-03 | 1346 | 11.42d | 0d | Kapil [70%] | 24h | P4 |
| 1348 | 1.5.5.5 | Verify SNR | 2.86d? | 2009-04-03 | 2009-04-08 | 1347 | 11.42d | 0d | Kapil [70%] | 16h | P4 |
| 1349 | 1.5.5.6 | Verify SFDR | 4.29d? | 2009-04-08 | 2009-04-15 | 1348 | 11.42d | 0d | Kapil [70%] | 24h | P4 |
| 1350 | 1.5.5.7 | Verify Averaging | 4.29d? | 2009-04-15 | 2009-04-21 | 1349 | 11.42d | 0d | Kapil [70%] | 24h | P3 |
| 1351 | 1.5.5.8 | Verify Signal Generation | 4.29d? | 2009-04-21 | 2009-04-27 | 1350 | 11.42d | 0d | Kapil [70%] | 24h | P3 |
| 1352 | 1.5.5.9 | Verify Marker Functions | 7.14d? | 2009-04-27 | 2009-05-06 | 1351 | 11.42d |  | Kapil [70%] | 40h | P5 |
| 1353 | 1.5.5.10 | Verify Octave | 10d? | 2008-04-01 | 2008-04-14 | 1113 | 39d | 0d | Mike [50%] | 40h | P7 |
| 1354 | 1.5.5.11 | Verify Orbit | 8d? | 2008-04-16 | 2008-04-25 | 1353 | 39d | 0d | Mike [50%] | 32h | P4 |
| 1355 | 1.5.5.12 | Verify FFT | 4.62d? | 2008-09-19 | 2008-09-26 | 1342 | 72.91d | 0d | ShashiP [65%] | 24h | P2 |
| 1356 | 1.5.5.13 | Verify SFFT | 6.15d? | 2008-09-26 | 2008-10-07 | 1355 | 71.91d | 0d | ShashiP [65%] | 32h | P5 |
| 1357 | 1.5.5.14 | Verify Windowing | 6.15d? | 2008-10-07 | 2008-10-16 | 1356 | 70.91d | 0d | ShashiP [65%] | 32h | P2 |
| 1358 | 1.5.5.15 | Verify Resampling | 6.15d? | 2008-10-16 | 2008-10-24 | 1357 | 70.91d | 0d | ShashiP [65%] | 32h | P4 |
| 1359 | 1.5.5.16 | Verify Zoom FFT | 6.15d? | 2008-10-24 | 2008-11-04 | 1358 | 69.91d | 0d | ShashiP [65%] | 32h | P4 |
| 1360 | 1.5.5.17 | Verify Linear Spectrum | 4.62d? | 2008-11-04 | 2008-11-11 | 1359 | 69.91d | 0d | ShashiP [65%] | 24h | P2 |
| 1361 | 1.5.5.18 | Verify Power Spectrum | 4.62d? | 2008-11-11 | 2008-11-18 | 1360 | 69.91d | 0d | ShashiP [65%] | 24h | P2 |
| 1362 | 1.5.5.19 | Verify Phase Spectrum | 4.62d? | 2008-11-18 | 2008-11-24 | 1361 | 69.91d | 0d | ShashiP [65%] | 24h | P3 |
| 1363 | 1.5.5.20 | Verify Cross Power | 4.62d? | 2008-11-24 | 2008-12-01 | 1362 | 69.91d | 0d | ShashiP [65%] | 24h | P3 |
| 1364 | 1.5.5.21 | Verify Limit Lines | 7.69d? | 2008-12-01 | 2008-12-12 | 1363 | 68.91d | 0d | ShashiP [65%] | 40h | P7 |
| 1365 | 1.5.5.22 | Verify Swept Sine | 6.15d? | 2008-12-12 | 2008-12-22 | 1364 | 68.91d | 0d | ShashiP [65%] | 32h | P6 |
| 1366 | 1.5.5.23 | Verify Gain, Phase margins | 6.15d? | 2008-12-22 | 2008-12-31 | 1365 | 67.91d | 0d | ShashiP [65%] | 32h | P6 |
| 1367 | 1.5.5.24 | Verify Frequency, Damping | 6.15d? | 2008-12-31 | 2009-01-08 | 1366 | 67.91d | 0d | ShashiP [65%] | 32h | P6 |
| 1368 | 1.5.5.25 | Verify Frequency Response | 15.38d? | 2009-01-08 | 2009-01-29 | 1367 | 67.91d | 0d | ShashiP [65%] | 80h | P3 |
| 1369 | 1.5.5.26 | Verify Group Delay | 6.15d? | 2009-01-29 | 2009-02-09 | 1368 | 67.91d | 0d | ShashiP [65%] | 32h | P3 |
| 1370 | 1.5.5.27 | Verify Variance | 6.15d? | 2009-02-09 | 2009-02-17 | 1369 | 67.91d |  | ShashiP [65%] | 32h | P6 |
| 1371 | 1.5.5.28 | Verify Weighting filters for octave analysis A- weighting filter + B-weigghting filter +C- weighting filter | 7.69d? | 2009-01-26 | 2009-02-04 | 1219 | 37.91d | 0d | Ramkumar [65%] | 40h | P6 |
| 1372 | 1.5.5.29 | Verify General Weighting filters (A+B+C-weighting filter) | 7.69d? | 2009-02-04 | 2009-02-16 | 1371 | 37.91d | 0d | Ramkumar [65%] | 40h | P6 |
| 1373 | 1.5.5.30 | Verify CCIR filters | 7.69d? | 2009-02-16 | 2009-02-26 | 1372 | 37.91d | 0d | Ramkumar [65%] | 40h | P6 |
| 1374 | 1.5.5.31 | Verify Low Pass, high pass, band pass, notch | 7.69d? | 2009-02-26 | 2009-03-09 | 1373 | 37.91d | 0d | Ramkumar [65%] | 40h | P6 |
| 1375 | 1.5.5.32 | Verify Coherence | 7.69d? | 2009-03-09 | 2009-03-19 | 1374 | 37.91d | 0d | Ramkumar [65%] | 40h | P3 |
| 1376 | 1.5.5.33 | Verify all Math | 7.69d? | 2009-03-19 | 2009-03-31 | 1375 | 37.91d |  | Ramkumar [65%] | 40h | P7 |

| ID | WBS | Task | Duration | Start | Finish | Predecessors | Total slack | Free slack | Resources | Work | Text1 |
| --- | --- | --- | --- | --- | --- | --- | --- | --- | --- | --- | --- |
| 1377 | 1.5.6 | **Tests With Hardware** | 235d? | 2008-05-08 | 2009-04-01 |  | 36.14d |  |  | 476h | P9 |
| 1378 | 1.5.6.1 | **Transforms** | 20d? | 2008-05-08 | 2008-06-04 |  | 37d |  |  | 44h |  |
| 1379 | 1.5.6.1.1 | FFT | 2d? | 2008-05-08 | 2008-05-09 | 1354 | 37d | 0d | Mike [50%] | 8h |  |
| 1380 | 1.5.6.1.2 | Identify/Create actual input signals to match verification cases above | 2d? | 2008-05-12 | 2008-05-13 | 1379 | 37d | 0d | Mike [50%] | 8h |  |
| 1381 | 1.5.6.1.3 | Inject signals into hardware and capture the results. | 4d? | 2008-05-20 | 2008-05-23 | 1380 | 37d | 0d | Mike [50%] | 16h |  |
| 1382 | 1.5.6.1.4 | Compare results through hardware with software verfification | 2d? | 2008-06-02 | 2008-06-03 | 1381 | 37d | 0d | Mike [50%] | 8h |  |
| 1383 | 1.5.6.1.5 | Review Results | 1d? | 2008-06-04 | 2008-06-04 | 1382 | 37d | 0d | Mike [50%] | 4h |  |
| 1384 | 1.5.6.2 | **STFT** | 12d? | 2008-06-10 | 2008-06-25 |  | 37d |  |  | 36h |  |
| 1385 | 1.5.6.2.1 | Identify/Create actual input signals to match verification cases above | 2d? | 2008-06-10 | 2008-06-11 | 1383 | 37d | 0d | Mike [50%] | 8h |  |
| 1386 | 1.5.6.2.2 | Inject signals into hardware and capture the results. | 4d? | 2008-06-17 | 2008-06-20 | 1385 | 38d | 0d | Mike [50%] | 16h |  |
| 1387 | 1.5.6.2.3 | Compare results through hardware with software verfification | 2d? | 2008-06-23 | 2008-06-24 | 1386 | 38d | 0d | Mike [50%] | 8h |  |
| 1388 | 1.5.6.2.4 | Review Results | 1d? | 2008-06-25 | 2008-06-25 | 1387 | 38d | 0d | Mike [50%] | 4h |  |
| 1389 | 1.5.6.3 | **Windowing** | 16d? | 2008-06-26 | 2008-07-17 |  | 38d |  |  | 24h |  |
| 1390 | 1.5.6.3.1 | Identify/Create actual input signals to match verification cases above | 1d? | 2008-06-26 | 2008-06-26 | 1388 | 38d | 0d | Mike [50%] | 4h |  |
| 1391 | 1.5.6.3.2 | Inject signals into hardware and capture the results. | 2d? | 2008-06-27 | 2008-06-30 | 1390 | 38d | 0d | Mike [50%] | 8h |  |
| 1392 | 1.5.6.3.3 | Compare results through hardware with software verfification | 2d? | 2008-07-01 | 2008-07-02 | 1391 | 38d | 0d | Mike [50%] | 8h |  |
| 1393 | 1.5.6.3.4 | Review Results | 1d? | 2008-07-17 | 2008-07-17 | 1392 | 38d | 0d | Mike [50%] | 4h |  |
| 1394 | 1.5.6.4 | **Resampling** | 21d? | 2008-07-24 | 2008-08-21 |  | 36d |  |  | 52h |  |
| 1395 | 1.5.6.4.1 | Identify/Create actual input signals to match verification cases above | 4d? | 2008-07-24 | 2008-07-29 | 1393 | 38d | 0d | Mike [50%] | 16h |  |
| 1396 | 1.5.6.4.2 | Inject signals into hardware and capture the results. | 4d? | 2008-08-05 | 2008-08-08 | 1395 | 38d | 0d | Mike [50%] | 16h |  |
| 1397 | 1.5.6.4.3 | Compare results through hardware with software verfification | 4d? | 2008-08-15 | 2008-08-20 | 1396 | 36d | 0d | Mike [50%] | 16h |  |
| 1398 | 1.5.6.4.4 | Review Results | 1d? | 2008-08-21 | 2008-08-21 | 1397 | 36d | 0d | Mike [50%] | 4h |  |
| 1399 | 1.5.6.5 | **ZoomFFT** | 13d? | 2008-08-26 | 2008-09-11 |  | 36d |  |  | 28h |  |
| 1400 | 1.5.6.5.1 | Identify/Create actual input signals to match verification cases above | 2d? | 2008-08-26 | 2008-08-27 | 1398 | 36d | 0d | Mike [50%] | 8h |  |
| 1401 | 1.5.6.5.2 | Inject signals into hardware and capture the results. | 2d? | 2008-09-01 | 2008-09-02 | 1400 | 36d | 0d | Mike [50%] | 8h |  |
| 1402 | 1.5.6.5.3 | Compare results through hardware with software verfification | 2d? | 2008-09-08 | 2008-09-09 | 1401 | 36d | 0d | Mike [50%] | 8h |  |
| 1403 | 1.5.6.5.4 | Review Results | 1d? | 2008-09-11 | 2008-09-11 | 1402 | 36d | 0d | Mike [50%] | 4h |  |

| ID | WBS | Task | Duration | Start | Finish | Predecessors | Total slack | Free slack | Resources | Work |
| --- | --- | --- | --- | --- | --- | --- | --- | --- | --- | --- |
| 1404 | 1.5.6.6 | **Spectrums** | 49d? | 2008-09-15 | 2008-11-20 |  | 36d |  |  | 100h |
| 1405 | 1.5.6.6.1 | **Linear** | 9d? | 2008-09-15 | 2008-09-25 |  | 36d |  |  | 20h |
| 1406 | 1.5.6.6.1.1 | Identify/Create actual input signals to match verification cases above | 1d? | 2008-09-15 | 2008-09-15 | 1403 | 36d | 0d | Mike [50%] | 4h |
| 1407 | 1.5.6.6.1.2 | Inject signals into hardware and capture the results. | 2d? | 2008-09-18 | 2008-09-19 | 1406 | 36d | 0d | Mike [50%] | 8h |
| 1408 | 1.5.6.6.1.3 | Compare results through hardware with software verfification | 1d? | 2008-09-23 | 2008-09-23 | 1407 | 36d | 0d | Mike [50%] | 4h |
| 1409 | 1.5.6.6.1.4 | Review Results | 1d? | 2008-09-25 | 2008-09-25 | 1408 | 36d | 0d | Mike [50%] | 4h |
| 1410 | 1.5.6.6.2 | **Power** | 9d? | 2008-09-29 | 2008-10-09 |  | 36d |  |  | 20h |
| 1411 | 1.5.6.6.2.1 | Identify/Create actual input signals to match verification cases above | 1d? | 2008-09-29 | 2008-09-29 | 1409 | 36d | 0d | Mike [50%] | 4h |
| 1412 | 1.5.6.6.2.2 | Inject signals into hardware and capture the results. | 2d? | 2008-10-02 | 2008-10-03 | 1411 | 36d | 0d | Mike [50%] | 8h |
| 1413 | 1.5.6.6.2.3 | Compare results through hardware with software verfification | 1d? | 2008-10-07 | 2008-10-07 | 1412 | 36d | 0d | Mike [50%] | 4h |
| 1414 | 1.5.6.6.2.4 | Review Results | 1d? | 2008-10-09 | 2008-10-09 | 1413 | 36d | 0d | Mike [50%] | 4h |
| 1415 | 1.5.6.6.3 | **Phase** | 9d? | 2008-10-13 | 2008-10-23 |  | 36d |  |  | 20h |
| 1416 | 1.5.6.6.3.1 | Identify/Create actual input signals to match verification cases above | 1d? | 2008-10-13 | 2008-10-13 | 1414 | 36d | 0d | Mike [50%] | 4h |
| 1417 | 1.5.6.6.3.2 | Inject signals into hardware and capture the results. | 2d? | 2008-10-16 | 2008-10-17 | 1416 | 36d | 0d | Mike [50%] | 8h |
| 1418 | 1.5.6.6.3.3 | Compare results through hardware with software verfification | 1d? | 2008-10-21 | 2008-10-21 | 1417 | 36d | 0d | Mike [50%] | 4h |
| 1419 | 1.5.6.6.3.4 | Review Results | 1d? | 2008-10-23 | 2008-10-23 | 1418 | 36d | 0d | Mike [50%] | 4h |
| 1420 | 1.5.6.6.4 | **Auto power** | 9d? | 2008-10-27 | 2008-11-06 |  | 36d |  |  | 20h |
| 1421 | 1.5.6.6.4.1 | Identify/Create actual input signals to match verification cases above | 1d? | 2008-10-27 | 2008-10-27 | 1419 | 36d | 0d | Mike [50%] | 4h |
| 1422 | 1.5.6.6.4.2 | Inject signals into hardware and capture the results. | 2d? | 2008-10-29 | 2008-10-30 | 1421 | 36d | 0d | Mike [50%] | 8h |
| 1423 | 1.5.6.6.4.3 | Compare results through hardware with software verfification | 1d? | 2008-11-04 | 2008-11-04 | 1422 | 38d | 0d | Mike [50%] | 4h |
| 1424 | 1.5.6.6.4.4 | Review Results | 1d? | 2008-11-06 | 2008-11-06 | 1423 | 37d | 0d | Mike [50%] | 4h |
| 1425 | 1.5.6.6.5 | **Cross power** | 9d? | 2008-11-10 | 2008-11-20 |  | 37d |  |  | 20h |
| 1426 | 1.5.6.6.5.1 | Identify/Create actual input signals to match verification cases above | 1d? | 2008-11-10 | 2008-11-10 | 1424 | 39d | 0d | Mike [50%] | 4h |
| 1427 | 1.5.6.6.5.2 | Inject signals into hardware and capture the results. | 2d? | 2008-11-13 | 2008-11-14 | 1426 | 39d | 0d | Mike [50%] | 8h |
| 1428 | 1.5.6.6.5.3 | Compare results through hardware with software verfification | 1d? | 2008-11-17 | 2008-11-17 | 1427 | 39d | 0d | Mike [50%] | 4h |
| 1429 | 1.5.6.6.5.4 | Review Results | 1d? | 2008-11-20 | 2008-11-20 | 1428 | 37d | 0d | Mike [50%] | 4h |

| ID | WBS | Task | Duration | Start | Finish | Predecessors | Total slack | Free slack | Resources | Work |
| --- | --- | --- | --- | --- | --- | --- | --- | --- | --- | --- |
| 1430 | 1.5.6.7 | **Limit lines** | 20d? | 2008-11-21 | 2008-12-18 |  | 37d |  |  | 40h |
| 1431 | 1.5.6.7.1 | **Upper limit** | 9d? | 2008-11-21 | 2008-12-03 |  | 37d |  |  | 20h |
| 1432 | 1.5.6.7.1.1 | Identify/Create actual input signals to match verification cases above | 1d? | 2008-11-21 | 2008-11-21 | 1429 | 37d | 0d | Mike [50%] | 4h |
| 1433 | 1.5.6.7.1.2 | Inject signals into hardware and capture the results. | 2d? | 2008-11-24 | 2008-11-25 | 1432 | 37d | 0d | Mike [50%] | 8h |
| 1434 | 1.5.6.7.1.3 | Compare results through hardware with software verfification | 1d? | 2008-12-02 | 2008-12-02 | 1433 | 37d | 0d | Mike [50%] | 4h |
| 1435 | 1.5.6.7.1.4 | Review Results | 1d? | 2008-12-03 | 2008-12-03 | 1434 | 37d | 0d | Mike [50%] | 4h |
| 1436 | 1.5.6.7.2 | **Lower limit** | 9d? | 2008-12-08 | 2008-12-18 |  | 38d |  |  | 20h |
| 1437 | 1.5.6.7.2.1 | Identify/Create actual input signals to match verification cases above | 1d? | 2008-12-08 | 2008-12-08 | 1435 | 39d | 0d | Mike [50%] | 4h |
| 1438 | 1.5.6.7.2.2 | Inject signals into hardware and capture the results. | 2d? | 2008-12-11 | 2008-12-12 | 1437 | 39d | 0d | Mike [50%] | 8h |
| 1439 | 1.5.6.7.2.3 | Compare results through hardware with software verfification | 1d? | 2008-12-15 | 2008-12-15 | 1438 | 39d | 0d | Mike [50%] | 4h |
| 1440 | 1.5.6.7.2.4 | Review Results | 1d? | 2008-12-18 | 2008-12-18 | 1439 | 38d | 0d | Mike [50%] | 4h |
| 1441 | 1.5.6.8 | **Swept Sine** | 70d? | 2008-12-25 | 2009-04-01 |  | 36.14d |  |  | 152h |
| 1442 | 1.5.6.8.1 | **Gain, Phase margins** | 12d? | 2008-12-25 | 2009-01-09 |  | 36d |  |  | 32h |
| 1443 | 1.5.6.8.1.1 | Identify/Create actual input signals to match verification cases above | 4d? | 2008-12-25 | 2008-12-30 | 1440 | 38d | 0d | Mike [50%] | 16h |
| 1444 | 1.5.6.8.1.2 | Inject signals into hardware and capture the results. | 2d? | 2009-01-01 | 2009-01-02 | 1443 | 38d | 0d | Mike [50%] | 8h |
| 1445 | 1.5.6.8.1.3 | Compare results through hardware with software verfification | 1d? | 2009-01-05 | 2009-01-05 | 1444 | 38d | 0d | Mike [50%] | 4h |
| 1446 | 1.5.6.8.1.4 | Review Results | 1d? | 2009-01-09 | 2009-01-09 | 1445 | 36d | 0d | Mike [50%] | 4h |
| 1447 | 1.5.6.8.2 | **Frequency, Damping** | 14d? | 2009-01-14 | 2009-02-02 |  | 36d |  |  | 32h |
| 1448 | 1.5.6.8.2.1 | Identify/Create actual input signals to match verification cases above | 4d? | 2009-01-14 | 2009-01-19 | 1446 | 36d | 0d | Mike [50%] | 16h |
| 1449 | 1.5.6.8.2.2 | Inject signals into hardware and capture the results. | 2d? | 2009-01-26 | 2009-01-27 | 1448 | 36d | 0d | Mike [50%] | 8h |
| 1450 | 1.5.6.8.2.3 | Compare results through hardware with software verfification | 1d? | 2009-01-29 | 2009-01-29 | 1449 | 36d | 0d | Mike [50%] | 4h |
| 1451 | 1.5.6.8.2.4 | Review Results | 1d? | 2009-02-02 | 2009-02-02 | 1450 | 36d | 0d | Mike [50%] | 4h |
| 1452 | 1.5.6.8.3 | **Frequency Response** | 8d? | 2009-02-05 | 2009-02-16 |  | 36d |  |  | 24h |
| 1453 | 1.5.6.8.3.1 | Identify/Create actual input signals to match verification cases above | 2d? | 2009-02-05 | 2009-02-06 | 1451 | 36d | 0d | Mike [50%] | 8h |
| 1454 | 1.5.6.8.3.2 | Inject signals into hardware and capture the results. | 2d? | 2009-02-11 | 2009-02-12 | 1453 | 36d | 0d | Mike [50%] | 8h |
| 1455 | 1.5.6.8.3.3 | Compare results through hardware with software verfification | 1d? | 2009-02-13 | 2009-02-13 | 1454 | 36d | 0d | Mike [50%] | 4h |
| 1456 | 1.5.6.8.3.4 | Review Results | 1d? | 2009-02-16 | 2009-02-16 | 1455 | 36d | 0d | Mike [50%] | 4h |

| ID | WBS | Task | Duration | Start | Finish | Predecessors | Total slack | Free slack | Resources | Work | Text1 |
| --- | --- | --- | --- | --- | --- | --- | --- | --- | --- | --- | --- |
| 1457 | 1.5.6.8.4 | **Variance** | 17d? | 2009-02-17 | 2009-03-11 |  | 36d |  |  | 32h |  |
| 1458 | 1.5.6.8.4.1 | Identify/Create actual input signals to match verification cases above | 4d? | 2009-02-17 | 2009-02-20 | 1456 | 36d | 0d | Mike [50%] | 16h |  |
| 1459 | 1.5.6.8.4.2 | Inject signals into hardware and capture the results. | 2d? | 2009-03-04 | 2009-03-05 | 1458 | 36d | 0d | Mike [50%] | 8h |  |
| 1460 | 1.5.6.8.4.3 | Compare results through hardware with software verfification | 1d? | 2009-03-10 | 2009-03-10 | 1459 | 38d | 0d | Mike [50%] | 4h |  |
| 1461 | 1.5.6.8.4.4 | Review Results | 1d? | 2009-03-11 | 2009-03-11 | 1460 | 38d | 0d | Mike [50%] | 4h |  |
| 1462 | 1.5.6.8.5 | **Group Delay** | 10d? | 2009-03-19 | 2009-04-01 |  | 36.14d |  |  | 32h |  |
| 1463 | 1.5.6.8.5.1 | Identify/Create actual input signals to match verification cases above | 4d? | 2009-03-19 | 2009-03-24 | 1461 | 38d | 0d | Mike [50%] | 16h |  |
| 1464 | 1.5.6.8.5.2 | Inject signals into hardware and capture the results. | 2d? | 2009-03-27 | 2009-03-30 | 1463 | 36.14d | 0d | Mike [50%] | 8h |  |
| 1465 | 1.5.6.8.5.3 | Compare results through hardware with software verfification | 1d? | 2009-03-31 | 2009-03-31 | 1464 | 36.14d | 0d | Mike [50%] | 4h |  |
| 1466 | 1.5.6.8.5.4 | Review Results | 1d? | 2009-04-01 | 2009-04-01 | 1465 | 36.14d |  | Mike [50%] | 4h |  |
| 1467 | 1.5.7 | **Unmanaged interface definition** | 199d? | 2008-02-08 | 2008-11-12 |  | 34d |  |  | 456h |  |
| 1468 | 1.5.7.1 | Identify IE needs | 4d? | 2008-02-08 | 2008-02-13 | 20 | 35d | 0d | Mike [50%] | 16h | P1 |
| 1469 | 1.5.7.2 | Identify Heroes needs | 4d? | 2008-02-14 | 2008-02-19 | 1468 | 35d | 0d | Mike [50%] | 16h | P1 |
| 1470 | 1.5.7.3 | Define interface style/model | 12d? | 2008-02-20 | 2008-03-06 | 1469 | 35d | 0d | Mike [50%] | 48h | P1 |
| 1471 | 1.5.7.4 | Review with IE and Hereos team | 2d? | 2008-03-07 | 2008-03-10 | 1470 | 35d | 0d | Mike [50%] | 8h | P1 |
| 1472 | 1.5.7.5 | Incorporate review decisions | 4d? | 2008-03-11 | 2008-03-14 | 1471 | 35d | 0d | Mike [50%] | 16h | P1 |
| 1473 | 1.5.7.6 | **Transforms** | 7d? | 2008-03-17 | 2008-03-25 |  | 35d |  |  | 28h |  |
| 1474 | 1.5.7.6.1 | FFT | 2d? | 2008-03-17 | 2008-03-18 | 1472 | 35d | 0d | Mike [50%] | 8h | P1 |
| 1475 | 1.5.7.6.2 | STFT | 2d? | 2008-03-19 | 2008-03-20 | 1474 | 35d | 0d | Mike [50%] | 8h | P4 |
| 1476 | 1.5.7.6.3 | Windowing | 1d? | 2008-03-21 | 2008-03-21 | 1475 | 35d | 0d | Mike [50%] | 4h | P1 |
| 1477 | 1.5.7.6.4 | Resampling | 1d? | 2008-03-24 | 2008-03-24 | 1476 | 35d | 0d | Mike [50%] | 4h | P3 |
| 1478 | 1.5.7.6.5 | ZoomFFT | 1d? | 2008-03-25 | 2008-03-25 | 1477 | 35d | 0d | Mike [50%] | 4h | P3 |
| 1479 | 1.5.7.7 | **Spectrums** | 15d? | 2008-03-26 | 2008-04-15 |  | 35d |  |  | 20h |  |
| 1480 | 1.5.7.7.1 | Linear | 1d? | 2008-03-26 | 2008-03-26 | 1478 | 35d | 0d | Mike [50%] | 4h | P1 |
| 1481 | 1.5.7.7.2 | Power | 1d? | 2008-03-27 | 2008-03-27 | 1480 | 35d | 0d | Mike [50%] | 4h | P1 |
| 1482 | 1.5.7.7.3 | Phase | 1d? | 2008-03-28 | 2008-03-28 | 1481 | 35d | 0d | Mike [50%] | 4h | P2 |
| 1483 | 1.5.7.7.4 | Auto power | 1d? | 2008-03-31 | 2008-03-31 | 1482 | 35d | 0d | Mike [50%] | 4h | P2 |
| 1484 | 1.5.7.7.5 | Cross power | 1d? | 2008-04-15 | 2008-04-15 | 1483 | 35d | 0d | Mike [50%] | 4h | P2 |

| ID | WBS | Task | Duration | Start | Finish | Predecessors | Total slack | Free slack | Resources | Work | Text1 |
| --- | --- | --- | --- | --- | --- | --- | --- | --- | --- | --- | --- |
| 1485 | 1.5.7.8 | **Filters** | 24d? | 2008-04-28 | 2008-05-29 |  | 35d |  |  | 64h | P5 |
| 1486 | 1.5.7.8.1 | Weighting filters | 8d? | 2008-04-28 | 2008-05-07 | 1484 | 35d | 0d | Mike [50%] | 32h |  |
| 1487 | 1.5.7.8.2 | CCIR | 4d? | 2008-05-14 | 2008-05-19 | 1486 | 35d | 0d | Mike [50%] | 16h |  |
| 1488 | 1.5.7.8.3 | Low Pass, high pass, band pass, notch | 4d? | 2008-05-26 | 2008-05-29 | 1487 | 35d | 0d | Mike [50%] | 16h |  |
| 1489 | 1.5.7.9 | **Distortion** | 12d? | 2008-05-30 | 2008-06-16 |  | 35d |  |  | 28h |  |
| 1490 | 1.5.7.9.1 | THD | 1d? | 2008-05-30 | 2008-05-30 | 1488 | 35d | 0d | Mike [50%] | 4h | P1 |
| 1491 | 1.5.7.9.2 | THD + Noise | 2d? | 2008-06-05 | 2008-06-06 | 1490 | 35d | 0d | Mike [50%] | 8h | P1 |
| 1492 | 1.5.7.9.3 | SINAD | 1d? | 2008-06-09 | 2008-06-09 | 1491 | 35d | 0d | Mike [50%] | 4h | P3 |
| 1493 | 1.5.7.9.4 | ENOB | 1d? | 2008-06-12 | 2008-06-12 | 1492 | 35d | 0d | Mike [50%] | 4h | P3 |
| 1494 | 1.5.7.9.5 | SNR | 1d? | 2008-06-13 | 2008-06-13 | 1493 | 35d | 0d | Mike [50%] | 4h | P3 |
| 1495 | 1.5.7.9.6 | SFDR | 1d? | 2008-06-16 | 2008-06-16 | 1494 | 35d | 0d | Mike [50%] | 4h | P3 |
| 1496 | 1.5.7.10 | Averaging | 10d? | 2008-07-03 | 2008-07-16 | 1495 | 35d | 0d | Mike [50%] | 40h | P2 |
| 1497 | 1.5.7.11 | Coherence | 2d? | 2008-07-18 | 2008-07-21 | 1496 | 35d | 0d | Mike [50%] | 8h | P2 |
| 1498 | 1.5.7.12 | **Signal Generation** | 10d? | 2008-07-22 | 2008-08-04 |  | 35d |  |  | 24h |  |
| 1499 | 1.5.7.12.1 | Sine | 1d? | 2008-07-22 | 2008-07-22 | 1497 | 35d | 0d | Mike [50%] | 4h | P2 |
| 1500 | 1.5.7.12.2 | Square | 1d? | 2008-07-23 | 2008-07-23 | 1499 | 35d | 0d | Mike [50%] | 4h | P3 |
| 1501 | 1.5.7.12.3 | **Noise** | 4d? | 2008-07-30 | 2008-08-04 |  | 35d |  |  | 16h | P3 |
| 1502 | 1.5.7.12.3.1 | Random | 1d? | 2008-07-30 | 2008-07-30 | 1500 | 35d | 0d | Mike [50%] | 4h |  |
| 1503 | 1.5.7.12.3.2 | Pink | 1d? | 2008-07-31 | 2008-07-31 | 1502 | 35d | 0d | Mike [50%] | 4h |  |
| 1504 | 1.5.7.12.3.3 | White | 1d? | 2008-08-01 | 2008-08-01 | 1503 | 35d | 0d | Mike [50%] | 4h |  |
| 1505 | 1.5.7.12.3.4 | Gaussian | 1d? | 2008-08-04 | 2008-08-04 | 1504 | 35d | 0d | Mike [50%] | 4h |  |
| 1506 | 1.5.7.13 | Octave | 2d? | 2008-08-11 | 2008-08-12 | 1505 | 35d | 0d | Mike [50%] | 8h | P6 |
| 1507 | 1.5.7.14 | **Math** | 21d? | 2008-08-13 | 2008-09-10 |  | 35d |  |  | 40h | P6 |
| 1508 | 1.5.7.14.1 | Cepstrum | 2d? | 2008-08-13 | 2008-08-14 | 1506 | 35d | 0d | Mike [50%] | 8h |  |
| 1509 | 1.5.7.14.2 | Basic Complex math | 2d? | 2008-08-22 | 2008-08-25 | 1508 | 35d | 0d | Mike [50%] | 8h |  |
| 1510 | 1.5.7.14.3 | Hilbert | 2d? | 2008-08-28 | 2008-08-29 | 1509 | 35d | 0d | Mike [50%] | 8h |  |
| 1511 | 1.5.7.14.4 | Conversions | 2d? | 2008-09-03 | 2008-09-04 | 1510 | 35d | 0d | Mike [50%] | 8h |  |
| 1512 | 1.5.7.14.5 | Differentiation/Integration | 1d? | 2008-09-05 | 2008-09-05 | 1511 | 35d | 0d | Mike [50%] | 4h |  |
| 1513 | 1.5.7.14.6 | Statistical (mean,mode…) | 1d? | 2008-09-10 | 2008-09-10 | 1512 | 35d | 0d | Mike [50%] | 4h |  |

| ID | WBS | Task | Duration | Start | Finish | Predecessors | Total slack | Free slack | Resources | Work | Text1 |
| --- | --- | --- | --- | --- | --- | --- | --- | --- | --- | --- | --- |
| 1514 | 1.5.7.15 | **Limit lines** | 3d? | 2008-09-12 | 2008-09-16 |  | 35d |  |  | 8h | P6 |
| 1515 | 1.5.7.15.1 | Upper limit | 1d? | 2008-09-12 | 2008-09-12 | 1513 | 35d | 0d | Mike [50%] | 4h |  |
| 1516 | 1.5.7.15.2 | Lower limit | 1d? | 2008-09-16 | 2008-09-16 | 1515 | 35d | 0d | Mike [50%] | 4h |  |
| 1517 | 1.5.7.16 | **Swept Sine** | 10d? | 2008-09-17 | 2008-09-30 |  | 35d |  |  | 20h |  |
| 1518 | 1.5.7.16.1 | Gain, Phase margins | 1d? | 2008-09-17 | 2008-09-17 | 1516 | 35d | 0d | Mike [50%] | 4h | P5 |
| 1519 | 1.5.7.16.2 | Frequency, Damping | 1d? | 2008-09-22 | 2008-09-22 | 1518 | 35d | 0d | Mike [50%] | 4h | P5 |
| 1520 | 1.5.7.16.3 | Frequency Response | 1d? | 2008-09-24 | 2008-09-24 | 1519 | 35d | 0d | Mike [50%] | 4h | P2 |
| 1521 | 1.5.7.16.4 | Variance | 1d? | 2008-09-26 | 2008-09-26 | 1520 | 35d | 0d | Mike [50%] | 4h | P5 |
| 1522 | 1.5.7.16.5 | Group Delay | 1d? | 2008-09-30 | 2008-09-30 | 1521 | 35d | 0d | Mike [50%] | 4h | P2 |
| 1523 | 1.5.7.17 | **Marker Functions** | 11d? | 2008-10-01 | 2008-10-15 |  | 35d |  |  | 24h | P4 |
| 1524 | 1.5.7.17.1 | Peak Search | 1d? | 2008-10-01 | 2008-10-01 | 1522 | 35d | 0d | Mike [50%] | 4h |  |
| 1525 | 1.5.7.17.2 | Next Largest Peak | 1d? | 2008-10-06 | 2008-10-06 | 1524 | 35d | 0d | Mike [50%] | 4h |  |
| 1526 | 1.5.7.17.3 | Next Peak Right | 1d? | 2008-10-08 | 2008-10-08 | 1525 | 35d | 0d | Mike [50%] | 4h |  |
| 1527 | 1.5.7.17.4 | Next Peak Left | 1d? | 2008-10-10 | 2008-10-10 | 1526 | 35d | 0d | Mike [50%] | 4h |  |
| 1528 | 1.5.7.17.5 | Peak Tracking | 1d? | 2008-10-14 | 2008-10-14 | 1527 | 35d | 0d | Mike [50%] | 4h |  |
| 1529 | 1.5.7.17.6 | Marker to Center | 1d? | 2008-10-15 | 2008-10-15 | 1528 | 35d | 0d | Mike [50%] | 4h |  |
| 1530 | 1.5.7.18 | Orbit | 1d? | 2008-10-20 | 2008-10-20 | 1529 | 35d | 0d | Mike [50%] | 4h | P3 |
| 1531 | 1.5.7.19 | **Time measurements** | 16d? | 2008-10-22 | 2008-11-12 |  | 34d |  |  | 36h | P4 |
| 1532 | 1.5.7.19.1 | Delay time function | 1d? | 2008-10-22 | 2008-10-22 | 1530 | 35d | 0d | Mike [50%] | 4h |  |
| 1533 | 1.5.7.19.2 | Maximum overshoot | 1d? | 2008-10-24 | 2008-10-24 | 1532 | 35d | 0d | Mike [50%] | 4h |  |
| 1534 | 1.5.7.19.3 | Rise time | 1d? | 2008-10-28 | 2008-10-28 | 1533 | 35d | 0d | Mike [50%] | 4h |  |
| 1535 | 1.5.7.19.4 | Decay Time | 2d? | 2008-10-31 | 2008-11-03 | 1534 | 35d | 0d | Mike [50%] | 8h |  |
| 1536 | 1.5.7.19.5 | Pulse Width | 1d? | 2008-11-05 | 2008-11-05 | 1535 | 35d | 0d | Mike [50%] | 4h |  |
| 1537 | 1.5.7.19.6 | Voltage Max | 1d? | 2008-11-07 | 2008-11-07 | 1536 | 35d | 0d | Mike [50%] | 4h |  |
| 1538 | 1.5.7.19.7 | Voltage Min | 1d? | 2008-11-11 | 2008-11-11 | 1537 | 34d | 0d | Mike [50%] | 4h |  |
| 1539 | 1.5.7.19.8 | Settling time | 1d? | 2008-11-12 | 2008-11-12 | 1538 | 34d | 0d | Mike [50%] | 4h |  |

| ID | WBS | Task | Duration | Start | Finish | Predecessors | Total slack | Free slack | Constraint | Resources | Work | Text1 |
| --- | --- | --- | --- | --- | --- | --- | --- | --- | --- | --- | --- | --- |
| 1540 | 1.5.8 | **Error codes definition** | 10d? | 2008-03-04 | 2008-03-18 |  | 9.99d |  |  |  | 56h | P2 |
| 1541 | 1.5.8.1 | Categorize errors | 4.29d? | 2008-03-04 | 2008-03-10 | 783 | 9.99d | 0d |  | Kapil [70%] | 24h |  |
| 1542 | 1.5.8.2 | Error code translation proposal/plan | 4.29d? | 2008-03-11 | 2008-03-17 | 1541 | 10.99d | 0d |  | Kapil [70%] | 24h |  |
| 1543 | 1.5.8.3 | Review with team | 0.71d? | 2008-03-17 | 2008-03-17 | 1542 | 10.99d | 0d |  | Kapil [70%] | 4h |  |
| 1544 | 1.5.8.4 | Incorporate review decisions | 0.71d? | 2008-03-18 | 2008-03-18 | 1543 | 10.99d | 0d |  | Kapil [70%] | 4h |  |
| 1545 | 1.5.9 | **Define meas to be implemented in MVP** | 22d? | 2008-11-18 | 2008-12-17 |  | 32d |  |  |  | 48h | P1 |
| 1546 | 1.5.9.1 | List the meas for MVP | 2d? | 2008-11-18 | 2008-11-19 | 1539 | 34d | 0d |  | Mike [50%] | 8h |  |
| 1547 | 1.5.9.2 | Identify dependecies on other meas | 4d? | 2008-11-26 | 2008-12-01 | 1546 | 34d | 0d |  | Mike [50%] | 16h |  |
| 1548 | 1.5.9.3 | Review with team | 2d? | 2008-12-04 | 2008-12-05 | 1547 | 32d | 0d |  | Mike [50%] | 8h |  |
| 1549 | 1.5.9.4 | Incorporate review decisions | 2d? | 2008-12-09 | 2008-12-10 | 1548 | 32d | 0d |  | Mike [50%] | 8h |  |
| 1550 | 1.5.9.5 | Finalize meas definition for MVP | 2d? | 2008-12-16 | 2008-12-17 | 1549 | 32d | 0d |  | Mike [50%] | 8h |  |
| 1551 | 1.5.10 | **Infrastructure Development** | 233d? | 2008-02-04 | 2008-12-24 |  | 10.99d |  |  |  | 88h | P1 |
| 1552 | 1.5.10.1 | Process to keep development tools in sync on development machines | 2.86d? | 2008-02-04 | 2008-02-06 |  | 10.99d | 0d |  | Kapil [70%] | 16h |  |
| 1553 | 1.5.10.2 | Unit test framework setup | 2.86d? | 2008-02-06 | 2008-02-12 | 1552 | 9.99d | 0d |  | Kapil [70%] | 16h |  |
| 1554 | 1.5.10.3 | Test result reporting and tracking | 4.29d? | 2008-02-12 | 2008-02-18 | 1553 | 9.99d | 0d |  | Kapil [70%] | 24h |  |
| 1555 | 1.5.10.4 | Folder structure (OS, Unit test, performance test, verfication test and results) | 1.43d? | 2008-02-18 | 2008-02-20 | 1554 | 9.99d | 0d |  | Kapil [70%] | 8h |  |
| 1556 | 1.5.10.5 | Defect tracking system | 1.43d? | 2008-02-20 | 2008-02-21 | 1555 | 9.99d | 0d |  | Kapil [70%] | 8h |  |
| 1557 | 1.5.10.6 | Work with LP to understand their needs | 4d? | 2008-12-19 | 2008-12-24 | 1550, 1556 | 31d | 0d |  | Mike [50%] | 16h |  |
| 1558 | 1.6 | **AI Less SLIC Single Commands** | 339.14d? | 2008-02-04 | 2009-05-22 |  | 0d |  |  |  | 3007.99h |  |
| 1559 | 1.6.1 | Develop Code and Nunit tests for 200 Parser Commands (15 per Day) | 18.57d? | 2008-02-04 | 2008-02-29 |  | 0d |  | start no earlier than 2008-02-04 | Vishal [70%] | 104h |  |
| 1560 | 1.6.2 | **Instrument Engine AI Layer** | 102.57d | 2008-02-29 | 2008-07-23 |  | 0d |  |  |  | 552h |  |
| 1561 | 1.6.2.1 | Design Frequency IE Interface | 2.86d | 2008-02-29 | 2008-03-05 | 1559 | 0d |  |  | Vishal [70%] | 16h |  |
| 1562 | 1.6.2.2 | Implement Frequency IE Interface | 2.86d | 2008-03-05 | 2008-03-10 | 1561 | 0d |  |  | Vishal [70%] | 16h |  |
| 1563 | 1.6.2.3 | Nunit Frequency IE Interface | 1.43d | 2008-03-10 | 2008-03-11 | 1562 | 0d |  |  | Vishal [70%] | 8h |  |
| 1564 | 1.6.2.4 | Design Channel IE Interface | 7.14d | 2008-03-11 | 2008-03-20 | 1563 | 0d |  |  | Vishal [70%] | 40h |  |
| 1565 | 1.6.2.5 | Implement Channel IE Interface | 7.14d | 2008-03-20 | 2008-04-01 | 1564 | 0d |  |  | Vishal [70%] | 40h |  |
| 1566 | 1.6.2.6 | Nunit Channel IE Interface | 4.29d | 2008-04-02 | 2008-04-08 | 1565 | 0d |  |  | Vishal [70%] | 24h |  |
| 1567 | 1.6.2.7 | Design Trigger IE Interface | 7.14d | 2008-04-08 | 2008-04-21 | 1566 | 0d |  |  | Vishal [70%] | 40h |  |
| 1568 | 1.6.2.8 | Implement Trigger IE Interface | 7.14d | 2008-04-21 | 2008-04-30 | 1567 | 0d |  |  | Vishal [70%] | 40h |  |
| 1569 | 1.6.2.9 | Nunit Trigger IE Interface | 4.29d | 2008-04-30 | 2008-05-07 | 1568 | 0d |  |  | Vishal [70%] | 24h |  |
| 1570 | 1.6.2.10 | Design Source IE Interface | 7.14d | 2008-05-07 | 2008-05-16 | 1569 | 0d |  |  | Vishal [70%] | 40h |  |
| 1571 | 1.6.2.11 | Implement Source IE Interface | 7.14d | 2008-05-19 | 2008-05-28 | 1570 | 0d |  |  | Vishal [70%] | 40h |  |
| 1572 | 1.6.2.12 | Nunit Source IE Interface | 4.29d | 2008-05-28 | 2008-06-03 | 1571 | 0d |  |  | Vishal [70%] | 24h |  |
| 1573 | 1.6.2.13 | Design CAL IE Interface | 2.86d | 2008-06-03 | 2008-06-06 | 1572 | 0d |  |  | Vishal [70%] | 16h |  |
| 1574 | 1.6.2.14 | Implement CAL IE Interface | 2.86d | 2008-06-06 | 2008-06-11 | 1573 | 0d |  |  | Vishal [70%] | 16h |  |
| 1575 | 1.6.2.15 | Nunit CAL IE Interface | 1.43d | 2008-06-11 | 2008-06-12 | 1574 | 0d |  |  | Vishal [70%] | 8h |  |
| 1576 | 1.6.2.16 | Design Data Access Free Run Mode IE Interface | 2.86d | 2008-06-12 | 2008-06-17 | 1575 | 0d |  |  | Vishal [70%] | 16h |  |
| 1577 | 1.6.2.17 | Implement Data Access Free Run Mode IE Interface | 2.86d | 2008-06-17 | 2008-06-20 | 1576 | 0d |  |  | Vishal [70%] | 16h |  |
| 1578 | 1.6.2.18 | Nunit Data Access Free Run Mode IE Interface | 1.43d | 2008-06-20 | 2008-06-23 | 1577 | 0d |  |  | Vishal [70%] | 8h |  |
| 1579 | 1.6.2.19 | Design Data Access Trigger Mode IE Interface | 5.71d | 2008-06-23 | 2008-07-01 | 1578 | 0d |  |  | Vishal [70%] | 32h |  |
| 1580 | 1.6.2.20 | Implement Data Access Trigger Mode IE Interface | 5.71d | 2008-07-01 | 2008-07-09 | 1579 | 0d |  |  | Vishal [70%] | 32h |  |
| 1581 | 1.6.2.21 | Nunit Data Access Trigger Mode IE Interface | 2.86d | 2008-07-09 | 2008-07-11 | 1580 | 0d |  |  | Vishal [70%] | 16h |  |
| 1582 | 1.6.2.22 | Design Data Access Octave Mode IE Interface | 2.86d | 2008-07-11 | 2008-07-16 | 1581 | 0d |  |  | Vishal [70%] | 16h |  |
| 1583 | 1.6.2.23 | Implement Data Access Octave Mode IE Interface | 2.86d | 2008-07-16 | 2008-07-21 | 1582 | 0d |  |  | Vishal [70%] | 16h |  |
| 1584 | 1.6.2.24 | Nunit Data Access Octave Mode IE Interface | 1.43d | 2008-07-21 | 2008-07-23 | 1583 | 0d |  |  | Vishal [70%] | 8h |  |

| ID | WBS | Task | Duration | Start | Finish | Predecessors | Total slack | Free slack | Resources | Work |
| --- | --- | --- | --- | --- | --- | --- | --- | --- | --- | --- |
| 1585 | 1.6.3 | **Status System** | 20d? | 2008-07-08 | 2008-08-05 |  | 101.4d |  |  | 103.99h |
| 1586 | 1.6.3.1 | Design Status System Registers | 7.69d? | 2008-07-08 | 2008-07-17 | 1665 | 101.4d | 0d | 2ETW [65%] | 39.99h |
| 1587 | 1.6.3.2 | Implement Status System Execution Routines | 7.69d | 2008-07-17 | 2008-07-29 | 1586 | 101.4d | 0d | 2ETW [65%] | 40h |
| 1588 | 1.6.3.3 | Nunit Status System | 4.62d | 2008-07-29 | 2008-08-05 | 1587 | 102.4d | 0d | 2ETW [65%] | 24h |
| 1589 | 1.6.4 | **SCPI Required Commands** | 40.46d? | 2008-08-05 | 2008-09-30 |  | 101.4d |  |  | 200h |
| 1590 | 1.6.4.1 | Design SCPI Required Commands | 15.38d? | 2008-08-05 | 2008-08-27 | 1588 | 102.4d | 0d | 2ETW [65%] | 80h |
| 1591 | 1.6.4.2 | Implement SCPI Required Commands | 15.38d? | 2008-08-27 | 2008-09-18 | 1590 | 101.4d | 0d | 2ETW [65%] | 80h |
| 1592 | 1.6.4.3 | Nunit SCPI Required commands | 7.69d? | 2008-09-18 | 2008-09-30 | 1591 | 101.4d | 0d | 2ETW [65%] | 40h |
| 1593 | 1.6.5 | **Analyzer Modes** | 15.71d? | 2008-07-23 | 2008-08-13 |  | 0d |  |  | 88h |
| 1594 | 1.6.5.1 | Design FFT Mode | 4.29d? | 2008-07-23 | 2008-07-29 | 1584 | 0d |  | Vishal [70%] | 24h |
| 1595 | 1.6.5.2 | Design Octave Mode | 4.29d? | 2008-07-29 | 2008-08-04 | 1594 | 0d |  | Vishal [70%] | 24h |
| 1596 | 1.6.5.3 | Design Stepped Sine Mode | 7.14d? | 2008-08-04 | 2008-08-13 | 1595 | 0d |  | Vishal [70%] | 40h |
| 1597 | 1.6.6 | **Frequency Execution Routines** | 5.29d? | 2008-08-13 | 2008-08-21 |  | 0d |  |  | 24h |
| 1598 | 1.6.6.1 | Implement | 2.86d? | 2008-08-13 | 2008-08-19 | 1596 | 0d |  | Vishal [70%] | 16h |
| 1599 | 1.6.6.2 | Nunit | 1.43d? | 2008-08-19 | 2008-08-21 | 1598 | 0d |  | Vishal [70%] | 8h |
| 1600 | 1.6.7 | **Averaging Execution Routines** | 8.57d? | 2008-08-21 | 2008-09-02 |  | 0d |  |  | 48h |
| 1601 | 1.6.7.1 | Implement | 5.71d? | 2008-08-21 | 2008-08-28 | 1599 | 0d |  | Vishal [70%] | 32h |
| 1602 | 1.6.7.2 | Nunit | 2.86d? | 2008-08-28 | 2008-09-02 | 1601 | 0d |  | Vishal [70%] | 16h |
| 1603 | 1.6.8 | **Source Execution Routines** | 16.71d? | 2008-09-02 | 2008-09-25 |  | 0d |  |  | 88h |
| 1604 | 1.6.8.1 | Implement | 11.43d? | 2008-09-02 | 2008-09-19 | 1602 | 0d |  | Vishal [70%] | 64h |
| 1605 | 1.6.8.2 | Nunit | 4.29d? | 2008-09-19 | 2008-09-25 | 1604 | 0d |  | Vishal [70%] | 24h |
| 1606 | 1.6.9 | **Channel Execution Routines** | 17.71d? | 2008-09-25 | 2008-10-21 |  | 0d |  |  | 88h |
| 1607 | 1.6.9.1 | Implement | 11.43d? | 2008-09-25 | 2008-10-14 | 1605 | 0d |  | Vishal [70%] | 64h |
| 1608 | 1.6.9.2 | Nunit | 4.29d? | 2008-10-14 | 2008-10-21 | 1607 | 0d |  | Vishal [70%] | 24h |

| ID | WBS | Task | Duration | Start | Finish | Predecessors | Total slack | Free slack | Resources | Work |
| --- | --- | --- | --- | --- | --- | --- | --- | --- | --- | --- |
| 1609 | 1.6.10 | **Trigger Execution Routines** | 16.71d? | 2008-10-21 | 2008-11-12 |  | 0d |  |  | 88h |
| 1610 | 1.6.10.1 | Implement | 11.43d? | 2008-10-21 | 2008-11-06 | 1608 | 0d |  | Vishal [70%] | 64h |
| 1611 | 1.6.10.2 | Nunit | 4.29d? | 2008-11-06 | 2008-11-12 | 1610 | 0d |  | Vishal [70%] | 24h |
| 1612 | 1.6.11 | Nunit For TCA Commands | 7.69d? | 2008-09-30 | 2008-10-14 | 1592, 1611, 1667 | 99.4d | 0d | 2ETW [65%] | 40h |
| 1613 | 1.6.12 | **Trace Commands** | 47.71d | 2008-11-12 | 2009-01-19 |  | 0d |  |  | 256h |
| 1614 | 1.6.12.1 | Design AI - Analysis Layer Interface | 4.29d | 2008-11-12 | 2008-11-19 | 1611 | 0d |  | Vishal [70%] | 24h |
| 1615 | 1.6.12.2 | Implement AI -- Analysis Layer Interface | 4.29d | 2008-11-19 | 2008-11-25 | 1614 | 0d |  | Vishal [70%] | 24h |
| 1616 | 1.6.12.3 | Design Trace Combinations | 14.29d | 2008-11-25 | 2008-12-16 | 1615 | 0d |  | Vishal [70%] | 80h |
| 1617 | 1.6.12.4 | Implement Trace Combinations | 14.29d | 2008-12-16 | 2009-01-06 | 1616 | 0d |  | Vishal [70%] | 80h |
| 1618 | 1.6.12.5 | Implement Fetch Command | 2.86d | 2009-01-06 | 2009-01-09 | 1617 | 0d |  | Vishal [70%] | 16h |
| 1619 | 1.6.12.6 | Nunit Fetch Commands | 5.71d | 2009-01-09 | 2009-01-19 | 1618 | 0d |  | Vishal [70%] | 32h |
| 1620 | 1.6.13 | **Measurement Value** | 88.57d | 2009-01-19 | 2009-05-22 |  | 0d |  |  | 496h |
| 1621 | 1.6.13.1 | Design MV Combinations (19 Measurements * 2 Days per Measurment) | 54.29d | 2009-01-19 | 2009-04-03 | 1619, 1668 | 0d |  | Vishal [70%] | 304h |
| 1622 | 1.6.13.2 | Implement Trace Combinations | 14.29d | 2009-04-03 | 2009-04-24 | 1621 | 0d |  | Vishal [70%] | 80h |
| 1623 | 1.6.13.3 | Implement Fetch Command | 14.29d | 2009-04-24 | 2009-05-14 | 1622 | 0d |  | Vishal [70%] | 80h |
| 1624 | 1.6.13.4 | Nunit Fetch Commands | 5.71d | 2009-05-14 | 2009-05-22 | 1623 | 0d |  | Vishal [70%] | 32h |
| 1625 | 1.6.14 | **Analysis** | 105.45d | 2008-06-24 | 2008-11-19 |  | 117.32d |  |  | 464h |
| 1626 | 1.6.14.1 | Design Analysis Combinations (3 Measurements * 3 Days per Measurment) | 16.36d | 2008-06-24 | 2008-07-17 | 1668 | 117.32d | 0d | Gowie [55%] | 72h |
| 1627 | 1.6.14.2 | Design Equation Parser | 9.09d | 2008-07-17 | 2008-07-30 | 1626 | 117.32d | 0d | Gowie [55%] | 40h |
| 1628 | 1.6.14.3 | Implement Equation Parser | 36.36d | 2008-07-30 | 2008-09-18 | 1627 | 117.32d | 0d | Gowie [55%] | 160h |
| 1629 | 1.6.14.4 | Implement Trace Combinations | 18.18d | 2008-09-18 | 2008-10-14 | 1628 | 117.32d | 0d | Gowie [55%] | 80h |
| 1630 | 1.6.14.5 | Implement Fetch Command | 18.18d | 2008-10-14 | 2008-11-07 | 1629 | 117.32d | 0d | Gowie [55%] | 80h |
| 1631 | 1.6.14.6 | Nunit Fetch Commands | 7.27d | 2008-11-07 | 2008-11-19 | 1630 | 117.32d | 0d | Gowie [55%] | 32h |
| 1632 | 1.6.15 | **Lan Configuration** | 13.31d | 2008-10-14 | 2008-10-31 |  | 98.4d |  |  | 64h |
| 1633 | 1.6.15.1 | Port from Heroes | 7.69d | 2008-10-14 | 2008-10-23 | 1612 | 99.4d | 0d | 2ETW [65%] | 40h |
| 1634 | 1.6.15.2 | Nunit | 4.62d | 2008-10-23 | 2008-10-31 | 1633 | 98.4d | 0d | 2ETW [65%] | 24h |

| ID | WBS | Task | Duration | Start | Finish | Predecessors | Total slack | Free slack | Resources | Work |
| --- | --- | --- | --- | --- | --- | --- | --- | --- | --- | --- |
| 1635 | 1.6.16 | **Calibration Commands** | 14.55d | 2008-11-19 | 2008-12-09 |  | 117.32d |  |  | 64h |
| 1636 | 1.6.16.1 | Implement | 9.09d | 2008-11-19 | 2008-12-02 | 1631 | 117.32d | 0d | Gowie [55%] | 40h |
| 1637 | 1.6.16.2 | Nunit | 5.45d | 2008-12-02 | 2008-12-09 | 1636 | 117.32d |  | Gowie [55%] | 24h |
| 1638 | 1.6.17 | **Misc Commands** | 23.08d | 2008-10-31 | 2008-12-03 |  | 98.4d |  |  | 120h |
| 1639 | 1.6.17.1 | Implement | 15.38d | 2008-10-31 | 2008-11-21 | 1634 | 98.4d | 0d | 2ETW [65%] | 80h |
| 1640 | 1.6.17.2 | Nunit | 7.69d | 2008-11-21 | 2008-12-03 | 1639 | 98.4d | 0d | 2ETW [65%] | 40h |
| 1641 | 1.6.18 | **Special Display Commands** | 25.08d? | 2008-12-03 | 2009-01-07 |  | 96.4d |  |  | 120h |
| 1642 | 1.6.18.1 | Implement | 15.38d? | 2008-12-03 | 2008-12-29 | 1640 | 96.4d | 0d | 2ETW [65%] | 80h |
| 1643 | 1.6.18.2 | Nunit | 7.69d? | 2008-12-29 | 2009-01-07 | 1642 | 96.4d |  | 2ETW [65%] | 40h |
| 1644 | 1.7 | **II** | 98.41d? | 2008-02-20 | 2008-07-08 |  | 100.4d |  |  | 864h |
| 1645 | 1.7.1 | Design Frequency GUI | 3.64d? | 2008-02-20 | 2008-02-26 | 39 | 100.4d | 0d | Gowie [55%] | 16h |
| 1646 | 1.7.2 | Implement Frequency GUI | 4.62d? | 2008-02-26 | 2008-03-03 | 1645 | 100.4d | 0d | 2ETW [65%] | 24h |
| 1647 | 1.7.3 | Nunit Frequency GUI | 3.08d? | 2008-03-03 | 2008-03-07 | 1646 | 100.4d | 0d | 2ETW [65%] | 16h |
| 1648 | 1.7.4 | Design Channel GUI | 7.27d? | 2008-02-26 | 2008-03-06 | 1645 | 117.32d | 0d | Gowie [55%] | 32h |
| 1649 | 1.7.5 | Implement Channel GUI | 9.23d? | 2008-03-07 | 2008-03-20 | 1647 | 100.4d | 0d | 2ETW [65%] | 48h |
| 1650 | 1.7.6 | Nunit Channel GUI | 4.62d? | 2008-03-20 | 2008-03-27 | 1649 | 99.4d | 0d | 2ETW [65%] | 24h |
| 1651 | 1.7.7 | Design Trigger GUI | 14.55d? | 2008-03-06 | 2008-03-27 | 1648 | 117.32d | 0d | Gowie [55%] | 64h |
| 1652 | 1.7.8 | Implement Trigger GUI | 12.31d? | 2008-03-27 | 2008-04-16 | 1650 | 99.4d | 0d | 2ETW [65%] | 64h |
| 1653 | 1.7.9 | Nunit Trigger GUI | 6.15d? | 2008-04-16 | 2008-04-25 | 1652 | 99.4d | 0d | 2ETW [65%] | 32h |
| 1654 | 1.7.10 | Design Source GUI | 14.55d? | 2008-03-27 | 2008-04-16 | 1651 | 117.32d | 0d | Gowie [55%] | 64h |
| 1655 | 1.7.11 | Implement Source GUI | 12.31d? | 2008-04-25 | 2008-05-14 | 1653 | 98.4d | 0d | 2ETW [65%] | 64h |
| 1656 | 1.7.12 | Nunit Source GUI | 6.15d? | 2008-05-14 | 2008-05-22 | 1655 | 98.4d | 0d | 2ETW [65%] | 32h |
| 1657 | 1.7.13 | Design Legal Settings Logic | 9.09d? | 2008-04-16 | 2008-04-29 | 1654 | 117.32d | 0d | Gowie [55%] | 40h |
| 1658 | 1.7.14 | Implement Legal Sttings logic | 7.69d? | 2008-05-22 | 2008-06-03 | 1656 | 100.4d | 0d | 2ETW [65%] | 40h |
| 1659 | 1.7.15 | Nunit legal settings logic | 3.08d? | 2008-06-03 | 2008-06-06 | 1658 | 100.4d | 0d | 2ETW [65%] | 16h |
| 1660 | 1.7.16 | Design Cancel / Ok Logic | 7.27d? | 2008-04-29 | 2008-05-09 | 1657 | 117.32d | 0d | Gowie [55%] | 32h |
| 1661 | 1.7.17 | Implement Cancel / Ok Logic | 6.15d? | 2008-06-06 | 2008-06-16 | 1659 | 100.4d | 0d | 2ETW [65%] | 32h |
| 1662 | 1.7.18 | Nunit Cancel / Ok Logic | 3.08d? | 2008-06-16 | 2008-06-19 | 1661 | 101.4d | 0d | 2ETW [65%] | 16h |
| 1663 | 1.7.19 | Design Run Mode Logic | 9.09d? | 2008-05-09 | 2008-05-22 | 1660 | 117.32d | 0d | Gowie [55%] | 40h |
| 1664 | 1.7.20 | Implement Run Mode Logic | 7.69d? | 2008-06-19 | 2008-07-01 | 1662 | 101.4d | 0d | 2ETW [65%] | 40h |
| 1665 | 1.7.21 | Nunit Run Mode Logic | 4.62d? | 2008-07-01 | 2008-07-08 | 1664 | 101.4d | 0d | 2ETW [65%] | 24h |
| 1666 | 1.7.22 | Design SCPI Interface logic | 9.09d? | 2008-05-22 | 2008-06-04 | 1663 | 117.32d | 0d | Gowie [55%] | 40h |
| 1667 | 1.7.23 | Implement SCPI Interface logic | 9.09d? | 2008-06-04 | 2008-06-17 | 1666 | 117.32d | 0d | Gowie [55%] | 40h |
| 1668 | 1.7.24 | Nunit SCPI Interface logic | 5.45d? | 2008-06-17 | 2008-06-24 | 1667 | 117.32d | 0d | Gowie [55%] | 24h |

| ID | WBS | Task | Duration | Start | Finish | Predecessors | Total slack | Free slack | Constraint | Resources | Work |
| --- | --- | --- | --- | --- | --- | --- | --- | --- | --- | --- | --- |
| 1669 | 2 | **35670A DataLinker** | 127.32d? | 2008-01-07 | 2008-07-02 |  | 38.13d |  |  |  | 640h |
| 1670 | 2.1 | **Design** | 23.86d? | 2008-01-07 | 2008-02-07 |  | 39.13d |  |  |  | 128h |
| 1671 | 2.1.1 | FrameWork Design | 5.71d? | 2008-01-07 | 2008-01-14 |  | 39.13d | 0d | start no earlier than 2008-01-07 | Anurag [70%] | 32h |
| 1672 | 2.1.2 | Review and Updation | 2.86d? | 2008-01-14 | 2008-01-18 | 1671 | 38.13d | 0d |  | Anurag [70%] | 16h |
| 1673 | 2.1.3 | UI Design | 7.14d? | 2008-01-18 | 2008-01-29 | 1672 | 38.13d | 0d |  | Anurag [70%] | 40h |
| 1674 | 2.1.4 | Review and Updation | 7.14d? | 2008-01-29 | 2008-02-07 | 1673 | 39.13d | 0d |  | Anurag [70%] | 40h |
| 1675 | 2.2 | **Functionality** | 61.92d? | 2008-02-07 | 2008-05-05 |  | 37.13d |  |  |  | 296h |
| 1676 | 2.2.1 | Finding 35670 on LAN-GPIB Converter | 4.62d? | 2008-02-07 | 2008-02-15 | 1674 | 38.13d | 0d |  | 1ETW [65%] | 24h |
| 1677 | 2.2.2 | Finding 35670 on USB-GPIB Converter | 4.62d? | 2008-02-15 | 2008-02-22 | 1676 | 38.13d | 0d |  | 1ETW [65%] | 24h |
| 1678 | 2.2.3 | Finding 35670 on GPIB-GPIB | 4.62d? | 2008-02-22 | 2008-02-28 | 1677 | 39.13d | 0d |  | 1ETW [65%] | 24h |
| 1679 | 2.2.4 | Ibasic prog for Dir info transfer in RAM | 6.15d? | 2008-02-28 | 2008-03-07 | 1678 | 40.13d | 0d |  | 1ETW [65%] | 32h |
| 1680 | 2.2.5 | Ibasic prog for Dir info transfer in Floppy Drive | 4.62d? | 2008-03-07 | 2008-03-14 | 1679 | 41.13d | 0d |  | 1ETW [65%] | 24h |
| 1681 | 2.2.6 | Implement Data structure to store Dir Info | 3.08d? | 2008-03-14 | 2008-03-19 | 1680 | 41.13d | 0d |  | 1ETW [65%] | 16h |
| 1682 | 2.2.7 | Parse the ascii file and store the info in datastructure | 1.54d? | 2008-03-19 | 2008-03-24 | 1681 | 40.13d | 0d |  | 1ETW [65%] | 8h |
| 1683 | 2.2.8 | Display data on Screen as per Format | 3.08d? | 2008-03-24 | 2008-03-27 | 1682 | 40.13d | 0d |  | 1ETW [65%] | 16h |
| 1684 | 2.2.9 | Sorting of displayed data | 3.08d? | 2008-03-27 | 2008-04-01 | 1683 | 40.13d | 0d |  | 1ETW [65%] | 16h |
| 1685 | 2.2.10 | Download selected file | 3.08d? | 2008-04-01 | 2008-04-04 | 1684 | 40.13d | 0d |  | 1ETW [65%] | 16h |
| 1686 | 2.2.11 | Download Directory selection dialog box | 1.54d? | 2008-04-04 | 2008-04-07 | 1685 | 40.13d | 0d |  | 1ETW [65%] | 8h |
| 1687 | 2.2.12 | DataViewer integration | 4.62d? | 2008-04-07 | 2008-04-15 | 1686 | 39.13d | 0d |  | 1ETW [65%] | 24h |
| 1688 | 2.2.13 | Uint Testing | 12.31d? | 2008-04-15 | 2008-05-05 | 1687 | 37.13d | 0d |  | 1ETW [65%] | 64h |
| 1689 | 2.3 | System Testing | 15.38d | 2008-05-05 | 2008-05-27 | 1688 | 37.13d | 0d |  | 1ETW [65%] | 80h |
| 1690 | 2.4 | **Help** | 16.92d? | 2008-05-27 | 2008-06-19 |  | 37.13d |  |  |  | 88h |
| 1691 | 2.4.1 | Online Manual help | 4.62d? | 2008-05-27 | 2008-06-02 | 1689 | 37.13d | 0d |  | 1ETW [65%] | 24h |
| 1692 | 2.4.2 | Help Version | 1.54d? | 2008-06-02 | 2008-06-04 | 1691 | 37.13d | 0d |  | 1ETW [65%] | 8h |
| 1693 | 2.4.3 | Link Dialog Help button | 3.08d? | 2008-06-04 | 2008-06-09 | 1692 | 37.13d | 0d |  | 1ETW [65%] | 16h |
| 1694 | 2.4.4 | Help Organization | 3.08d? | 2008-06-09 | 2008-06-12 | 1693 | 37.13d | 0d |  | 1ETW [65%] | 16h |
| 1695 | 2.4.5 | Getting Started | 4.62d? | 2008-06-12 | 2008-06-19 | 1694 | 37.13d | 0d |  | 1ETW [65%] | 24h |
| 1696 | 2.5 | Show Software (Version number etc) | 3.08d? | 2008-06-19 | 2008-06-24 | 1695 | 37.13d | 0d |  | 1ETW [65%] | 16h |
| 1697 | 2.6 | Installer/Uninstaller | 6.15d? | 2008-06-24 | 2008-07-02 | 1696 | 37.13d | 0d |  | 1ETW [65%] | 32h |
