# MirageDEVPlan_Less_Slic tasks_16Jan

Schedule from MS Project, 2008-01-07 to 2009-07-21, A marks actual dates.

## Calendars

- Standard: Mon-Fri 08:00-12:00, 13:00-17:00; Sat-Sun off.

## Resources

| Resource |
| --- |
| Kapil |
| Himanshu |
| Vishal |
| Mike |
| Anurag |
| Pallavi |
| Ramkumar |
| Ravi |
| Anjali |
| Vasav |
| RKB |
| Gowie |
| ShashiP |
| RKB1 |
| Kapil70 |

## Schedule

| ID | WBS | Task | Type | Duration | Start | Finish | Predecessors | Complete | Remaining | Total slack | Free slack | Constraint | Resources | Work | Actual work | Text1 |
| --- | --- | --- | --- | --- | --- | --- | --- | --- | --- | --- | --- | --- | --- | --- | --- | --- |
| 1 | 1 | **Mirage SW DEV** |  | 382d? | 2008-02-04 A | 2009-07-21 |  | 19% | 308.85d? | 5d |  |  |  | 17937.1h | 3446.78h |  |
| 2 | 1.1 | **Phases** |  | 246.48d? | 2008-06-24 A | 2009-06-03 | 15, 18, 21, 25, 26, 27, 34, 44, 609 | 18% | 201.66d? | 34.38d |  |  |  |  |  |  |
| 3 | 1.1.1 | Phase 1 (Design and Initial Creation) | milestone | 1d? | 2009-06-02 A | 2009-06-03 A | 63, 231, 242, 247, 257, 270, 305, 314, 323, 330, 337, 344, 354, 25, 567, 377, 405, 416, 427, 445, 446, 450, 465, 466, 468, 470, 471, 464, 463, 460, 461, 57 | 100% |  |  |  |  |  |  |  |  |
| 4 | 1.1.2 | Phase 2 (FFT & THD) |  | 1d? | 2009-05-27 A | 2009-05-28 A | 252, 260, 265, 278, 286, 294, 302, 472 | 100% |  |  |  |  |  |  |  |  |
| 5 | 1.1.3 | Phase 3 (Remote/Local/Averaging) |  | 1d? | 2008-06-24 | 2008-06-25 |  |  |  | 279.86d |  |  |  |  |  |  |
| 6 | 1.1.4 | Phase 4 (Partial FFT Mode Simualte IE) |  | 1d? | 2008-06-24 | 2008-06-25 |  |  |  | 279.86d |  |  |  |  |  |  |
| 7 | 1.1.5 | Phase 5 (Full FFT w/o System & Analysis, Green screen with HW) |  | 1d? | 2008-06-24 | 2008-06-25 |  |  |  | 279.86d |  |  |  |  |  |  |
| 8 | 1.1.6 | Phase 6 (Full Stepped Sin Mode with System Hardkey) |  | 1d? | 2008-06-24 | 2008-06-25 |  |  |  | 279.86d |  |  |  |  |  |  |
| 9 | 1.1.7 | Phase 7 (Full Octave with Analysis Hardkey) |  | 1d? | 2008-06-24 | 2008-06-25 |  |  |  | 279.86d |  |  |  |  |  |  |
| 10 | 1.1.8 | Phase 8 (Learning Products) |  | 1d? | 2008-06-24 | 2008-06-25 |  |  |  | 279.86d |  |  |  |  |  |  |
| 11 | 1.1.9 | Phase 9 HQ |  | 1d? | 2008-06-24 | 2008-06-25 |  |  |  | 279.86d |  |  |  |  |  |  |
| 12 | 1.1.10 | Phase 10 SQ |  | 1d? | 2008-06-24 | 2008-06-25 |  |  |  | 279.86d |  |  |  |  |  |  |
| 13 | 1.1.11 | Phase 11 Ship |  | 1d? | 2008-06-24 | 2008-06-25 |  |  |  | 279.86d |  |  |  |  |  |  |
| 14 | 1.2 | **Process Infrastructure** |  | 125d? | 2008-02-04 A | 2008-07-25 |  | 60% | 50.29d? | 261d |  |  |  | 139.2h | 83.2h | P1 |
| 15 | 1.2.1 | **SCM ( Source management)** |  | 4.29d? | 2008-02-04 A | 2008-02-08 A |  | 100% |  |  |  |  |  | 24h | 24h | P1 |
| 16 | 1.2.1.1 | Defining the Folder heriarchy for source code |  | 1.43d? | 2008-02-04 A | 2008-02-05 A |  | 100% |  |  |  |  | RKB [70%] | 8h | 8h |  |
| 17 | 1.2.1.2 | TFS Set up ( Server & Client set up) |  | 2.86d? | 2008-02-05 A | 2008-02-08 A | 16 | 100% |  |  |  |  | RKB [70%] | 16h | 16h |  |
| 18 | 1.2.2 | **Development guidelines** |  | 3.86d? | 2008-02-08 A | 2008-02-14 A |  | 100% |  |  |  |  |  | 16h | 16h | P1 |
| 19 | 1.2.2.1 | Coding standard ( C++, C#) |  | 1.43d? | 2008-02-08 A | 2008-02-12 A | 17 | 100% |  |  |  | start no earlier than 2008-02-04 | RKB [70%] | 8h | 8h |  |
| 20 | 1.2.2.2 | Code Review , Unit Test case review guidelines |  | 1.43d? | 2008-02-12 A | 2008-02-14 A | 19 | 100% |  |  |  |  | RKB [70%] | 8h | 8h |  |
| 21 | 1.2.3 | **Skelton projects for each components** |  | 3.86d | 2008-02-08 A | 2008-02-14 A |  | 100% |  |  |  |  |  | 16h | 16h | P1 |
| 22 | 1.2.3.1 | GUI, AML, ML |  | 1.43d | 2008-02-08 A | 2008-02-12 A | 17 | 100% |  |  |  |  | RKB [70%] | 8h | 8h |  |
| 23 | 1.2.3.2 | Instrument interface, AI |  | 1.43d | 2008-02-12 A | 2008-02-14 A | 22 | 100% |  |  |  |  | RKB [70%] | 8h | 8h |  |
| 24 | 1.2.4 | **Platform Builder Image** |  | 121.14d? | 2008-02-07 A | 2008-07-25 |  | 33% | 81.54d? | 261d |  |  |  | 83.2h | 27.2h | P1 |
| 25 | 1.2.4.1 | Identifying the components which are to be added |  | 2.86d? | 2008-02-07 A | 2008-02-13 A | 1855 | 100% |  |  |  |  | Anurag [70%] | 16h | 16h | P1 |
| 26 | 1.2.4.2 | Creating NK.bin for Device |  | 1.43d? | 2008-06-02 A | 2008-06-04 |  | 40% | 0.86d? | 253.43d | 0d | start no earlier than 2008-06-02 | RKB [70%] | 8h | 3.2h | P3 |
| 27 | 1.2.4.3 | Checking presence and working of all components |  | 1.43d? | 2008-06-04 | 2008-06-05 | 26 |  |  | 253.43d | 12.57d |  | Anurag [70%] | 8h |  | P4 |
| 28 | 1.2.4.4 | Automation: FTP Image in the box |  | 2.86d? | 2008-07-16 | 2008-07-18 | 62 |  |  | 256.43d | 0d |  | Anurag [70%] | 16h |  | P4 |
| 29 | 1.2.4.5 | Auto Installation of this Image in the box |  | 2.86d? | 2008-07-21 | 2008-07-24 | 28 |  |  | 258.43d |  |  | Anurag [70%] | 16h |  | P5 |
| 30 | 1.2.4.6 | Integrating it with Trace Control & Registry settings |  | 1.43d? | 2008-07-24 A | 2008-07-25 A | 29 | 100% |  |  |  |  | Anurag [70%] | 8h | 8h | P2 |
| 31 | 1.2.4.7 | Deploying latest NK.bin on all P2000 |  | 1d? | 2008-06-04 | 2008-06-05 | 26 |  |  | 297.86d | 0d |  | RKB [70%] | 5.6h |  | P3 |
| 32 | 1.2.4.8 | Build Mirage Components for Device image SDK |  | 1d? | 2008-06-05 | 2008-06-06 | 31 |  |  | 292.86d |  |  | RKB [70%] | 5.6h |  | P3 |

| ID | WBS | Task | Duration | Start | Finish | Predecessors | Complete | Remaining | Total slack | Resources | Work | Actual work | Text1 |
| --- | --- | --- | --- | --- | --- | --- | --- | --- | --- | --- | --- | --- | --- |
| 33 | 1.3 | **Front Panel Tasks** | 348.16d? | 2008-02-04 A | 2009-06-04 |  | 17% | 287.28d? | 38.84d |  | 5213.83h | 903.6h |  |
| 34 | 1.3.1 | **Define interface IGUIHardKey** | 84.43d? | 2008-02-14 A | 2008-06-11 A |  | 100% |  |  |  | 48h | 48h | P1 |
| 35 | 1.3.1.1 | Design, Review & Update | 2.86d? | 2008-02-14 A | 2008-02-18 A | 23 | 100% |  |  | RKB [70%] | 16h | 16h |  |
| 36 | 1.3.1.2 | Implementation | 0.71d? | 2008-02-20 A | 2008-06-11 A | 611 | 100% |  |  | Himanshu [560%] | 32h | 32h |  |
| 37 | 1.3.2 | **FP Events Flow Mechanism** | 16.7d? | 2008-02-18 A | 2008-03-12 A |  | 100% |  |  |  | 88h | 88h | P1 |
| 38 | 1.3.2.1 | Define all FP events | 2.86d? | 2008-02-18 A | 2008-02-21 A | 35 | 100% |  |  | RKB [70%] | 16h | 16h |  |
| 39 | 1.3.2.2 | Implement EventProcessor | 3.08d? | 2008-02-21 A | 2008-02-26 A | 38 | 100% |  |  | Pallavi [65%] | 16h | 16h |  |
| 40 | 1.3.2.3 | Implement Event Dispatcher | 3.08d? | 2008-02-26 A | 2008-03-03 A | 39 | 100% |  |  | Pallavi [65%] | 16h | 16h |  |
| 41 | 1.3.2.4 | Implement Basic Event Target | 3.08d? | 2008-03-03 A | 2008-03-06 A | 40 | 100% |  |  | Pallavi [65%] | 16h | 16h |  |
| 42 | 1.3.2.5 | Implement change in Target Priority | 3.08d? | 2008-03-06 A | 2008-03-11 A | 41 | 100% |  |  | Pallavi [65%] | 16h | 16h |  |
| 43 | 1.3.2.6 | Code Review | 1.54d | 2008-03-11 A | 2008-03-12 A | 42 | 100% |  |  | Pallavi [65%] | 8h | 8h |  |
| 44 | 1.3.3 | **Error & Debug Information** | 90.57d? | 2008-02-18 A | 2008-06-24 A |  | 100% |  |  |  | 64h | 64h | P1 |
| 45 | 1.3.3.1 | Design/Define common interface for Accessing Error Log system | 2.86d? | 2008-02-18 A | 2008-02-21 A | 27 | 100% |  |  | Anurag [70%] | 16h | 16h |  |
| 46 | 1.3.3.2 | Implement Common Error Log system | 5.71d? | 2008-06-11 A | 2008-06-19 A | 36 | 100% |  |  | Himanshu [70%] | 32h | 32h |  |
| 47 | 1.3.3.3 | Unit Testing & Code Review | 2.86d? | 2008-06-19 A | 2008-06-24 A | 46 | 100% |  |  | Himanshu [70%] | 16h | 16h |  |
| 48 | 1.3.4 | **Define interface for All Major Component** | 111.42d? | 2008-02-21 A | 2008-07-28 |  | 78% | 24.51d? | 256.72d |  | 112h | 84h | P1 |
| 49 | 1.3.4.1 | AML Interface | 5d? | 2008-02-21 A | 2008-02-28 A | 38 | 100% |  |  | RKB [70%] | 28h | 28h |  |
| 50 | 1.3.4.2 | Instrument Interface | 6.36d? | 2008-03-10 A | 2008-03-18 A |  | 100% |  |  | Gowie [55%] | 28h | 28h |  |
| 51 | 1.3.4.3 | AutoMation interface | 6.36d? | 2008-03-18 A | 2008-03-27 A | 50 | 100% |  |  | Gowie [55%] | 28h | 28h |  |
| 52 | 1.3.4.4 | File Formatting Component | 5d? | 2008-03-05 | 2008-07-28 | 49 |  |  | 256.72d | RKB [70%] | 28h |  | P5 |
| 53 | 1.3.5 | **Start/Shut down activity** | 94.86d? | 2008-02-21 A | 2008-07-03 A |  | 100% |  |  |  | 56h | 56h | P1 |
| 54 | 1.3.5.1 | Design Start/Shut down framework | 2.86d? | 2008-02-21 A | 2008-02-26 A | 45 | 100% |  |  | Anurag [70%] | 16h | 16h |  |
| 55 | 1.3.5.2 | Implementation & Unit testing | 5.71d? | 2008-06-24 A | 2008-07-01 A | 47 | 100% |  |  | Anurag [70%] | 32h | 32h |  |
| 56 | 1.3.5.3 | Code Review/ Unit test case review/Design screen/ Screen usability reviews with Jan Ryles | 1.43d | 2008-07-01 A | 2008-07-03 A | 55 | 100% |  |  | Anurag [70%] | 8h | 8h |  |

| ID | WBS | Task | Duration | Start | Finish | Predecessors | Complete | Remaining | Total slack | Free slack | Constraint | Resources | Work | Actual work | Text1 |
| --- | --- | --- | --- | --- | --- | --- | --- | --- | --- | --- | --- | --- | --- | --- | --- |
| 57 | 1.3.6 | **Splash Screen** | 100.57d? | 2008-02-26 | 2008-07-15 |  |  |  | 265.14d |  |  |  | 64h |  | P5 |
| 58 | 1.3.6.1 | Design framework & splash screen, Review with Jan Ryles | 2.86d? | 2008-02-26 | 2008-02-29 | 54 |  |  | 362.86d |  |  |  | 16h |  |  |
| 59 | 1.3.6.2 | Implement Framework | 2.86d? | 2008-07-03 | 2008-07-08 | 56 |  |  | 256.35d | 0d |  |  | 16h |  |  |
| 60 | 1.3.6.3 | Incorporate the Intilization Events to show progress | 1.43d? | 2008-07-08 | 2008-07-09 | 59 |  |  | 256.35d | 0d |  |  | 8h |  |  |
| 61 | 1.3.6.4 | Integrate splash screen with Start Shut down activity | 1.43d? | 2008-07-09 | 2008-07-11 | 60 |  |  | 256.35d | 0d |  |  | 8h |  |  |
| 62 | 1.3.6.5 | Unit test case,Design review/Code review | 2.86d? | 2008-07-11 | 2008-07-15 | 61 |  |  | 256.35d | 0.14d |  |  | 16h |  |  |
| 63 | 1.3.7 | **Display layout Management** | 17d? | 2008-06-02 A | 2008-06-24 |  | 42% | 9.81d? | 280d |  |  |  | 111.2h | 44.8h | P3 |
| 64 | 1.3.7.1 | Design the intial framework | 3.54d? | 2008-06-02 A | 2008-06-05 | 49 | 68% | 1.14d? | 293.46d |  |  | RKB [70%] | 16h | 9.6h |  |
| 65 | 1.3.7.2 | Implement screen Load Preconfigured | 1.43d? | 2008-06-02 A | 2008-06-03 |  | 70% | 0.43d? | 294.86d |  |  | Vishal [70%] | 8h | 5.6h |  |
| 66 | 1.3.7.3 | Key board activation of Display layout screen | 1.43d? | 2008-06-03 A | 2008-06-04 | 65 | 50% | 0.71d? | 294.14d |  | start no earlier than 2008-06-02 | Vishal [70%] | 8h | 4h |  |
| 67 | 1.3.7.4 | Implement screen "No of display" | 2.14d? | 2008-06-04 A | 2008-06-06 A | 66 | 100% |  |  |  |  | Vishal [70%] | 12h | 12h |  |
| 68 | 1.3.7.5 | Implement status Show/Hide | 1.43d? | 2008-06-09 A | 2008-06-10 A | 67 | 100% |  |  |  |  | Vishal [70%] | 8h | 8h |  |
| 69 | 1.3.7.6 | Implement SoftKeys Show/Hide | 1.43d? | 2008-06-10 A | 2008-06-11 | 68 | 70% | 0.43d? | 262.14d | 0d |  | Vishal [70%] | 8h | 5.6h |  |
| 70 | 1.3.7.7 | Implement Mesament graph (Normal/Full) | 1d | 2008-06-11 | 2008-06-12 | 69 |  |  | 262.14d | 0d |  | Vishal [70%] | 5.6h |  |  |
| 71 | 1.3.7.8 | Active Display Traversing | 2.14d? | 2008-06-12 | 2008-06-16 | 70 |  |  | 267.14d | 0d |  | Vishal [70%] | 12h |  |  |
| 72 | 1.3.7.9 | Unit test for Active Display | 1d? | 2008-06-17 | 2008-06-17 | 71 |  |  | 267.14d | 0d |  | Vishal [70%] | 5.6h |  |  |
| 73 | 1.3.7.10 | UT for Show and Hide of Status/SoftKeys | 1d? | 2008-06-18 | 2008-06-18 | 72 |  |  | 267.14d | 0d |  | Vishal [70%] | 5.6h |  |  |
| 74 | 1.3.7.11 | UT for Configuring Multiple display | 1d? | 2008-06-19 | 2008-06-19 | 73 |  |  | 267.14d | 0d |  | Vishal [70%] | 5.6h |  |  |
| 75 | 1.3.7.12 | UT for configuring Pre-configured display | 1d? | 2008-06-20 | 2008-06-20 | 74 |  |  | 267.14d | 0d |  | Vishal [70%] | 5.6h |  |  |
| 76 | 1.3.7.13 | Code Reviews | 1d? | 2008-06-23 | 2008-06-23 | 75 |  |  | 267.14d | 0d |  | Vishal [70%] | 5.6h |  |  |
| 77 | 1.3.7.14 | Absorb changes of Code Reviews | 1d? | 2008-06-24 | 2008-06-24 | 76 |  |  | 267.14d | 0d |  | Vishal [70%] | 5.6h |  |  |
| 78 | 1.3.8 | **Common Screen Navigation Technique** | 7.57d? | 2008-06-02 A | 2008-06-11 |  | 13% | 6.56d? | 289.43d |  |  |  | 36h | 4.8h | P3 |
| 79 | 1.3.8.1 | Design the intial framework | 2.86d? | 2008-06-02 A | 2008-06-04 |  | 30% | 2d? | 294.14d |  | start no earlier than 2008-06-02 | RKB [70%] | 16h | 4.8h |  |
| 80 | 1.3.8.2 | Implement common Navigation technique | 1.43d? | 2008-06-06 | 2008-06-09 |  |  |  | 271.64d | 0d | start no earlier than 2008-06-06 | Pallavi [70%] | 8h |  |  |
| 81 | 1.3.8.3 | Implement the Navigation technique on Freq Config screen | 0.71d? | 2008-06-09 | 2008-06-10 | 80 |  |  | 271.64d | 0d |  | Pallavi [70%] | 4h |  |  |
| 82 | 1.3.8.4 | Implement the Navigation technique on Channel | 0.71d? | 2008-06-10 | 2008-06-10 | 81 |  |  | 271.64d | 0d |  | Pallavi [70%] | 4h |  |  |
| 83 | 1.3.8.5 | Implemnt the Navigation technique on THD | 0.71d? | 2008-06-10 | 2008-06-11 | 82 |  |  | 271.64d |  |  | Pallavi [70%] | 4h |  |  |

| ID | WBS | Task | Duration | Start | Finish | Predecessors | Complete | Remaining | Total slack | Free slack | Constraint | Resources | Work | Actual work | Text1 |
| --- | --- | --- | --- | --- | --- | --- | --- | --- | --- | --- | --- | --- | --- | --- | --- |
| 84 | 1.3.9 | **Measurment Value Implementation** | 32.86d? | 2008-06-02 A | 2008-07-16 |  | 28% | 23.78d? | 269.14d |  |  |  | 168h | 46.4h | P3 |
| 85 | 1.3.9.1 | Design the intial framework | 2.14d? | 2008-06-02 A | 2008-06-04 |  | 20% | 1.71d? | 294.86d |  | start no earlier than 2008-06-02 | RKB [70%] | 12h | 2.4h |  |
| 86 | 1.3.9.2 | Implement Configure THD Screen | 1.43d? | 2008-06-02 A | 2008-06-03 A |  | 100% |  |  |  | start no earlier than 2008-06-11 | Himanshu [70%] | 8h | 8h |  |
| 87 | 1.3.9.3 | Implement Common Framework For Distortion Measurment Values | 2.14d? | 2008-06-03 | 2008-06-12 | 86 |  |  | 288.43d |  |  | Himanshu [70%] | 12h |  |  |
| 88 | 1.3.9.4 | populate Softkeys for Measurment Value Button | 2.14d? | 2008-06-12 A | 2008-06-16 A | 87 | 100% |  |  |  |  | Himanshu [70%] | 12h | 12h |  |
| 89 | 1.3.9.5 | Implement Configure THD +n screen | 2.14d? | 2008-06-16 A | 2008-06-18 | 88 | 40% | 1.29d? | 272.57d | 0d |  | Himanshu [70%] | 12h | 4.8h |  |
| 90 | 1.3.9.6 | Implement SNR Screen | 2.14d? | 2008-06-18 A | 2008-06-23 | 89 | 40% | 1.29d? | 271.71d | 0d |  | Himanshu [70%] | 12h | 4.8h |  |
| 91 | 1.3.9.7 | Implement SFDR screen | 2.14d? | 2008-06-23 A | 2008-06-25 | 90 | 40% | 1.29d? | 270.86d | 0d |  | Himanshu [70%] | 12h | 4.8h |  |
| 92 | 1.3.9.8 | Implement SINAD Screen | 2.14d? | 2008-06-25 A | 2008-06-27 | 91 | 40% | 1.29d? | 270d | 0d |  | Himanshu [70%] | 12h | 4.8h |  |
| 93 | 1.3.9.9 | Implement ENOB Screen | 2.14d? | 2008-06-27 A | 2008-07-01 | 92 | 40% | 1.29d? | 269.14d | 0d |  | Himanshu [70%] | 12h | 4.8h |  |
| 94 | 1.3.9.10 | UT THD Screen | 1.43d? | 2008-07-01 | 2008-07-02 | 93 |  |  | 269.14d | 0d |  | Himanshu [70%] | 8h |  |  |
| 95 | 1.3.9.11 | UT THD +N | 1.43d? | 2008-07-02 | 2008-07-04 | 94 |  |  | 269.14d | 0d |  | Himanshu [70%] | 8h |  |  |
| 96 | 1.3.9.12 | UT SNR | 1.43d? | 2008-07-04 | 2008-07-07 | 95 |  |  | 269.14d | 0d |  | Himanshu [70%] | 8h |  |  |
| 97 | 1.3.9.13 | UT SFDR | 1.43d? | 2008-07-07 | 2008-07-09 | 96 |  |  | 269.14d | 0d |  | Himanshu [70%] | 8h |  |  |
| 98 | 1.3.9.14 | UT SINAD | 1.43d? | 2008-07-09 | 2008-07-10 | 97 |  |  | 269.14d | 0d |  | Himanshu [70%] | 8h |  |  |
| 99 | 1.3.9.15 | UT ENOB | 1.43d? | 2008-07-10 | 2008-07-14 | 98 |  |  | 269.14d | 0d |  | Himanshu [70%] | 8h |  |  |
| 100 | 1.3.9.16 | Code Reviews | 1.43d? | 2008-07-14 | 2008-07-15 | 99 |  |  | 269.14d | 0d |  | Himanshu [70%] | 8h |  |  |
| 101 | 1.3.9.17 | Absorb changes of Code Reviews | 1.43d? | 2008-07-15 | 2008-07-16 | 100 |  |  | 269.14d |  |  | Himanshu [70%] | 8h |  |  |
| 102 | 1.3.10 | **Measurment Data Implementation** | 34.57d? | 2008-06-02 A | 2008-07-18 |  | 13% | 30.16d? | 267.43d |  |  |  | 181.6h | 23.2h | P3 |
| 103 | 1.3.10.1 | Design Intial Framework | 2.86d? | 2008-06-02 A | 2008-06-04 A |  | 100% |  |  |  | start no earlier than 2008-06-02 | RKB [70%] | 16h | 16h |  |
| 104 | 1.3.10.2 | Populate softkeys for Meas data | 1.43d? | 2008-06-09 A | 2008-06-10 |  | 90% | 0.14d? | 267.43d | 0d | start no earlier than 2008-06-09 | Ravi [70%] | 8h | 7.2h |  |
| 105 | 1.3.10.3 | Implement Trace to Graph Screen | 2.14d? | 2008-06-10 | 2008-06-12 | 104 |  |  | 267.43d | 0d |  | Ravi [70%] | 12h |  |  |
| 106 | 1.3.10.4 | Implement WaterFall settings | 2.14d? | 2008-06-12 | 2008-06-16 | 105 |  |  | 267.43d | 0d |  | Ravi [70%] | 12h |  |  |
| 107 | 1.3.10.5 | Implement Add multiple Channels on Trace | 1d? | 2008-06-16 | 2008-06-17 | 106 |  |  | 267.43d | 0d |  | Ravi [70%] | 5.6h |  |  |
| 108 | 1.3.10.6 | Implement Graph Co-Ordinate ( Log) | 1d? | 2008-06-17 | 2008-06-18 | 107 |  |  | 267.43d | 0d |  | Ravi [70%] | 5.6h |  |  |
| 109 | 1.3.10.7 | Implement Graph Co-Ordinate ( Magnitude) | 1d? | 2008-06-18 | 2008-06-19 | 108 |  |  | 267.43d | 0d |  | Ravi [70%] | 5.6h |  |  |
| 110 | 1.3.10.8 | Implement Graph Co-Ordinate ( DB Magnitude) | 1d? | 2008-06-19 | 2008-06-20 | 109 |  |  | 262.43d | 0d |  | Ravi [70%] | 5.6h |  |  |
| 111 | 1.3.10.9 | Implement Graph Co-Ordinate ( Real/Imaginary) | 1d? | 2008-06-20 | 2008-06-23 | 110 |  |  | 262.43d | 0d |  | Ravi [70%] | 5.6h |  |  |
| 112 | 1.3.10.10 | Implement Graph Co-Ordinate ( Phase/WnWrape phase) | 1d? | 2008-06-23 | 2008-06-24 | 111 |  |  | 267.43d | 0d |  | Ravi [70%] | 5.6h |  |  |
| 113 | 1.3.10.11 | Implement Graph Co-Ordinate ( Group Delay) | 2.14d? | 2008-06-24 | 2008-06-26 | 112 |  |  | 267.43d | 0d |  | Ravi [70%] | 12h |  |  |
| 114 | 1.3.10.12 | Implement Graph Co-Ordinate ( Polar) | 2.14d? | 2008-06-26 | 2008-07-01 | 113 |  |  | 267.43d | 0d |  | Ravi [70%] | 12h |  |  |
| 115 | 1.3.10.13 | Implement Graph Co-Ordinate ( Nichols) | 2.14d? | 2008-07-01 | 2008-07-03 | 114 |  |  | 267.43d | 0d |  | Ravi [70%] | 12h |  |  |
| 116 | 1.3.10.14 | Implement Graph Co-Ordinate ( Nyquist) | 2.14d? | 2008-07-03 | 2008-07-07 | 115 |  |  | 267.43d | 0d |  | Ravi [70%] | 12h |  |  |
| 117 | 1.3.10.15 | AutoScale On/Off | 1d? | 2008-07-07 | 2008-07-08 | 116 |  |  | 267.43d | 0d |  | Ravi [70%] | 5.6h |  |  |
| 118 | 1.3.10.16 | UT Populate SoftKey | 1d? | 2008-07-08 | 2008-07-09 | 117 |  |  | 267.43d | 0d |  | Ravi [70%] | 5.6h |  |  |
| 119 | 1.3.10.17 | UT Trace to Graph Changes | 1d? | 2008-07-09 | 2008-07-10 | 118 |  |  | 267.43d | 0d |  | Ravi [70%] | 5.6h |  |  |
| 120 | 1.3.10.18 | UT WaterFall settings | 1d? | 2008-07-10 | 2008-07-11 | 119 |  |  | 267.43d | 0d |  | Ravi [70%] | 5.6h |  |  |
| 121 | 1.3.10.19 | UT Different co-ordinate types | 2.14d? | 2008-07-11 | 2008-07-15 | 120 |  |  | 267.43d | 0d |  | Ravi [70%] | 12h |  |  |
| 122 | 1.3.10.20 | Code Reviews | 1d? | 2008-07-15 | 2008-07-16 | 121 |  |  | 267.43d | 0d |  | Ravi [70%] | 5.6h |  |  |
| 123 | 1.3.10.21 | Absorb changes of Code Reviews | 2.14d? | 2008-07-16 | 2008-07-18 | 122 |  |  | 267.43d |  |  | Ravi [70%] | 12h |  |  |

| ID | WBS | Task | Duration | Start | Finish | Predecessors | Complete | Remaining | Total slack | Free slack | Constraint | Resources | Work | Actual work | Text1 |
| --- | --- | --- | --- | --- | --- | --- | --- | --- | --- | --- | --- | --- | --- | --- | --- |
| 124 | 1.3.11 | **Channel Key pattern** | 16.57d? | 2008-06-11 A | 2008-07-04 |  | 54% | 7.55d? | 266.71d |  |  |  | 81.6h | 44.4h | P3 |
| 125 | 1.3.11.1 | Accelerators implementation | 2.14d? | 2008-06-13 A | 2008-06-17 A |  | 100% |  |  |  |  | Pallavi [70%] | 12h | 12h |  |
| 126 | 1.3.11.2 | OK/Cancel framework | 2.14d? | 2008-07-02 A | 2008-07-04 A |  | 100% |  |  |  |  | Pallavi [70%] | 12h | 12h |  |
| 127 | 1.3.11.3 | Accelerators implementation | 2.14d? | 2008-06-13 A | 2008-06-17 A |  | 100% |  |  |  |  | RKB [70%] | 12h | 12h |  |
| 128 | 1.3.11.4 | Source key selection change/ Accelerator data change mechanism | 2.14d? | 2008-06-11 A | 2008-06-13 | 83 | 70% | 0.64d? | 270.14d | 0d |  | Pallavi [70%] | 12h | 8.4h |  |
| 129 | 1.3.11.5 | Unit test for exposed User control | 1d? | 2008-06-13 | 2008-06-16 | 128 |  |  | 270.14d | 0d |  | Pallavi [70%] | 5.6h |  |  |
| 130 | 1.3.11.6 | Unit test for Accelerators | 1d? | 2008-06-16 | 2008-06-17 | 129 |  |  | 275.14d | 0d |  | Pallavi [70%] | 5.6h |  |  |
| 131 | 1.3.11.7 | Unit test for data refresh | 1d? | 2008-06-17 | 2008-06-30 | 130 |  |  | 267.14d | 0d |  | Pallavi [70%] | 5.6h |  |  |
| 132 | 1.3.11.8 | Unit test for OK/Cancel logic | 1d? | 2008-06-30 | 2008-07-01 | 131 |  |  | 267.14d | 0d |  | Pallavi [70%] | 5.6h |  |  |
| 133 | 1.3.11.9 | Code reviews | 1d? | 2008-07-01 | 2008-07-02 | 132 |  |  | 262.14d | 0d |  | Pallavi [70%] | 5.6h |  |  |
| 134 | 1.3.11.10 | Absorb code reviews changes | 1d? | 2008-07-02 | 2008-07-03 | 133 |  |  | 267.14d | 0d |  | Pallavi [70%] | 5.6h |  |  |
| 135 | 1.3.12 | **Trigger/Arm Implementation** | 34.86d? | 2008-06-02 | 2008-07-18 |  |  |  | 262.14d |  |  |  | 116h |  | P3 |
| 136 | 1.3.12.1 | Design the intial framework | 2.86d? | 2008-06-02 | 2008-06-04 |  |  |  | 299.14d |  | start no earlier than 2008-06-02 | RKB [70%] | 16h |  |  |
| 137 | 1.3.12.2 | Populate Trigger SoftKeys | 2.14d? | 2008-06-25 | 2008-06-27 | 77 |  |  | 267.14d | 0d |  | Vishal [70%] | 12h |  |  |
| 138 | 1.3.12.3 | Configure Trigger Screen | 2.86d? | 2008-06-27 | 2008-07-01 | 137 |  |  | 267.14d | 0d |  | Vishal [70%] | 16h |  |  |
| 139 | 1.3.12.4 | Configure ARM Screen | 2.86d? | 2008-07-02 | 2008-07-04 | 138 |  |  | 267.14d | 0d |  | Vishal [70%] | 16h |  |  |
| 140 | 1.3.12.5 | Implement Advance Button for ARM | 2.86d? | 2008-07-04 | 2008-07-09 | 139 |  |  | 267.14d | 0d |  | Vishal [70%] | 16h |  |  |
| 141 | 1.3.12.6 | Accelerators implementation | 2.14d? | 2008-07-09 | 2008-07-11 | 140 |  |  | 267.14d | 0d |  | Vishal [70%] | 12h |  |  |
| 142 | 1.3.12.7 | UT for Trigger Screen | 1d? | 2008-07-11 | 2008-07-14 | 141 |  |  | 267.14d | 0d |  | Vishal [70%] | 5.6h |  |  |
| 143 | 1.3.12.8 | UT for ARM Screen | 1d? | 2008-07-14 | 2008-07-15 | 142 |  |  | 267.14d | 0d |  | Vishal [70%] | 5.6h |  |  |
| 144 | 1.3.12.9 | UT for Accelerators | 1d? | 2008-07-15 | 2008-07-16 | 143 |  |  | 267.14d | 0d |  | Vishal [70%] | 5.6h |  |  |
| 145 | 1.3.12.10 | Code Reviews | 1d? | 2008-07-16 | 2008-07-17 | 144 |  |  | 267.14d | 0d |  | Vishal [70%] | 5.6h |  |  |
| 146 | 1.3.12.11 | Absorb changes of Code Reviews | 1d? | 2008-07-17 | 2008-07-18 | 145 |  |  | 267.14d |  |  | Vishal [70%] | 5.6h |  |  |
| 147 | 1.3.13 | **Averaging** | 119.86d? | 2008-02-04 | 2008-07-18 |  |  |  | 262.14d |  |  |  | 74.4h |  | P3 |
| 148 | 1.3.13.1 | Design the intial framework | 2.14d? | 2008-02-04 | 2008-02-06 |  |  |  | 384.86d |  |  | RKB [70%] | 12h |  |  |
| 149 | 1.3.13.2 | Populate Averaging SoftKeys | 1d? | 2008-07-03 | 2008-07-04 | 134 |  |  | 267.14d | 0d |  | Pallavi [70%] | 5.6h |  |  |
| 150 | 1.3.13.3 | Implement Average Screen | 2.14d? | 2008-07-04 | 2008-07-08 | 149 |  |  | 267.14d | 0d |  | Pallavi [70%] | 12h |  |  |
| 151 | 1.3.13.4 | Implement Accelerators | 1d? | 2008-07-08 | 2008-07-09 | 150 |  |  | 267.14d | 0d |  | Pallavi [70%] | 5.6h |  |  |
| 152 | 1.3.13.5 | Display Average Count information | 1d? | 2008-07-09 | 2008-07-10 | 151 |  |  | 267.14d | 0d |  | Pallavi [70%] | 5.6h |  |  |
| 153 | 1.3.13.6 | UT for Average SoftKeys | 1d? | 2008-07-10 | 2008-07-11 | 152 |  |  | 267.14d | 0d |  | Pallavi [70%] | 5.6h |  |  |
| 154 | 1.3.13.7 | UT for Average Screen | 1d? | 2008-07-11 | 2008-07-14 | 153 |  |  | 267.14d | 0d |  | Pallavi [70%] | 5.6h |  |  |
| 155 | 1.3.13.8 | UT for Accelerators | 1d? | 2008-07-14 | 2008-07-15 | 154 |  |  | 267.14d | 0d |  | Pallavi [70%] | 5.6h |  |  |
| 156 | 1.3.13.9 | UT for Display Average Count information | 1d? | 2008-07-15 | 2008-07-16 | 155 |  |  | 267.14d | 0d |  | Pallavi [70%] | 5.6h |  |  |
| 157 | 1.3.13.10 | Code Reviews | 1d? | 2008-07-16 | 2008-07-17 | 156 |  |  | 262.14d | 0d |  | Pallavi [70%] | 5.6h |  |  |
| 158 | 1.3.13.11 | Absorb changes of Code Reviews | 1d? | 2008-07-17 | 2008-07-18 | 157 |  |  | 262.14d |  |  | Pallavi [70%] | 5.6h |  |  |

| ID | WBS | Task | Duration | Start | Finish | Predecessors | Total slack | Free slack | Constraint | Resources | Work | Text1 |
| --- | --- | --- | --- | --- | --- | --- | --- | --- | --- | --- | --- | --- |
| 159 | 1.3.14 | **Save/Recall** | 22.71d? | 2008-06-09 | 2008-07-09 |  | 269.29d |  |  |  | 127.2h | P3 |
| 160 | 1.3.14.1 | Design the intial framework | 4.29d? | 2008-06-09 | 2008-06-13 |  | 274.29d | 0d | start no earlier than 2008-06-09 | RKB [70%] | 24h |  |
| 161 | 1.3.14.2 | Populate Trigger SoftKeys | 1d? | 2008-06-13 | 2008-06-16 | 160 | 274.29d | 0d |  | RKB [70%] | 5.6h |  |
| 162 | 1.3.14.3 | Implement Screen for save set up | 2.14d? | 2008-06-16 | 2008-06-18 | 161 | 274.29d | 0d |  | RKB [70%] | 12h |  |
| 163 | 1.3.14.4 | Implement screen for load set up | 2.14d? | 2008-06-18 | 2008-06-20 | 162 | 274.29d | 0d |  | RKB [70%] | 12h |  |
| 164 | 1.3.14.5 | Implement screen save Data | 2.14d? | 2008-06-20 | 2008-06-24 | 163 | 274.29d | 0d |  | RKB [70%] | 12h |  |
| 165 | 1.3.14.6 | Implement screen for load data | 2.14d? | 2008-06-24 | 2008-06-26 | 164 | 274.29d | 0d |  | RKB [70%] | 12h |  |
| 166 | 1.3.14.7 | Implement Automatic/manual save | 2.14d? | 2008-06-26 | 2008-07-01 | 165 | 274.29d | 0d |  | RKB [70%] | 12h |  |
| 167 | 1.3.14.8 | Implement Manual save with comments | 2.14d? | 2008-07-01 | 2008-07-03 | 166 | 274.29d | 0d |  | RKB [70%] | 12h |  |
| 168 | 1.3.14.9 | UT for Populated softkeys | 0.71d? | 2008-07-03 | 2008-07-03 | 167 | 274.29d | 0d |  | RKB [70%] | 4h |  |
| 169 | 1.3.14.10 | UT for save/Load set up | 0.71d? | 2008-07-03 | 2008-07-04 | 168 | 274.29d | 0d |  | RKB [70%] | 4h |  |
| 170 | 1.3.14.11 | UT for Save Data | 0.71d? | 2008-07-04 | 2008-07-07 | 169 | 274.29d | 0d |  | RKB [70%] | 4h |  |
| 171 | 1.3.14.12 | UT for load Data | 0.71d? | 2008-07-07 | 2008-07-08 | 170 | 274.29d | 0d |  | RKB [70%] | 4h |  |
| 172 | 1.3.14.13 | Code Reviews | 0.71d? | 2008-07-08 | 2008-07-08 | 171 | 274.29d | 0d |  | RKB [70%] | 4h |  |
| 173 | 1.3.14.14 | Absorb changes of Code Reviews | 1d? | 2008-07-08 | 2008-07-09 | 172 | 274.29d |  |  | RKB [70%] | 5.6h |  |
| 174 | 1.3.15 | **Frequency Response Chart** | 5d? | 2008-06-09 | 2008-06-13 |  | 262.29d |  |  |  | 28h | P3 |
| 175 | 1.3.15.1 | Implement Chart View Object | 1d? | 2008-06-09 | 2008-06-09 |  | 267.29d | 0d | start no earlier than 2008-06-09 | Anurag [70%] | 5.6h |  |
| 176 | 1.3.15.2 | Change Accelerators as per chart Requirment | 1d? | 2008-06-10 | 2008-06-10 | 175 | 267.29d | 0d |  | Anurag [70%] | 5.6h |  |
| 177 | 1.3.15.3 | Unit test case | 1d? | 2008-06-11 | 2008-06-11 | 176 | 267.29d | 0d |  | Anurag [70%] | 5.6h |  |
| 178 | 1.3.15.4 | Code Review/ Unit test case review/Design screen/ Screen usability reviews with Jan Ryles | 1d? | 2008-06-12 | 2008-06-12 | 177 | 267.29d | 0d |  | Anurag [70%] | 5.6h |  |
| 179 | 1.3.15.5 | Absorb changes of Code Reviews | 1d? | 2008-06-13 | 2008-06-13 | 178 | 267.29d | 0d |  | Anurag [70%] | 5.6h |  |
| 180 | 1.3.16 | **Coherence Chart** | 6d? | 2008-06-16 | 2008-06-23 |  | 262.29d |  |  |  | 33.6h | P3 |
| 181 | 1.3.16.1 | Implement Chart View Object | 1d? | 2008-06-16 | 2008-06-16 | 179 | 267.29d | 0d |  | Anurag [70%] | 5.6h |  |
| 182 | 1.3.16.2 | Change Accelerators as per chart Requirment | 1d? | 2008-06-17 | 2008-06-17 | 181 | 267.29d | 0d |  | Anurag [70%] | 5.6h |  |
| 183 | 1.3.16.3 | Multiple channels support | 1d? | 2008-06-18 | 2008-06-18 | 182 | 267.29d | 0d |  | Anurag [70%] | 5.6h |  |
| 184 | 1.3.16.4 | Unit test case | 1d? | 2008-06-19 | 2008-06-19 | 183 | 267.29d | 0d |  | Anurag [70%] | 5.6h |  |
| 185 | 1.3.16.5 | Code Review/ Unit test case review/Design screen/ Screen usability reviews with Jan Ryles | 1d? | 2008-06-20 | 2008-06-20 | 184 | 267.29d | 0d |  | Anurag [70%] | 5.6h |  |
| 186 | 1.3.16.6 | Absorb changes of Code Reviews | 1d? | 2008-06-23 | 2008-06-23 | 185 | 267.29d | 0d |  | Anurag [70%] | 5.6h |  |

| ID | WBS | Task | Duration | Start | Finish | Predecessors | Total slack | Free slack | Resources | Work | Text1 |
| --- | --- | --- | --- | --- | --- | --- | --- | --- | --- | --- | --- |
| 187 | 1.3.17 | **Cross Power spectrum Chart** | 4d? | 2008-06-24 | 2008-06-27 |  | 262.29d |  |  | 22.4h | P3 |
| 188 | 1.3.17.1 | Change Accelerators as per chart Requirment | 1d? | 2008-06-24 | 2008-06-24 | 186 | 267.29d | 0d | Anurag [70%] | 5.6h |  |
| 189 | 1.3.17.2 | unit test case | 1d? | 2008-06-25 | 2008-06-25 | 188 | 267.29d | 0d | Anurag [70%] | 5.6h |  |
| 190 | 1.3.17.3 | Code Review/ Unit test case review/Design screen/ Screen usability reviews with Jan Ryles | 1d? | 2008-06-26 | 2008-06-26 | 189 | 267.29d | 0d | Anurag [70%] | 5.6h |  |
| 191 | 1.3.17.4 | Absorb code reviews changes | 1d? | 2008-06-27 | 2008-06-27 | 190 | 267.29d | 0d | Anurag [70%] | 5.6h |  |
| 192 | 1.3.18 | **Auto Power spectrum Chart** | 5d? | 2008-06-30 | 2008-07-04 |  | 262.29d |  |  | 28h | P3 |
| 193 | 1.3.18.1 | Implement Chart View Object | 1d? | 2008-06-30 | 2008-06-30 | 191 | 267.29d | 0d | Anurag [70%] | 5.6h |  |
| 194 | 1.3.18.2 | Change Accelerators as per chart Requirment | 1d? | 2008-07-01 | 2008-07-01 | 193 | 267.29d | 0d | Anurag [70%] | 5.6h |  |
| 195 | 1.3.18.3 | Unit test case | 1d? | 2008-07-02 | 2008-07-02 | 194 | 267.29d | 0d | Anurag [70%] | 5.6h |  |
| 196 | 1.3.18.4 | Code Review/ Unit test case review/Design screen/ Screen usability reviews with Jan Ryles | 1d? | 2008-07-03 | 2008-07-03 | 195 | 267.29d | 0d | Anurag [70%] | 5.6h |  |
| 197 | 1.3.18.5 | Absorb code reviews changes | 1d? | 2008-07-04 | 2008-07-04 | 196 | 267.29d | 0d | Anurag [70%] | 5.6h |  |
| 198 | 1.3.19 | **Display Error Log** | 1d? | 2008-02-04 | 2008-02-04 |  | 381d |  |  | 112h | P4 |
| 199 | 1.3.19.1 | Design Framework for showing Error Log | 1d? | 2008-02-04 | 2008-02-04 |  | 386d |  |  | 16h |  |
| 200 | 1.3.19.2 | Implementation | 1d? | 2008-02-04 | 2008-02-04 |  | 386d |  |  | 24h |  |
| 201 | 1.3.19.3 | Save Error Log in different format | 1d? | 2008-02-04 | 2008-02-04 |  | 386d |  |  | 16h |  |
| 202 | 1.3.19.4 | Filter Error log | 1d? | 2008-02-04 | 2008-02-04 |  | 386d |  |  | 16h |  |
| 203 | 1.3.19.5 | Enable/Show/Clear/Save Debug Error log | 1d? | 2008-02-04 | 2008-02-04 |  | 386d |  |  | 24h |  |
| 204 | 1.3.19.6 | Code reviews/unit test case reviews | 1d? | 2008-02-04 | 2008-02-04 |  | 386d |  |  | 8h |  |
| 205 | 1.3.19.7 | Absorb code reviews changes | 1d? | 2008-02-04 | 2008-02-04 |  | 386d |  |  | 8h |  |
| 206 | 1.3.20 | **WaterFall** | 9.71d? | 2008-07-07 | 2008-07-18 |  | 262.29d |  |  | 54.4h | P3 |
| 207 | 1.3.20.1 | Existing code study | 1d? | 2008-07-07 | 2008-07-07 | 197 | 267.29d | 0d | Anurag [70%] | 5.6h |  |
| 208 | 1.3.20.2 | Implement Chart View Object | 1.43d? | 2008-07-08 | 2008-07-09 | 207 | 267.29d | 0d | Anurag [70%] | 8h |  |
| 209 | 1.3.20.3 | Z-Axis Range support | 1.43d? | 2008-07-09 | 2008-07-10 | 208 | 262.29d | 0d | Anurag [70%] | 8h |  |
| 210 | 1.3.20.4 | Skew angle | 1.43d? | 2008-07-10 | 2008-07-14 | 209 | 262.29d | 0d | Anurag [70%] | 8h |  |
| 211 | 1.3.20.5 | Line clipping | 1.43d? | 2008-07-14 | 2008-07-15 | 210 | 262.29d | 0d | Anurag [70%] | 8h |  |
| 212 | 1.3.20.6 | Unit test case | 1d? | 2008-07-15 | 2008-07-16 | 211 | 262.29d | 0d | Anurag [70%] | 5.6h |  |
| 213 | 1.3.20.7 | Code Review/ Unit test case review/Design screen/ Screen usability reviews with Jan Ryles | 1d? | 2008-07-16 | 2008-07-17 | 212 | 262.29d | 0d | Anurag [70%] | 5.6h |  |
| 214 | 1.3.20.8 | Absorb code reviews changes | 1d? | 2008-07-17 | 2008-07-18 | 213 | 262.29d |  | Anurag [70%] | 5.6h |  |

| ID | WBS | Task | Duration | Start | Finish | Predecessors | Complete | Remaining | Total slack | Free slack | Constraint | Resources | Work | Actual work | Text1 |
| --- | --- | --- | --- | --- | --- | --- | --- | --- | --- | --- | --- | --- | --- | --- | --- |
| 215 | 1.3.21 | **Spectrogram** | 1d? | 2008-02-04 | 2008-02-04 |  |  |  | 381d |  |  |  | 112h |  | P4 |
| 216 | 1.3.21.1 | Existing Code study | 1d? | 2008-02-04 | 2008-02-04 |  |  |  | 386d |  |  |  | 24h |  |  |
| 217 | 1.3.21.2 | Implement Chart View Object | 1d? | 2008-02-04 | 2008-02-04 |  |  |  | 386d |  |  |  | 32h |  |  |
| 218 | 1.3.21.3 | multiple color intensity | 1d? | 2008-02-04 | 2008-02-04 |  |  |  | 386d |  |  |  | 16h |  |  |
| 219 | 1.3.21.4 | Z-Axis Range , Top, Bottom | 1d? | 2008-02-04 | 2008-02-04 |  |  |  | 386d |  |  |  | 12h |  |  |
| 220 | 1.3.21.5 | Unit test case | 1d? | 2008-02-04 | 2008-02-04 |  |  |  | 386d |  |  |  | 12h |  |  |
| 221 | 1.3.21.6 | Code Review/ Unit test case review/Design screen/ Screen usability reviews with Jan Ryles | 1d? | 2008-02-04 | 2008-02-04 |  |  |  | 386d |  |  |  | 8h |  |  |
| 222 | 1.3.21.7 | Absorb code reviews changes | 1d? | 2008-02-04 | 2008-02-04 |  |  |  | 386d |  |  |  | 8h |  |  |
| 223 | 1.3.22 | **Implement Units for Frequency Dailog** | 1d? | 2008-02-04 | 2008-02-04 |  |  |  | 381d |  |  |  | 40h |  | P4 |
| 224 | 1.3.22.1 | Implement Units on Screen | 1d? | 2008-02-04 | 2008-02-04 |  |  |  | 386d |  |  |  | 8h |  |  |
| 225 | 1.3.22.2 | Unit changes using Accelerators | 1d? | 2008-02-04 | 2008-02-04 |  |  |  | 386d |  |  |  | 8h |  |  |
| 226 | 1.3.22.3 | Changing Accelerators with Unit attached | 1d? | 2008-02-04 | 2008-02-04 |  |  |  | 386d |  |  |  | 8h |  |  |
| 227 | 1.3.22.4 | Code Reviews | 1d? | 2008-02-04 | 2008-02-04 |  |  |  | 386d |  |  |  | 8h |  |  |
| 228 | 1.3.22.5 | Absorb changes of Code Reviews | 1d? | 2008-02-04 | 2008-02-04 |  |  |  | 386d |  |  |  | 8h |  |  |
| 229 | 1.3.23 | **Code Refactoring To Use Gradient Controls** | 4.29d? | 2008-06-02 A | 2008-06-06 A |  | 100% |  |  |  |  |  | 24h | 24h | P3 |
| 230 | 1.3.23.1 | Code Refactoring To Use Gradient Controls | 4.29d? | 2008-06-02 A | 2008-06-06 A |  | 100% |  |  |  | start no earlier than 2008-06-02 | RKB [70%] | 24h | 24h |  |
| 231 | 1.3.24 | **Common Custom Control & Menu Structure invocation** | 44.86d? | 2008-02-04 A | 2008-04-04 |  | 65% | 15.7d? | 337.14d |  |  |  | 116h | 76h | P2 |
| 232 | 1.3.24.1 | Dual State Selection Control | 2.14d? | 2008-03-05 A | 2008-03-07 A | 64 | 100% |  |  |  |  | RKB [70%] | 12h | 12h |  |
| 233 | 1.3.24.2 | Group Box Implementation | 2.14d? | 2008-03-07 A | 2008-03-12 A | 232 | 100% |  |  |  |  | RKB [70%] | 12h | 12h |  |
| 234 | 1.3.24.3 | Combo box implementation | 2.31d? | 2008-03-12 A | 2008-03-17 A | 233, 43 | 100% |  |  |  |  | Pallavi [65%] | 12h | 12h |  |
| 235 | 1.3.24.4 | Implement Rooted Softkey Design pattern invocation | 2.31d? | 2008-03-17 | 2008-03-19 | 234 |  |  | 347.37d | 0d |  | Pallavi [65%] | 12h |  |  |
| 236 | 1.3.24.5 | Implement Back Key functionality | 2.31d? | 2008-03-19 | 2008-03-24 | 235 |  |  | 346.37d |  |  | Pallavi [65%] | 12h |  |  |
| 237 | 1.3.24.6 | Enable Keyboard for Combo controls | 2.31d? | 2008-03-24 A | 2008-03-26 A | 236 | 100% |  |  |  |  | Pallavi [65%] | 12h | 12h |  |
| 238 | 1.3.24.7 | Enable Key board for dual state selection ( Show/Hide, AC/DC etc) | 2.31d? | 2008-03-26 A | 2008-03-31 A | 237 | 100% |  |  |  |  | Pallavi [65%] | 12h | 12h |  |
| 239 | 1.3.24.8 | Unit test case for validating Menu State & Code review | 3.08d? | 2008-03-31 A | 2008-04-03 A | 238 | 100% |  |  |  |  | Pallavi [65%] | 16h | 16h |  |
| 240 | 1.3.24.9 | Lighten the respected Hard key's | 1.54d? | 2008-04-03 | 2008-04-04 | 239 |  |  | 337.14d |  |  | Pallavi [65%] | 8h |  |  |
| 241 | 1.3.24.10 | Code Review | 1.54d | 2008-02-04 | 2008-02-05 |  |  |  | 380.46d |  |  | Pallavi [65%] | 8h |  |  |

| ID | WBS | Task | Duration | Start | Finish | Predecessors | Complete | Total slack | Free slack | Resources | Work | Actual work | Text1 |
| --- | --- | --- | --- | --- | --- | --- | --- | --- | --- | --- | --- | --- | --- |
| 242 | 1.3.25 | **Screen Header Panel** | 317.94d? | 2008-03-12 A | 2009-06-01 A |  | 100% |  |  |  | 56h | 56h | P2 |
| 243 | 1.3.25.1 | Design screen header layouts/ Class/ Exposed function | 4d? | 2008-03-12 A | 2008-03-18 A | 233 | 100% |  |  | RKB [50%] | 16h | 16h |  |
| 244 | 1.3.25.2 | Implementation | 4.62d? | 2008-03-26 A | 2008-04-02 A | 243, 69 | 100% |  |  | Ravi [65%] | 24h | 24h |  |
| 245 | 1.3.25.3 | Unit test case | 1.54d? | 2008-04-02 A | 2008-04-03 A | 244 | 100% |  |  | Ravi [65%] | 8h | 8h |  |
| 246 | 1.3.25.4 | Code reviews/unit test case reviews | 1.54d | 2009-05-28 A | 2009-06-01 A | 245 | 100% |  |  | Ravi [65%] | 8h | 8h |  |
| 247 | 1.3.26 | **Status Panel** | 312.4d? | 2008-03-18 A | 2009-05-28 A |  | 100% |  |  |  | 48h | 48h | P3 |
| 248 | 1.3.26.1 | Design Status Panel layout/ Exposed classes/ Functions | 4d? | 2008-03-18 A | 2008-03-25 A | 243 | 100% |  |  | RKB [50%] | 16h | 16h |  |
| 249 | 1.3.26.2 | Implementation of status panel | 3.08d? | 2008-04-03 A | 2008-04-08 A | 248, 245 | 100% |  |  | Ravi [65%] | 16h | 16h |  |
| 250 | 1.3.26.3 | Unit test case | 1.54d? | 2008-04-08 A | 2008-04-10 A | 249 | 100% |  |  | Ravi [65%] | 8h | 8h |  |
| 251 | 1.3.26.4 | Code reviews/unit test case reviews | 1.54d | 2009-05-27 A | 2009-05-28 A | 250 | 100% |  |  | Ravi [65%] | 8h | 8h |  |
| 252 | 1.3.27 | **Analyser Mode Management : FFT** | 305.86d? | 2008-03-25 | 2009-05-27 |  |  | 40d |  |  | 44h |  | P4 |
| 253 | 1.3.27.1 | Design | 2d? | 2008-03-25 | 2008-03-27 | 248 |  | 52.33d | 10.33d | RKB [50%] | 8h |  |  |
| 254 | 1.3.27.2 | Implementation | 3.85d? | 2008-04-10 | 2008-04-17 | 253, 250 |  | 41d | 0d | Ravi [65%] | 20h |  |  |
| 255 | 1.3.27.3 | Unit Testing | 1.54d? | 2008-04-17 | 2008-04-21 | 254 |  | 40d | 0d | Ravi [65%] | 8h |  |  |
| 256 | 1.3.27.4 | Code Review | 1.54d? | 2009-05-25 | 2009-05-27 | 255 |  | 40d |  | Ravi [65%] | 8h |  |  |
| 257 | 1.3.28 | **Module Integration** | 8d? | 2008-03-27 A | 2008-04-08 A |  | 100% |  |  |  | 32h | 32h | P2 |
| 258 | 1.3.28.1 | Module Integration GUI - Inst Interface | 4d? | 2008-03-27 A | 2008-04-02 A | 253 | 100% |  |  | RKB [50%] | 16h | 16h |  |
| 259 | 1.3.28.2 | Module integration GUI - AML | 4d? | 2008-04-02 A | 2008-04-08 A | 258 | 100% |  |  | RKB [50%] | 16h | 16h |  |
| 260 | 1.3.29 | **Configure Analyzer Frequency** | 227.4d? | 2008-04-08 A | 2009-02-19 A |  | 100% |  |  |  | 48h | 48h | P2 |
| 261 | 1.3.29.1 | Design | 2d? | 2008-04-08 A | 2008-04-10 A | 259 | 100% |  |  | RKB [50%] | 8h | 8h |  |
| 262 | 1.3.29.2 | Implementation | 4.62d? | 2008-04-10 A | 2008-04-17 A | 261, 240 | 100% |  |  | Pallavi [65%] | 24h | 24h |  |
| 263 | 1.3.29.3 | Unit Testing | 1.54d? | 2008-04-17 A | 2008-04-22 A | 262 | 100% |  |  | Pallavi [65%] | 8h | 8h |  |
| 264 | 1.3.29.4 | Code reviews/unit test case reviews | 1.47d | 2008-06-02 A | 2009-02-19 A | 263 | 100% |  |  | Pallavi [68%] | 8h | 8h |  |
| 265 | 1.3.30 | **Start/Pause/Run** | 30.4d? | 2008-04-16 A | 2008-05-28 A |  | 100% |  |  |  | 48h | 48h | P2 |
| 266 | 1.3.30.1 | Design the framework | 3d? | 2008-04-16 A | 2008-04-22 A |  | 100% |  |  | RKB [50%] | 12h | 12h |  |
| 267 | 1.3.30.2 | Implementation of Run Behaviour | 3.08d? | 2008-04-22 A | 2008-04-25 A | 266, 263 | 100% |  |  | Pallavi [65%] | 16h | 16h |  |
| 268 | 1.3.30.3 | Unit testing | 2.31d? | 2008-04-25 A | 2008-04-29 A | 267 | 100% |  |  | Pallavi [65%] | 12h | 12h |  |
| 269 | 1.3.30.4 | Code Review/ Unit test case review | 1.54d | 2008-05-27 A | 2008-05-28 A | 268 | 100% |  |  | Pallavi [65%] | 8h | 8h |  |

| ID | WBS | Task | Duration | Start | Finish | Predecessors | Complete | Remaining | Total slack | Free slack | Resources | Work | Actual work | Text1 |
| --- | --- | --- | --- | --- | --- | --- | --- | --- | --- | --- | --- | --- | --- | --- |
| 270 | 1.3.31 | **Configure Measurements: THD** | 274.45d? | 2008-04-22 A | 2009-05-11 |  | 21% | 215.64d? | 51.4d |  |  | 112h | 24h | P3 |
| 271 | 1.3.31.1 | Design Framework for THD configuration | 3d? | 2008-04-22 A | 2008-04-25 A | 266 | 100% |  |  |  | Himanshu | 24h | 24h |  |
| 272 | 1.3.31.2 | Design Framework for Temporary Measurement flow | 2.5d? | 2008-04-25 | 2008-04-29 | 271 |  |  | 45.9d | 0d | Himanshu | 20h |  |  |
| 273 | 1.3.31.3 | Implement screen ( With Live Chart) | 2.5d? | 2008-04-29 | 2008-05-05 | 272 |  |  | 53.86d | 0d | Himanshu | 20h |  |  |
| 274 | 1.3.31.4 | Hooks the value change on screen with Temporary Measurement flow | 1.5d? | 2008-05-05 | 2008-05-06 | 273 |  |  | 53.86d | 0d | Himanshu | 12h |  |  |
| 275 | 1.3.31.5 | Display THD Measurement Value on Status bar | 1.5d? | 2008-05-06 | 2008-05-08 | 274 |  |  | 53.86d | 0d | Himanshu | 12h |  |  |
| 276 | 1.3.31.6 | Unit test case | 2d? | 2008-05-08 | 2008-05-12 | 275 |  |  | 53.86d | 0d | Himanshu | 16h |  |  |
| 277 | 1.3.31.7 | Code Review/ Unit test case review/Design screen/ Screen usability reviews with Jan Ryles | 1d | 2009-05-08 | 2009-05-11 | 276 |  |  | 51.4d |  | Himanshu | 8h |  |  |
| 278 | 1.3.32 | **Configure Measurements : Harmonic Power Value** | 20.36d? | 2008-04-29 | 2008-05-28 |  |  |  | 74d |  |  | 60h |  | P4 |
| 279 | 1.3.32.1 | Design Framework for Harmonic Power configuration | 1.54d? | 2008-04-29 | 2008-05-02 | 268 |  |  | 73d | 0d | Pallavi [65%] | 8h |  |  |
| 280 | 1.3.32.2 | Design Framework for Temporary Measurement flow | 2.31d? | 2008-05-02 | 2008-05-06 | 279 |  |  | 73d | 0d | Pallavi [65%] | 12h |  |  |
| 281 | 1.3.32.3 | Implement screen ( With Live Chart) | 1.54d? | 2008-05-06 | 2008-05-08 | 280 |  |  | 74d | 0d | Pallavi [65%] | 8h |  |  |
| 282 | 1.3.32.4 | Hooks the value change on screen with Temporary Measurement flow | 1.54d? | 2008-05-08 | 2008-05-09 | 281 |  |  | 74d | 0d | Pallavi [65%] | 8h |  |  |
| 283 | 1.3.32.5 | Display Harmonic power value Measurement Value on Status bar | 1.54d | 2008-05-09 | 2008-05-13 | 282 |  |  | 74d | 0d | Pallavi [65%] | 8h |  |  |
| 284 | 1.3.32.6 | Unit test case | 1.54d? | 2008-05-13 | 2008-05-14 | 283 |  |  | 74d | 0d | Pallavi [65%] | 8h |  |  |
| 285 | 1.3.32.7 | Code Review/ Unit test case review/Design screen/ Screen usability reviews with Jan Ryles | 1.54d | 2008-05-26 | 2008-05-28 | 284 |  |  | 299.96d |  | Pallavi [65%] | 8h |  |  |
| 286 | 1.3.33 | **Configure Measurements : Side band power** | 18.73d? | 2008-04-29 | 2008-05-26 |  |  |  | 45.9d |  |  | 60h |  | P4 |
| 287 | 1.3.33.1 | Design Framework for Side band power configuration | 2d? | 2008-04-29 | 2008-05-02 | 272 |  |  | 44.9d | 0d | RKB [50%] | 8h |  |  |
| 288 | 1.3.33.2 | Design Framework for Temporary Measurement flow | 3d? | 2008-05-02 | 2008-05-07 | 287 |  |  | 44.9d | 0d | RKB [50%] | 12h |  |  |
| 289 | 1.3.33.3 | Implement screen ( With Live Chart) | 1.54d? | 2008-05-14 | 2008-05-16 | 288, 284 |  |  | 74d | 0d | Pallavi [65%] | 8h |  |  |
| 290 | 1.3.33.4 | Hooks the value change on screen with Temporary Measurement flow | 1.54d? | 2008-05-16 | 2008-05-19 | 289 |  |  | 74d | 0d | Pallavi [65%] | 8h |  |  |
| 291 | 1.3.33.5 | Display side band power Measurement Value on Status bar | 1.54d | 2008-05-19 | 2008-05-21 | 290 |  |  | 74d | 0d | Pallavi [65%] | 8h |  |  |
| 292 | 1.3.33.6 | Unit test case | 1.54d? | 2008-05-21 | 2008-05-22 | 291 |  |  | 74d | 0d | Pallavi [65%] | 8h |  |  |
| 293 | 1.3.33.7 | Code Review/ Unit test case review/Design screen/ Screen usability reviews with Jan Ryles | 1.54d | 2008-05-22 | 2008-05-26 | 292 |  |  | 301.63d |  | Pallavi [65%] | 8h |  |  |

| ID | WBS | Task | Duration | Start | Finish | Predecessors | Complete | Remaining | Total slack | Free slack | Resources | Work | Actual work | Text1 |
| --- | --- | --- | --- | --- | --- | --- | --- | --- | --- | --- | --- | --- | --- | --- |
| 294 | 1.3.34 | **Configure Measurements : Band power value** | 262.4d? | 2008-05-07 | 2009-05-11 |  |  |  | 44.9d |  |  | 60h |  | P4 |
| 295 | 1.3.34.1 | Design framework for band power configuration | 2d? | 2008-05-07 | 2008-05-09 | 288 |  |  | 44.9d | 0d | RKB [50%] | 8h |  |  |
| 296 | 1.3.34.2 | Design Framework for Temporary Measurement flow | 3d? | 2008-05-09 | 2008-05-14 | 295 |  |  | 51.9d | 0d | RKB [50%] | 12h |  |  |
| 297 | 1.3.34.3 | Implement screen ( With Live Chart) | 1.54d? | 2008-05-14 | 2008-05-16 | 296, 276 |  |  | 51.9d | 0d | Ravi [65%] | 8h |  |  |
| 298 | 1.3.34.4 | Hooks the value change on screen with Temporary Measurement flow | 1.54d? | 2008-05-16 | 2008-05-19 | 297 |  |  | 51.9d | 0d | Ravi [65%] | 8h |  |  |
| 299 | 1.3.34.5 | Display band power Measurement Value on Status bar | 1.54d | 2008-05-19 | 2008-05-21 | 298 |  |  | 51.9d | 0d | Ravi [65%] | 8h |  |  |
| 300 | 1.3.34.6 | Unit test case | 1.54d? | 2008-05-21 | 2008-05-22 | 299 |  |  | 51.9d | 0.07d | Ravi [65%] | 8h |  |  |
| 301 | 1.3.34.7 | Code Review/ Unit test case review/Design screen/ Screen usability reviews with Jan Ryles | 1.54d | 2009-05-07 | 2009-05-11 | 300 |  |  | 56.96d |  | Ravi [65%] | 8h |  |  |
| 302 | 1.3.35 | **File Service** | 5d? | 2008-05-14 | 2008-05-21 |  |  |  | 71.2d |  |  | 20h |  | P4 |
| 303 | 1.3.35.1 | Define File/Directory structure hierarchy | 4d? | 2008-05-14 | 2008-05-20 | 296 |  |  | 71.2d | 0d | RKB [50%] | 16h |  |  |
| 304 | 1.3.35.2 | Review with team | 1d? | 2008-05-20 | 2008-05-21 | 303 |  |  | 71.2d | 0d | RKB [50%] | 4h |  |  |
| 305 | 1.3.36 | **Linear spectrum Chart** | 158.14d? | 2008-08-05 A | 2009-03-13 |  | 42% | 91.24d? | 92.86d |  |  | 104h | 44h | P2 |
| 306 | 1.3.36.1 | Implement Chart View Object | 3.57d? | 2008-08-05 A | 2008-08-08 A | 30 | 100% |  |  |  | Anurag [70%] | 20h | 20h |  |
| 307 | 1.3.36.2 | Support multiple X-Axis Type ( Lin, Log) | 2.86d? | 2008-08-12 | 2008-08-18 | 306 |  |  | 234.43d | 0d | Anurag [70%] | 16h |  |  |
| 308 | 1.3.36.3 | Support multiple Data point units | 1.43d? | 2008-08-22 | 2008-08-26 | 307 |  |  | 233.86d | 0.43d | Anurag [70%] | 8h |  |  |
| 309 | 1.3.36.4 | Y-Axis Scaling ( Auto Sclaing) Display only | 1.43d? | 2008-08-29 | 2008-09-01 | 308 |  |  | 231.57d | 0.57d | Anurag [70%] | 8h |  |  |
| 310 | 1.3.36.5 | Multiple channels support | 2.86d? | 2008-09-04 A | 2008-09-08 A | 309 | 100% |  |  |  | Anurag [70%] | 16h | 16h |  |
| 311 | 1.3.36.6 | Integrate with data push mechnaism | 1.43d? | 2008-09-10 A | 2008-09-11 A | 310 | 100% |  |  |  | Anurag [70%] | 8h | 8h |  |
| 312 | 1.3.36.7 | unit testing | 2.86d? | 2008-09-15 | 2008-09-18 | 311 |  |  | 91.57d | 0d | Anurag [70%] | 16h |  |  |
| 313 | 1.3.36.8 | Code Review/ Unit test case review/Design screen/ Screen usability reviews with Jan Ryles | 2.14d | 2009-03-10 | 2009-03-13 | 312 |  |  | 92.86d |  | Anurag [70%] | 12h |  |  |
| 314 | 1.3.37 | **Common Graph Cordinate implementation** | 123d? | 2008-09-18 | 2009-03-10 |  |  |  | 95.14d |  |  | 64h |  | P3 |
| 315 | 1.3.37.1 | Linear Magnitude | 1.43d? | 2008-09-18 | 2008-09-19 | 312 |  |  | 95.14d | 0d | Anurag [70%] | 8h |  |  |
| 316 | 1.3.37.2 | Log Magnitude | 1.43d? | 2008-09-29 | 2008-09-30 | 315 |  |  | 96.41d | 0d | Anurag [70%] | 8h |  |  |
| 317 | 1.3.37.3 | DB Magnitude | 1.43d? | 2008-10-01 | 2008-10-03 | 316 |  |  | 95.29d | 0d | Anurag [70%] | 8h |  |  |
| 318 | 1.3.37.4 | Real Imagainary | 1.43d? | 2008-10-07 | 2008-10-08 | 317 |  |  | 97.43d | 0.43d | Anurag [70%] | 8h |  |  |
| 319 | 1.3.37.5 | Phase, UnWrapped Phase | 1.43d? | 2008-10-10 | 2008-10-13 | 318 |  |  | 101.71d | 0d | Anurag [70%] | 8h |  |  |
| 320 | 1.3.37.6 | Group Delay | 1.43d? | 2008-10-14 | 2008-10-16 | 319 |  |  | 96.71d | 0d | Anurag [70%] | 8h |  |  |
| 321 | 1.3.37.7 | Polar | 1.43d? | 2008-10-17 | 2008-10-21 | 320 |  |  | 96d | 0d | Anurag [70%] | 8h |  |  |
| 322 | 1.3.37.8 | Code Review/ Unit test case review/Design screen/ Screen usability reviews with Jan Ryles | 1.43d? | 2009-03-09 | 2009-03-10 | 321 |  |  | 100.57d |  | Anurag [70%] | 8h |  |  |

| ID | WBS | Task | Duration | Start | Finish | Predecessors | Total slack | Free slack | Resources | Work | Text1 |
| --- | --- | --- | --- | --- | --- | --- | --- | --- | --- | --- | --- |
| 323 | 1.3.38 | **Nyquist Chart** | 98d? | 2008-10-22 | 2009-03-09 |  | 96.43d |  |  | 40h | P6 |
| 324 | 1.3.38.1 | Implement Chart View Object | 1.43d? | 2008-10-22 | 2008-10-23 | 321 | 100d | 0d | Anurag [70%] | 8h |  |
| 325 | 1.3.38.2 | Support multiple X-Axis Type ( Lin, Log) & Y-Axis scaling | 1.43d? | 2008-10-27 | 2008-10-29 | 324 | 99.14d | 0d | Anurag [70%] | 8h |  |
| 326 | 1.3.38.3 | Support multiple Data point units | 1.43d? | 2008-10-31 | 2008-11-03 | 325 | 99.29d | 0d | Anurag [70%] | 8h |  |
| 327 | 1.3.38.4 | Multiple channels support\Marker support | 0.71d? | 2008-11-05 | 2008-11-05 | 326 | 98.14d | 0d | Anurag [70%] | 4h |  |
| 328 | 1.3.38.5 | Unit test case | 1.43d? | 2008-11-07 | 2008-11-10 | 327 | 98.43d | 0d | Anurag [70%] | 8h |  |
| 329 | 1.3.38.6 | Code Review/ Unit test case review/Design screen/ Screen usability reviews with Jan Ryles | 0.71d? | 2009-03-06 | 2009-03-09 | 328 | 96.43d |  | Anurag [70%] | 4h |  |
| 330 | 1.3.39 | **Nichols chart** | 82.71d? | 2008-11-12 | 2009-03-06 |  | 97.14d |  |  | 40h | P6 |
| 331 | 1.3.39.1 | Implement Chart View Object | 1.43d? | 2008-11-12 | 2008-11-13 | 328 | 99.41d | 0d | Anurag [70%] | 8h |  |
| 332 | 1.3.39.2 | Support multiple X-Axis Type ( Lin, Log) & Y-Axis scaling | 1.43d? | 2008-11-14 | 2008-11-17 | 331 | 99.29d | 0d | Anurag [70%] | 8h |  |
| 333 | 1.3.39.3 | Support multiple Data point units | 0.71d? | 2008-11-19 | 2008-11-19 | 332 | 97.86d | 0d | Anurag [70%] | 4h |  |
| 334 | 1.3.39.4 | Multiple channels support\Marker support | 1.43d? | 2008-11-21 | 2008-11-24 | 333 | 97.86d | 0d | Anurag [70%] | 8h |  |
| 335 | 1.3.39.5 | Unit test case | 1.43d? | 2008-11-24 | 2008-11-26 | 334 | 97.86d | 0d | Anurag [70%] | 8h |  |
| 336 | 1.3.39.6 | Code Review/ Unit test case review/Design screen/ Screen usability reviews with Jan Ryles | 0.71d? | 2009-03-06 | 2009-03-06 | 335 | 97.14d |  | Anurag [70%] | 4h |  |
| 337 | 1.3.40 | **WaterFall** | 66.86d? | 2008-12-04 | 2009-03-09 |  | 97d |  |  | 96h | P6 |
| 338 | 1.3.40.1 | Implement Chart View Object | 4.29d? | 2008-12-04 | 2008-12-11 | 335 | 99.43d | 0d | Anurag [70%] | 24h |  |
| 339 | 1.3.40.2 | Z-Axis Range support | 3.57d? | 2008-12-16 | 2008-12-19 | 338 | 99.43d | 0d | Anurag [70%] | 20h |  |
| 340 | 1.3.40.3 | Skew angle | 2.86d? | 2008-12-24 | 2008-12-30 | 339 | 98.43d | 0d | Anurag [70%] | 16h |  |
| 341 | 1.3.40.4 | Line clipping | 2.86d? | 2009-01-01 | 2009-01-06 | 340 | 98.43d | 1.93d | Anurag [70%] | 16h |  |
| 342 | 1.3.40.5 | Unit test case | 2.86d? | 2009-01-12 | 2009-01-14 | 341 | 102.14d | 0d | Anurag [70%] | 16h |  |
| 343 | 1.3.40.6 | Code Review/ Unit test case review/Design screen/ Screen usability reviews with Jan Ryles | 0.71d? | 2009-03-06 | 2009-03-09 | 342 | 97d |  | Anurag [70%] | 4h |  |
| 344 | 1.3.41 | **Spectrogram** | 20.71d? | 2009-01-21 | 2009-02-19 |  | 108.43d |  |  | 72h | P4 |
| 345 | 1.3.41.1 | Implement Chart View Object | 5.71d? | 2009-01-21 | 2009-01-29 | 342 | 111.43d | 1.43d | Anurag [70%] | 32h |  |
| 346 | 1.3.41.2 | multiple color intensity | 1.43d? | 2009-02-02 | 2009-02-03 | 345 | 115d | 0d | Anurag [70%] | 8h |  |
| 347 | 1.3.41.3 | Z-Axis Range , Top, Bottom | 2.14d? | 2009-02-04 | 2009-02-06 | 346 | 110d | 2.14d | Anurag [70%] | 12h |  |
| 348 | 1.3.41.4 | Unit test case | 2.14d? | 2009-02-16 | 2009-02-18 | 347 | 113.43d | 0d | Anurag [70%] | 12h |  |
| 349 | 1.3.41.5 | Code Review/ Unit test case review/Design screen/ Screen usability reviews with Jan Ryles | 1.43d? | 2009-02-18 | 2009-02-19 | 348 | 108.43d |  | Anurag [70%] | 8h |  |

| ID | WBS | Task | Duration | Start | Finish | Predecessors | Total slack | Free slack | Resources | Work | Text1 |
| --- | --- | --- | --- | --- | --- | --- | --- | --- | --- | --- | --- |
| 350 | 1.3.42 | **Display Error Log** | 242.16d? | 2008-05-21 | 2009-04-24 |  | 62.2d |  |  | 104h | P3 |
| 351 | 1.3.42.1 | Design Framework for showing Error Log | 4d? | 2008-05-21 | 2008-05-27 | 304 | 71.2d | 0d | RKB [50%] | 16h |  |
| 352 | 1.3.42.2 | Implementation | 4.62d? | 2008-05-27 | 2008-06-03 | 351, 292 | 72.2d | 0d | Pallavi [65%] | 24h |  |
| 353 | 1.3.42.3 | Save Error Log in different format | 3.08d? | 2008-06-03 | 2008-06-06 | 352 | 72.2d | 0d | Pallavi [65%] | 16h |  |
| 354 | 1.3.42.4 | Filter Error log | 3.08d? | 2008-06-06 | 2008-06-11 | 353 | 72.2d | 0d | Pallavi [65%] | 16h |  |
| 355 | 1.3.42.5 | Enable/Show/Clear/Save Debug Error log | 4.62d? | 2008-06-11 | 2008-06-30 | 354 | 64.2d | 0d | Pallavi [65%] | 24h |  |
| 356 | 1.3.42.6 | Code reviews/unit test case reviews | 1.54d | 2009-04-23 | 2009-04-24 | 355 | 62.2d |  | Pallavi [65%] | 8h |  |
| 357 | 1.3.43 | **Local/Remote Mode Implication** | 7d? | 2008-02-04 | 2008-02-12 |  | 167.85d |  |  | 24h | P4 |
| 358 | 1.3.43.1 | Configuring all FP components in Local & Remote mode | 3d? | 2008-02-04 | 2008-02-06 |  | 167.85d | 0d | RKB [50%] | 12h |  |
| 359 | 1.3.43.2 | Unit testing | 3d? | 2008-02-07 | 2008-02-12 | 358 | 173.53d | 0d | RKB [50%] | 12h |  |
| 360 | 1.3.44 | **Save Trace** | 206.77d? | 2008-02-13 | 2008-11-27 |  | 167.85d |  |  | 48h | P4 |
| 361 | 1.3.44.1 | Design framework for Saving trace | 3d? | 2008-02-13 | 2008-02-15 | 359 | 173.53d | 0d | RKB [50%] | 12h |  |
| 362 | 1.3.44.2 | Design & implement screen to trigger saving mechanism | 3.85d? | 2008-02-18 | 2008-02-21 | 361 | 173.53d | 0d | Pallavi [65%] | 20h |  |
| 363 | 1.3.44.3 | unit testing | 2.31d? | 2008-02-21 | 2008-02-26 | 362 | 168.85d | 0d | Pallavi [65%] | 12h |  |
| 364 | 1.3.44.4 | design review/unit test review/usability review | 0.77d? | 2008-11-27 | 2008-11-27 | 363 | 173.23d |  | Pallavi [65%] | 4h |  |
| 365 | 1.3.45 | **Recall trace** | 202.77d? | 2008-02-18 | 2008-11-26 |  | 169.23d |  |  | 24h | P4 |
| 366 | 1.3.45.1 | Design framework for Loading trace | 1d? | 2008-02-18 | 2008-02-18 | 361 | 178.69d | 5.15d | RKB [50%] | 4h |  |
| 367 | 1.3.45.2 | Design & implement screen to trigger Loading mechanism | 1.54d? | 2008-02-26 | 2008-02-27 | 366, 363 | 169.53d | 0d | Pallavi [65%] | 8h |  |
| 368 | 1.3.45.3 | unit testing | 1.54d? | 2008-02-27 | 2008-02-29 | 367 | 169.53d | 0d | Pallavi [65%] | 8h |  |
| 369 | 1.3.45.4 | design review/unit test review/usability review | 0.77d? | 2008-11-26 | 2008-11-26 | 368 | 174.23d |  | Pallavi [65%] | 4h |  |
| 370 | 1.3.46 | **Configure Measurements : Frequency damping** | 211.54d? | 2008-02-04 | 2008-11-25 |  | 170.46d |  |  | 60h | P4 |
| 371 | 1.3.46.1 | Design framework for Frequency dumping configuration | 2d? | 2008-02-04 | 2008-02-05 |  | 188.54d | 17.23d | RKB [50%] | 8h |  |
| 372 | 1.3.46.2 | Implement Framework for Temporary Measurement flow | 2.31d? | 2008-02-29 | 2008-03-04 | 371, 368 | 171.31d | 0d | Pallavi [65%] | 12h |  |
| 373 | 1.3.46.3 | Implement screen ( With Live Chart) | 1.54d? | 2008-03-04 | 2008-03-06 | 372 | 172.31d | 0d | Pallavi [65%] | 8h |  |
| 374 | 1.3.46.4 | Hooks the value change on screen with Temporary Measurement flow | 1.54d? | 2008-03-06 | 2008-03-07 | 373 | 172.31d | 0d | Pallavi [65%] | 8h |  |
| 375 | 1.3.46.5 | Display frequency dumping Value on Status bar | 1.54d | 2008-03-07 | 2008-03-11 | 374 | 172.31d | 0d | Pallavi [65%] | 8h |  |
| 376 | 1.3.46.6 | Unit test case | 1.54d? | 2008-03-11 | 2008-03-12 | 375 | 172.31d | 2.31d | Pallavi [65%] | 8h |  |
| 377 | 1.3.46.7 | Code Review/ Unit test case review/Design screen/ Screen usability reviews with Jan Ryles | 1.54d | 2008-11-24 | 2008-11-25 | 376 | 175.46d |  | Pallavi [65%] | 8h |  |

| ID | WBS | Task | Duration | Start | Finish | Predecessors | Total slack | Free slack | Resources | Work | Text1 |
| --- | --- | --- | --- | --- | --- | --- | --- | --- | --- | --- | --- |
| 378 | 1.3.47 | **Scope View Chart** | 154.71d? | 2008-02-12 | 2008-09-15 |  | 221.29d |  |  | 48h | P4 |
| 379 | 1.3.47.1 | Implement Chart View Object | 2.86d? | 2008-02-12 | 2008-02-14 |  | 221.29d | 0d | Anurag [70%] | 16h |  |
| 380 | 1.3.47.2 | Support multiple X-Axis Type ( Lin, Log) & Y-Axis scaling | 1.43d? | 2008-02-14 | 2008-02-18 | 379 | 221.29d | 0d | Anurag [70%] | 8h |  |
| 381 | 1.3.47.3 | Support multiple Data point units | 1.43d? | 2008-02-18 | 2008-02-19 | 380 | 221.29d | 0d | Anurag [70%] | 8h |  |
| 382 | 1.3.47.4 | Multiple channels support\Marker support | 0.71d? | 2008-02-26 | 2008-02-26 | 381 | 221.57d | 0d | Anurag [70%] | 4h |  |
| 383 | 1.3.47.5 | Unit test case | 1.43d? | 2008-02-27 | 2008-02-28 | 382 | 226.57d | 0.71d | Anurag [70%] | 8h |  |
| 384 | 1.3.47.6 | Code Review/ Unit test case review/Design screen/ Screen usability reviews with Jan Ryles | 0.71d? | 2008-09-15 | 2008-09-15 | 383 | 226.29d |  | Anurag [70%] | 4h |  |
| 385 | 1.3.48 | **CSV Data Writer** | 197.91d? | 2008-02-04 | 2008-11-05 |  | 184.09d |  |  | 32h | P4 |
| 386 | 1.3.48.1 | Design CSV Data Writer | 1d? | 2008-02-04 | 2008-02-04 |  | 184.86d | 0d | RKB [50%] | 4h |  |
| 387 | 1.3.48.2 | Implement Data Writer | 3.08d? | 2008-02-05 | 2008-02-08 | 386 | 189.09d | 0d | Ravi [65%] | 16h |  |
| 388 | 1.3.48.3 | unit testing | 1.54d? | 2008-02-08 | 2008-02-12 | 387 | 183.86d | 0d | Ravi [65%] | 8h |  |
| 389 | 1.3.48.4 | design review/unit test review | 0.77d? | 2008-11-05 | 2008-11-05 | 388 | 184.09d |  | Ravi [65%] | 4h |  |
| 390 | 1.3.49 | **CSV Data Reader** | 196.14d? | 2008-02-05 | 2008-11-05 |  | 184.86d |  |  | 32h | P4 |
| 391 | 1.3.49.1 | Design CSV Data Reader | 1d? | 2008-02-05 | 2008-02-05 | 386 | 194.47d | 4.62d | RKB [50%] | 4h |  |
| 392 | 1.3.49.2 | Implement Data Reader | 3.08d? | 2008-02-12 | 2008-02-15 | 391, 388 | 183.86d | 0d | Ravi [65%] | 16h |  |
| 393 | 1.3.49.3 | unit testing | 1.54d? | 2008-02-15 | 2008-02-19 | 392 | 184.86d | 0d | Ravi [65%] | 8h |  |
| 394 | 1.3.49.4 | design review/unit test review | 0.77d? | 2008-11-04 | 2008-11-05 | 393 | 184.86d |  | Ravi [65%] | 4h |  |
| 395 | 1.3.50 | **Configure Analyzer Source** | 5.38d? | 2008-02-19 | 2008-02-26 |  | 365.38d |  |  | 28h | P5 |
| 396 | 1.3.50.1 | Implementation | 3.85d? | 2008-02-19 | 2008-02-25 | 393 | 365.38d | 0d | Ravi [65%] | 20h |  |
| 397 | 1.3.50.2 | Unit Testing/Code Review | 1.54d? | 2008-02-25 | 2008-02-26 | 396 | 365.38d |  | Ravi [65%] | 8h |  |
| 398 | 1.3.51 | **Configure Measurements : Delay Time** | 166.24d? | 2008-02-04 | 2008-09-23 |  | 215.76d |  |  | 56h | P5 |
| 399 | 1.3.51.1 | Design framework for Delay time configuration | 2d? | 2008-02-04 | 2008-02-05 |  | 217.76d | 0d | RKB [50%] | 8h |  |
| 400 | 1.3.51.2 | Implement Framework for Temporary Measurement flow | 1.54d? | 2008-02-06 | 2008-02-07 | 399 | 223.31d | 0d | Pallavi [65%] | 8h |  |
| 401 | 1.3.51.3 | Implement screen ( With Live Chart) | 1.54d? | 2008-02-07 | 2008-02-12 | 400 | 217.76d | 0d | Pallavi [65%] | 8h |  |
| 402 | 1.3.51.4 | Hooks the value change on screen with Temporary Measurement flow | 1.54d? | 2008-02-12 | 2008-02-13 | 401 | 217.76d | 0d | Pallavi [65%] | 8h |  |
| 403 | 1.3.51.5 | Display Delay time Value on Status bar | 1.54d | 2008-02-13 | 2008-02-15 | 402 | 217.76d | 0d | Pallavi [65%] | 8h |  |
| 404 | 1.3.51.6 | Unit test case | 1.54d? | 2008-02-15 | 2008-02-18 | 403 | 217.76d | 0d | Pallavi [65%] | 8h |  |
| 405 | 1.3.51.7 | Code Review/ Unit test case review/Design screen/ Screen usability reviews with Jan Ryles | 1.54d | 2008-09-19 | 2008-09-23 | 404 | 215.76d |  | Pallavi [65%] | 8h |  |

| ID | WBS | Task | Duration | Start | Finish | Predecessors | Total slack | Free slack | Resources | Work | Text1 |
| --- | --- | --- | --- | --- | --- | --- | --- | --- | --- | --- | --- |
| 406 | 1.3.52 | **Configure Measurements : Maximum overshoot** | 159.54d? | 2008-02-06 | 2008-09-16 |  | 220.46d |  |  | 56h | P5 |
| 407 | 1.3.52.1 | Design framework for maximum overshoot configuration | 2d? | 2008-02-06 | 2008-02-07 | 399 | 228.14d | 0d | RKB [50%] | 8h |  |
| 408 | 1.3.52.2 | Implement Framework for Temporary Measurement flow | 1.54d? | 2008-02-18 | 2008-02-20 | 407, 404 | 219.84d | 0d | Pallavi [65%] | 8h |  |
| 409 | 1.3.52.3 | Implement screen | 1.54d? | 2008-02-20 | 2008-02-21 | 408 | 219.84d | 0d | Pallavi [65%] | 8h |  |
| 410 | 1.3.52.4 | Hooks the value change on screen with Temporary Measurement flow | 1.54d? | 2008-02-21 | 2008-02-25 | 409 | 220.84d | 0d | Pallavi [65%] | 8h |  |
| 411 | 1.3.52.5 | Display maximum overshoot Value on Status bar | 1.54d | 2008-02-25 | 2008-02-26 | 410 | 220.84d | 0d | Pallavi [65%] | 8h |  |
| 412 | 1.3.52.6 | Unit test case | 1.54d? | 2008-02-26 | 2008-02-28 | 411 | 220.84d | 0d | Pallavi [65%] | 8h |  |
| 413 | 1.3.52.7 | Code Review/ Unit test case review/Design screen/ Screen usability reviews with Jan Ryles | 1.54d | 2008-09-15 | 2008-09-16 | 412 | 225.46d |  | Pallavi [65%] | 8h |  |
| 414 | 1.3.53 | **Configure Measurements : Rise time** | 157.54d? | 2008-02-08 | 2008-09-16 |  | 220.46d |  |  | 56h | P5 |
| 415 | 1.3.53.1 | Design framework for Rise time configuration | 2d? | 2008-02-08 | 2008-02-12 | 407 | 228.14d | 0d | RKB [50%] | 8h |  |
| 416 | 1.3.53.2 | Implement Framework for Temporary Measurement flow | 1.54d? | 2008-02-28 | 2008-02-29 | 415, 412 | 220.84d | 0d | Pallavi [65%] | 8h |  |
| 417 | 1.3.53.3 | Implement screen | 1.54d? | 2008-02-29 | 2008-03-04 | 416 | 220.84d | 0d | Pallavi [65%] | 8h |  |
| 418 | 1.3.53.4 | Hooks the value change on screen with Temporary Measurement flow | 1.54d? | 2008-03-04 | 2008-03-06 | 417 | 220.84d | 0d | Pallavi [65%] | 8h |  |
| 419 | 1.3.53.5 | Display rise time Value on Status bar | 1.54d | 2008-03-06 | 2008-03-07 | 418 | 220.84d | 0d | Pallavi [65%] | 8h |  |
| 420 | 1.3.53.6 | Unit test case | 1.54d? | 2008-03-07 | 2008-03-11 | 419 | 220.84d | 0d | Pallavi [65%] | 8h |  |
| 421 | 1.3.53.7 | Code Review/ Unit test case review/Design screen/ Screen usability reviews with Jan Ryles | 1.54d | 2008-09-15 | 2008-09-16 | 420 | 225.46d |  | Pallavi [65%] | 8h |  |
| 422 | 1.3.54 | **Configure Measurements : Setting time** | 151.54d | 2008-02-13 | 2008-09-11 |  | 222.14d |  |  | 56h | P5 |
| 423 | 1.3.54.1 | Design screen for Setting time configuration | 2d | 2008-02-13 | 2008-02-14 | 415 | 228.14d | 11d | RKB [50%] | 8h |  |
| 424 | 1.3.54.2 | Implement Framework for Temporary Measurement flow | 1.54d | 2008-03-11 | 2008-03-12 | 423, 420 | 223.25d | 0d | Pallavi [65%] | 8h |  |
| 425 | 1.3.54.3 | Implement screen | 1.54d | 2008-03-12 | 2008-03-14 | 424 | 223.25d | 0d | Pallavi [65%] | 8h |  |
| 426 | 1.3.54.4 | Hooks the value change on screen with Temporary Measurement flow | 1.54d | 2008-03-14 | 2008-03-17 | 425 | 223.25d | 0d | Pallavi [65%] | 8h |  |
| 427 | 1.3.54.5 | Display setting time Value on Status bar | 1.54d | 2008-03-17 | 2008-03-19 | 426 | 223.25d | 0d | Pallavi [65%] | 8h |  |
| 428 | 1.3.54.6 | Unit test case | 1.54d | 2008-03-19 | 2008-03-20 | 427 | 223.25d | 0d | Pallavi [65%] | 8h |  |
| 429 | 1.3.54.7 | Code Review/ Unit test case review/Design screen/ Screen usability reviews with Jan Ryles | 1.54d | 2008-09-10 | 2008-09-11 | 428 | 228.46d |  | Pallavi [65%] | 8h |  |

| ID | WBS | Task | Duration | Start | Finish | Predecessors | Total slack | Free slack | Constraint | Resources | Work | Text1 |
| --- | --- | --- | --- | --- | --- | --- | --- | --- | --- | --- | --- | --- |
| 430 | 1.3.55 | **Configure Measurements : Decay Time** | 136.54d? | 2008-03-03 | 2008-09-09 |  | 211.14d |  |  |  | 59.43h | P5 |
| 431 | 1.3.55.1 | Design screen for decay time configuration | 2.86d? | 2008-03-03 | 2008-03-05 | 423 | 211.14d | 0d | start no earlier than 2008-03-03 | RKB [50%] | 11.43h |  |
| 432 | 1.3.55.2 | Implement Framework for Temporary Measurement flow | 1.54d? | 2008-03-20 | 2008-03-25 | 431, 428 | 226.92d | 0d |  | Pallavi [65%] | 8h |  |
| 433 | 1.3.55.3 | Implement screen | 1.54d? | 2008-03-25 | 2008-03-26 | 432 | 226.92d | 0d |  | Pallavi [65%] | 8h |  |
| 434 | 1.3.55.4 | Hooks the value change on screen with Temporary Measurement flow | 1.54d? | 2008-03-26 | 2008-03-28 | 433 | 226.92d | 0d |  | Pallavi [65%] | 8h |  |
| 435 | 1.3.55.5 | Display decay time Value on Status bar | 1.54d | 2008-03-28 | 2008-03-31 | 434 | 226.92d | 0d |  | Pallavi [65%] | 8h |  |
| 436 | 1.3.55.6 | Unit test case | 1.54d? | 2008-03-31 | 2008-04-02 | 435 | 226.92d | 0d |  | Pallavi [65%] | 8h |  |
| 437 | 1.3.55.7 | Code Review/ Unit test case review/Design screen/ Screen usability reviews with Jan Ryles | 1.54d | 2008-09-08 | 2008-09-09 | 436 | 230.46d |  |  | Pallavi [65%] | 8h |  |
| 438 | 1.3.56 | **Configure Measurements : Pulse width** | 133.68d? | 2008-03-05 | 2008-09-09 |  | 212.14d |  |  |  | 56h | P5 |
| 439 | 1.3.56.1 | Design screen for pulse width configuration | 2d? | 2008-03-05 | 2008-03-07 | 431 | 217.14d | 0d |  | RKB [50%] | 8h |  |
| 440 | 1.3.56.2 | Implement Framework for Temporary Measurement flow | 1.54d? | 2008-04-02 | 2008-04-04 | 439, 436 | 227.34d | 0d |  | Pallavi [65%] | 8h |  |
| 441 | 1.3.56.3 | Implement screen | 1.54d? | 2008-04-04 | 2008-04-07 | 440 | 227.34d | 0d |  | Pallavi [65%] | 8h |  |
| 442 | 1.3.56.4 | Hooks the value change on screen with Temporary Measurement flow | 1.54d? | 2008-04-07 | 2008-04-09 | 441 | 227.34d | 0d |  | Pallavi [65%] | 8h |  |
| 443 | 1.3.56.5 | Display pulse width Value on Status bar | 1.54d | 2008-04-09 | 2008-04-10 | 442 | 227.34d | 0d |  | Pallavi [65%] | 8h |  |
| 444 | 1.3.56.6 | Unit test case | 1.54d? | 2008-04-10 | 2008-04-15 | 443 | 226.34d | 0d |  | Pallavi [65%] | 8h |  |
| 445 | 1.3.56.7 | Code Review/ Unit test case review/Design screen/ Screen usability reviews with Jan Ryles | 1.54d | 2008-09-08 | 2008-09-09 | 444 | 230.46d |  |  | Pallavi [65%] | 8h |  |
| 446 | 1.3.57 | **Configure Measurements : Voltage Max** | 130.18d? | 2008-03-07 | 2008-09-08 |  | 212.14d |  |  |  | 56h | P5 |
| 447 | 1.3.57.1 | Design screen for voltage max configuration | 2d? | 2008-03-07 | 2008-03-11 | 439 | 217.14d | 0d |  | RKB [50%] | 8h |  |
| 448 | 1.3.57.2 | Implement Framework for Temporary Measurement flow | 1.54d? | 2008-04-15 | 2008-04-16 | 447, 444 | 227.87d | 0d |  | Pallavi [65%] | 8h |  |
| 449 | 1.3.57.3 | Implement screen | 1.54d? | 2008-04-16 | 2008-04-21 | 448 | 226.87d | 0d |  | Pallavi [65%] | 8h |  |
| 450 | 1.3.57.4 | Hooks the value change on screen with Temporary Measurement flow | 1.54d? | 2008-04-21 | 2008-04-22 | 449 | 226.87d | 0d |  | Pallavi [65%] | 8h |  |
| 451 | 1.3.57.5 | Display voltage max value on Status bar | 1.54d | 2008-04-22 | 2008-04-24 | 450 | 226.87d | 0d |  | Pallavi [65%] | 8h |  |
| 452 | 1.3.57.6 | Unit test case | 1.54d? | 2008-04-24 | 2008-04-25 | 451 | 226.87d | 0d |  | Pallavi [65%] | 8h |  |
| 453 | 1.3.57.7 | Code Review/ Unit test case review/Design screen/ Screen usability reviews with Jan Ryles | 1.54d | 2008-09-04 | 2008-09-08 | 452 | 231.96d |  |  | Pallavi [65%] | 8h |  |

| ID | WBS | Task | Duration | Start | Finish | Predecessors | Total slack | Free slack | Resources | Work | Text1 |
| --- | --- | --- | --- | --- | --- | --- | --- | --- | --- | --- | --- |
| 454 | 1.3.58 | **Configure Measurements : Voltage Min** | 126.61d? | 2008-03-11 | 2008-09-04 |  | 212.14d |  |  | 56h | P5 |
| 455 | 1.3.58.1 | Design screen for voltage max configuration | 2d? | 2008-03-11 | 2008-03-13 | 447 | 212.14d | 0d | RKB [50%] | 8h |  |
| 456 | 1.3.58.2 | Implement Framework for Temporary Measurement flow | 1.54d? | 2008-04-25 | 2008-04-29 | 455, 452 | 230.07d | 0d | Pallavi [65%] | 8h |  |
| 457 | 1.3.58.3 | Implement screen | 1.54d? | 2008-04-29 | 2008-04-30 | 456 | 230.07d | 0d | Pallavi [65%] | 8h |  |
| 458 | 1.3.58.4 | Hooks the value change on screen with Temporary Measurement flow | 1.54d? | 2008-04-30 | 2008-05-05 | 457 | 229.07d | 0d | Pallavi [65%] | 8h |  |
| 459 | 1.3.58.5 | Display voltage min value on Status bar | 1.54d | 2008-05-05 | 2008-05-07 | 458 | 229.07d | 0d | Pallavi [65%] | 8h |  |
| 460 | 1.3.58.6 | Unit test case | 1.54d? | 2008-05-07 | 2008-05-08 | 459 | 229.07d | 0d | Pallavi [65%] | 8h |  |
| 461 | 1.3.58.7 | Code Review/ Unit test case review/Design screen/ Screen usability reviews with Jan Ryles | 1.54d | 2008-09-01 | 2008-09-04 | 460 | 228.53d |  | Pallavi [65%] | 8h |  |
| 462 | 1.3.59 | **Orbit Chart** | 141.71d? | 2008-03-03 | 2008-09-16 |  | 220.29d |  |  | 44h | P5 |
| 463 | 1.3.59.1 | Implement Chart View Object | 2.14d? | 2008-03-03 | 2008-03-05 | 383 | 229.14d | 0d | Anurag [70%] | 12h |  |
| 464 | 1.3.59.2 | Support multiple X-Axis Type ( Lin, Log) & Y-Axis scaling | 1.43d? | 2008-03-06 | 2008-03-07 | 463 | 224.14d | 0.07d | Anurag [70%] | 8h |  |
| 465 | 1.3.59.3 | Support multiple Data point units | 1.43d? | 2008-03-13 | 2008-03-14 | 464 | 227.07d | 0d | Anurag [70%] | 8h |  |
| 466 | 1.3.59.4 | Multiple channels support\Marker support | 0.71d? | 2008-03-14 | 2008-03-17 | 465 | 222.07d | 1.5d | Anurag [70%] | 4h |  |
| 467 | 1.3.59.5 | Unit test case | 1.43d? | 2008-03-24 | 2008-03-25 | 466 | 225.57d | 0.14d | Anurag [70%] | 8h |  |
| 468 | 1.3.59.6 | Code Review/ Unit test case review/Design screen/ Screen usability reviews with Jan Ryles | 0.71d? | 2008-09-16 | 2008-09-16 | 467 | 225.29d |  | Anurag [70%] | 4h |  |
| 469 | 1.3.60 | **Common Marker Development** | 125.36d? | 2008-03-27 | 2008-09-18 |  | 218.64d |  |  | 112h | P5 |
| 470 | 1.3.60.1 | Design Marker Framework | 2.14d? | 2008-03-27 | 2008-03-31 | 467 | 228.43d | 0d | Anurag [70%] | 12h |  |
| 471 | 1.3.60.2 | Implementation | 4.29d? | 2008-04-04 | 2008-04-10 | 470 | 221.43d | 1.29d | Anurag [70%] | 24h |  |
| 472 | 1.3.60.3 | Support Different shape | 0.71d? | 2008-04-15 | 2008-04-15 | 471 | 225.57d | 3.29d | Anurag [70%] | 4h |  |
| 473 | 1.3.60.4 | Support XY Marker | 1.43d? | 2008-04-21 | 2008-04-22 | 472 | 224.71d | 0d | Anurag [70%] | 8h |  |
| 474 | 1.3.60.5 | Support Marker Format Phase | 1.43d? | 2008-04-23 | 2008-04-25 | 473 | 219.71d | 0.29d | Anurag [70%] | 8h |  |
| 475 | 1.3.60.6 | Support Marker Format Magnitude | 1.43d? | 2008-04-29 | 2008-04-30 | 474 | 224.57d | 0.14d | Anurag [70%] | 8h |  |
| 476 | 1.3.60.7 | Support Marker Format DB | 1.43d? | 2008-05-02 | 2008-05-05 | 475 | 224.57d | 2.14d | Anurag [70%] | 8h |  |
| 477 | 1.3.60.8 | Support Peak Trace Marker | 1.43d? | 2008-05-12 | 2008-05-13 | 476 | 223.57d | 0d | Anurag [70%] | 8h |  |
| 478 | 1.3.60.9 | Support Next Peak | 1.43d? | 2008-05-14 | 2008-05-16 | 477 | 217.98d | 0.84d | Anurag [70%] | 8h |  |
| 479 | 1.3.60.10 | Support Next Largest Peak | 1.43d? | 2008-05-19 | 2008-05-20 | 478 | 223.57d | 0d | Anurag [70%] | 8h |  |
| 480 | 1.3.60.11 | Code Review/ Unit test case review/Design screen/ Screen usability reviews with Jan Ryles | 2.86d? | 2008-09-15 | 2008-09-18 | 479 | 223.64d |  | Anurag [70%] | 16h |  |

| ID | WBS | Task | Duration | Start | Finish | Predecessors | Total slack | Free slack | Resources | Work | Text1 |
| --- | --- | --- | --- | --- | --- | --- | --- | --- | --- | --- | --- |
| 481 | 1.3.61 | **Screen Capture** | 15.37d? | 2008-03-13 | 2008-04-04 |  | 212.14d |  |  | 48h | P5 |
| 482 | 1.3.61.1 | Design | 4d? | 2008-03-13 | 2008-03-19 | 455 | 212.14d | 0d | RKB [50%] | 16h |  |
| 483 | 1.3.61.2 | Implementation for JPEG format | 3.08d? | 2008-03-24 | 2008-03-27 | 482 | 219d | 0d | Ravi [65%] | 16h |  |
| 484 | 1.3.61.3 | Implementation for BMP File format | 3.08d? | 2008-04-01 | 2008-04-04 | 483 | 214d | 0d | Ravi [65%] | 16h |  |
| 485 | 1.3.62 | **Menu Map** | 28.84d? | 2008-03-19 | 2008-04-29 |  | 213.15d |  |  | 64h | P5 |
| 486 | 1.3.62.1 | Design | 4d? | 2008-03-19 | 2008-03-26 | 482 | 220.37d | 0d | RKB [50%] | 16h |  |
| 487 | 1.3.62.2 | Implement Traversing mechanism ( hook with FP events) | 6.15d? | 2008-04-08 | 2008-04-17 | 484, 486 | 213d | 0d | Ravi [65%] | 32h |  |
| 488 | 1.3.62.3 | Print Menu Map | 3.08d? | 2008-04-24 | 2008-04-29 | 487 | 213.15d | 0d | Ravi [65%] | 16h |  |
| 489 | 1.3.63 | **HDF5 Data Writer** | 129.41d? | 2008-03-26 | 2008-09-24 |  | 214.73d |  |  | 88h | P5 |
| 490 | 1.3.63.1 | Design HDF5 Data Writer | 5d? | 2008-03-26 | 2008-04-02 | 486 | 229.14d | 0d | RKB [50%] | 20h |  |
| 491 | 1.3.63.2 | Implement Data Writer | 3.08d? | 2008-04-29 | 2008-05-05 | 490, 488 | 212.15d | 0d | Ravi [65%] | 16h |  |
| 492 | 1.3.63.3 | unit testing | 3.08d? | 2008-05-05 | 2008-05-08 | 491 | 212.15d | 0d | Ravi [65%] | 16h |  |
| 493 | 1.3.63.4 | MathLab Compatbility test | 6.15d? | 2008-05-26 | 2008-06-03 | 492 | 214.69d | 0d | Ravi [65%] | 32h |  |
| 494 | 1.3.63.5 | design review/unit test review | 0.77d? | 2008-09-23 | 2008-09-24 | 493 | 219.73d |  | Ravi [65%] | 4h |  |
| 495 | 1.3.64 | **HDF5 Data Reader** | 122.68d? | 2008-04-02 | 2008-09-22 |  | 216.46d |  |  | 52h | P5 |
| 496 | 1.3.64.1 | Design HDF5 Data Reader | 1d? | 2008-04-02 | 2008-04-03 | 490 | 229.14d | 0d | RKB [50%] | 4h |  |
| 497 | 1.3.64.2 | Implement Data Reader | 3.08d? | 2008-06-03 | 2008-06-06 | 496, 493 | 216.46d | 0d | Ravi [65%] | 16h |  |
| 498 | 1.3.64.3 | unit testing | 1.54d? | 2008-06-06 | 2008-06-09 | 497 | 216.46d | 0d | Ravi [65%] | 8h |  |
| 499 | 1.3.64.4 | Corrupt file handling | 3.08d? | 2008-06-09 | 2008-06-12 | 498 | 216.46d | 0d | Ravi [65%] | 16h |  |
| 500 | 1.3.64.5 | design review/unit test review | 1.54d? | 2008-09-18 | 2008-09-22 | 499 | 216.46d |  | Ravi [65%] | 8h |  |
| 501 | 1.3.65 | **Configure Measurements : Gain & Phase margin** | 110.07d? | 2008-04-03 | 2008-09-04 |  | 228.07d |  |  | 60h | p6 |
| 502 | 1.3.65.1 | Design screen for band power configuration | 2d? | 2008-04-03 | 2008-04-07 | 496 | 229.14d | 0d | RKB [50%] | 8h |  |
| 503 | 1.3.65.2 | Implement Framework for Temporary Measurement flow | 2.31d? | 2008-05-08 | 2008-05-12 | 502, 460 | 229.07d | 0d | Pallavi [65%] | 12h |  |
| 504 | 1.3.65.3 | Implement screen ( With Live Chart) | 1.54d? | 2008-05-12 | 2008-05-14 | 503 | 229.07d | 0d | Pallavi [65%] | 8h |  |
| 505 | 1.3.65.4 | Hooks the value change on screen with Temporary Measurement flow | 1.54d? | 2008-05-14 | 2008-05-15 | 504 | 229.07d | 0d | Pallavi [65%] | 8h |  |
| 506 | 1.3.65.5 | Display band power Measurement Value on Status bar | 1.54d | 2008-05-15 | 2008-05-19 | 505 | 229.07d | 0d | Pallavi [65%] | 8h |  |
| 507 | 1.3.65.6 | Unit test case | 1.54d? | 2008-05-19 | 2008-05-21 | 506 | 229.07d | 0d | Pallavi [65%] | 8h |  |
| 508 | 1.3.65.7 | Code Review/ Unit test case review/Design screen/ Screen usability reviews with Jan Ryles | 1.54d | 2008-09-02 | 2008-09-04 | 507 | 228.07d |  | Pallavi [65%] | 8h |  |

| ID | WBS | Task | Duration | Start | Finish | Predecessors | Total slack | Free slack | Resources | Work | Text1 |
| --- | --- | --- | --- | --- | --- | --- | --- | --- | --- | --- | --- |
| 509 | 1.3.66 | **Configure Analyzer Type: Swept Sine** | 118.14d? | 2008-04-07 | 2008-09-18 |  | 218d |  |  | 36h | P6 |
| 510 | 1.3.66.1 | Design | 2d? | 2008-04-07 | 2008-04-09 | 502 | 229.14d | 0d | RKB [50%] | 8h |  |
| 511 | 1.3.66.2 | Implementation | 3.85d? | 2008-06-12 | 2008-06-18 | 499, 510 | 218d | 0d | Ravi [65%] | 20h |  |
| 512 | 1.3.66.3 | Unit Testing/Code Review | 1.54d? | 2008-09-17 | 2008-09-18 | 511 | 218d |  | Ravi [65%] | 8h |  |
| 513 | 1.3.67 | **LAN Configuration** | 120.92d? | 2008-02-04 | 2008-07-21 |  | 261.08d |  |  | 60h | P6 |
| 514 | 1.3.67.1 | Design | 3d? | 2008-04-09 | 2008-04-15 | 510 | 228.14d | 0d | RKB [50%] | 12h |  |
| 515 | 1.3.67.2 | Implementation | 4.62d? | 2008-07-10 | 2008-07-16 | 514, 511 | 219.08d | 0d | Ravi [65%] | 24h |  |
| 516 | 1.3.67.3 | Unit test case for Changing configuration | 3.08d? | 2008-07-16 | 2008-07-21 | 515 | 219.08d | 0d | Ravi [65%] | 16h |  |
| 517 | 1.3.67.4 | Unit Testing review/Code Review | 1.54d? | 2008-02-04 | 2008-02-05 |  | 380.46d |  | Ravi [65%] | 8h |  |
| 518 | 1.3.68 | **Display System Information** | 136.31d? | 2008-02-05 | 2008-08-13 |  | 244.15d |  |  | 60h | P6 |
| 519 | 1.3.68.1 | Design System information | 3d? | 2008-04-15 | 2008-04-21 | 514 | 232.14d | 0d | RKB [50%] | 12h |  |
| 520 | 1.3.68.2 | Implementation | 4.62d? | 2008-07-30 | 2008-08-05 | 519, 516 | 219.46d | 0d | Ravi [65%] | 24h |  |
| 521 | 1.3.68.3 | Unit test case | 3.08d? | 2008-08-08 | 2008-08-13 | 520 | 219.46d | 0d | Ravi [65%] | 16h |  |
| 522 | 1.3.68.4 | Unit Testing review/Code Review | 1.54d? | 2008-02-05 | 2008-02-07 |  | 378.92d |  | Ravi [65%] | 8h |  |
| 523 | 1.3.69 | **Display Hardware information** | 167.77d? | 2008-02-07 | 2008-09-29 |  | 211.15d |  |  | 40h | P6 |
| 524 | 1.3.69.1 | design for Hardware information | 2d? | 2008-04-21 | 2008-04-23 | 519 | 227.14d | 0d | RKB [50%] | 8h |  |
| 525 | 1.3.69.2 | Implementation | 3.08d? | 2008-08-18 | 2008-08-21 | 524, 521 | 219.46d | 0d | Ravi [65%] | 16h |  |
| 526 | 1.3.69.3 | Unit Test cases | 1.54d? | 2008-08-21 | 2008-08-25 | 525 | 219.46d | 0d | Ravi [65%] | 8h |  |
| 527 | 1.3.69.4 | Unit Testing review/Code Review | 1.54d? | 2008-02-07 | 2008-09-29 |  | 211.15d |  | Ravi [65%] | 8h |  |
| 528 | 1.3.70 | **Software Licensing** | 103.46d? | 2008-02-05 | 2008-06-30 |  | 277d |  |  | 128h | P6 |
| 529 | 1.3.70.1 | design | 4d? | 2008-04-23 | 2008-04-29 | 524 | 227.14d | 0d | RKB [50%] | 16h |  |
| 530 | 1.3.70.2 | Implementation for Display License | 3.08d? | 2008-05-21 | 2008-05-26 | 507, 529 | 233.38d | 0d | Pallavi [65%] | 16h |  |
| 531 | 1.3.70.3 | Implementation for License Activation | 3.08d? | 2008-05-26 | 2008-05-29 | 530 | 233.38d | 0d | Pallavi [65%] | 16h |  |
| 532 | 1.3.70.4 | Implementation for License De-Activation | 3.08d? | 2008-05-29 | 2008-06-03 | 531 | 233.38d | 0d | Pallavi [65%] | 16h |  |
| 533 | 1.3.70.5 | Integrate Mirage Lic framework with CDF Licensing Capability | 4.62d? | 2008-06-03 | 2008-06-09 | 532 | 233.38d | 0d | Pallavi [65%] | 24h |  |
| 534 | 1.3.70.6 | Unit test case for Lic verification (GUI, Measurement, SCPI etc) | 6.15d? | 2008-06-09 | 2008-06-30 | 533 | 225.38d | 0d | Pallavi [65%] | 32h |  |
| 535 | 1.3.70.7 | Unit Testing review/Code Review | 1.54d? | 2008-02-05 | 2008-02-07 |  | 378.92d |  | Pallavi [65%] | 8h |  |

| ID | WBS | Task | Duration | Start | Finish | Predecessors | Total slack | Free slack | Resources | Work | Text1 |
| --- | --- | --- | --- | --- | --- | --- | --- | --- | --- | --- | --- |
| 536 | 1.3.71 | **Self Test** | 94.68d? | 2008-04-29 | 2008-09-09 |  | 225.46d |  |  | 40h | P6 |
| 537 | 1.3.71.1 | design | 2d? | 2008-04-29 | 2008-05-02 | 529 | 226.14d | 0d | RKB [50%] | 8h |  |
| 538 | 1.3.71.2 | Implementation | 3.08d? | 2008-06-30 | 2008-07-03 | 537, 534 | 225.38d | 0d | Pallavi [65%] | 16h |  |
| 539 | 1.3.71.3 | Unit testing | 1.54d? | 2008-07-03 | 2008-07-04 | 538 | 225.38d | 0d | Pallavi [65%] | 8h |  |
| 540 | 1.3.71.4 | Unit Testing review/Code Review | 1.54d? | 2008-09-08 | 2008-09-09 | 539 | 230.46d |  | Pallavi [65%] | 8h |  |
| 541 | 1.3.72 | **Calibration** | 90.99d? | 2008-05-02 | 2008-09-08 |  | 226.14d |  |  | 40h | P6 |
| 542 | 1.3.72.1 | design | 2d? | 2008-05-02 | 2008-05-06 | 537 | 226.14d | 0d | RKB [50%] | 8h |  |
| 543 | 1.3.72.2 | Auto Calibration | 3.08d? | 2008-07-04 | 2008-07-09 | 539, 542 | 226.15d | 0d | Pallavi [65%] | 16h |  |
| 544 | 1.3.72.3 | Calibrate once | 1.54d? | 2008-07-09 | 2008-07-11 | 543 | 226.15d | 0d | Pallavi [65%] | 8h |  |
| 545 | 1.3.72.4 | Unit Testing review/Code Review | 1.54d? | 2008-09-05 | 2008-09-08 | 544 | 226.15d |  | Pallavi [65%] | 8h |  |
| 546 | 1.3.73 | **User Preference** | 87.68d? | 2008-05-06 | 2008-09-05 |  | 226.14d |  |  | 80h | P6 |
| 547 | 1.3.73.1 | design | 2d? | 2008-05-06 | 2008-05-08 | 542 | 226.14d | 0d | RKB [50%] | 8h |  |
| 548 | 1.3.73.2 | Warning Beap | 1.54d? | 2008-07-11 | 2008-07-14 | 544, 547 | 228.46d | 0d | Pallavi [65%] | 8h |  |
| 549 | 1.3.73.3 | Front Panel lock out | 1.54d? | 2008-07-14 | 2008-07-16 | 548 | 228.46d | 0d | Pallavi [65%] | 8h |  |
| 550 | 1.3.73.4 | Date/Time Format | 1.54d? | 2008-07-16 | 2008-07-17 | 549 | 228.46d | 0d | Pallavi [65%] | 8h |  |
| 551 | 1.3.73.5 | Color Schema | 3.08d? | 2008-07-17 | 2008-07-22 | 550 | 228.46d | 0d | Pallavi [65%] | 16h |  |
| 552 | 1.3.73.6 | Power ON & Preset State | 4.62d? | 2008-07-22 | 2008-07-29 | 551 | 228.46d | 0d | Pallavi [65%] | 24h |  |
| 553 | 1.3.73.7 | Unit Testing review/Code Review | 1.54d? | 2008-09-04 | 2008-09-05 | 552 | 232.46d |  | Pallavi [65%] | 8h |  |
| 554 | 1.3.74 | **Normal Variance Chart** | 82.86d? | 2008-05-23 | 2008-09-17 |  | 216.71d |  |  | 40h | P6 |
| 555 | 1.3.74.1 | Implement Chart View Object | 1.43d? | 2008-05-23 | 2008-05-27 | 479 | 216.71d | 0.71d | Anurag [70%] | 8h |  |
| 556 | 1.3.74.2 | Support multiple X-Axis Type ( Lin, Log) & Y-Axis scaling | 1.43d? | 2008-05-28 | 2008-05-29 | 555 | 221.71d | 0.57d | Anurag [70%] | 8h |  |
| 557 | 1.3.74.3 | Support multiple Data point units | 1.43d? | 2008-06-02 | 2008-06-03 | 556 | 223.57d | 0d | Anurag [70%] | 8h |  |
| 558 | 1.3.74.4 | Multiple channels support\Marker support | 0.71d? | 2008-06-04 | 2008-06-05 | 557 | 217.57d | 0.43d | Anurag [70%] | 4h |  |
| 559 | 1.3.74.5 | Unit test case | 1.43d? | 2008-06-09 | 2008-06-10 | 558 | 224.57d | 0d | Anurag [70%] | 8h |  |
| 560 | 1.3.74.6 | Code Review/ Unit test case review/Design screen/ Screen usability reviews with Jan Ryles | 0.71d? | 2008-09-16 | 2008-09-17 | 559 | 219.29d |  | Anurag [70%] | 4h |  |

| ID | WBS | Task | Duration | Start | Finish | Predecessors | Total slack | Free slack | Resources | Work | Text1 |
| --- | --- | --- | --- | --- | --- | --- | --- | --- | --- | --- | --- |
| 561 | 1.3.75 | **Backward comptability** | 68.71d? | 2008-06-11 | 2008-09-15 |  | 221.29d |  |  | 56h | P6 |
| 562 | 1.3.75.1 | SDF Data Reader | 1.43d? | 2008-06-11 | 2008-06-12 | 559 | 226.57d | 0d | Anurag [70%] | 8h |  |
| 563 | 1.3.75.2 | Design SDF Data Reader | 2.86d? | 2008-06-17 | 2008-06-20 | 562 | 221.71d | 0d | Anurag [70%] | 16h |  |
| 564 | 1.3.75.3 | Implement Data Reader | 2.14d? | 2008-06-20 | 2008-06-24 | 563 | 221.71d | 0.05d | Anurag [70%] | 12h |  |
| 565 | 1.3.75.4 | unit testing | 2.86d? | 2008-06-30 | 2008-07-03 | 564 | 226.64d | 0d | Anurag [70%] | 16h |  |
| 566 | 1.3.75.5 | design review/unit test review | 0.71d? | 2008-09-15 | 2008-09-15 | 565 | 226.29d |  | Anurag [70%] | 4h |  |
| 567 | 1.3.76 | **Refactor at Swept sine mode** | 18d? | 2008-05-08 | 2008-06-03 |  | 226.14d |  |  | 72h | P6 |
| 568 | 1.3.76.1 | GUI | 6d? | 2008-05-08 | 2008-05-16 | 547 | 226.14d | 0d | RKB [50%] | 24h |  |
| 569 | 1.3.76.2 | Automation Interface | 6d? | 2008-05-16 | 2008-05-26 | 568 | 226.14d | 0d | RKB [50%] | 24h |  |
| 570 | 1.3.76.3 | Analysis and Measurement Layer | 6d? | 2008-05-26 | 2008-06-03 | 569 | 226.14d | 0d | RKB [50%] | 24h |  |
| 571 | 1.3.77 | **Configure Analyzer Type: Octave** | 69.53d? | 2008-06-03 | 2008-09-09 |  | 225.62d |  |  | 36h | P7 |
| 572 | 1.3.77.1 | Design | 2d? | 2008-06-03 | 2008-06-05 | 570 | 226.14d | 0d | RKB [50%] | 8h |  |
| 573 | 1.3.77.2 | Implementation | 3.85d? | 2008-09-01 | 2008-09-05 | 572 | 230.62d | 0d | Pallavi [65%] | 20h |  |
| 574 | 1.3.77.3 | Unit Testing/Code Review | 1.54d? | 2008-09-05 | 2008-09-09 | 573 | 225.62d |  | Pallavi [65%] | 8h |  |
| 575 | 1.3.78 | **Configure Math Analysis** | 71.21d? | 2008-06-05 | 2008-09-15 |  | 221.93d |  |  | 64h | P7 |
| 576 | 1.3.78.1 | Design | 2d? | 2008-06-05 | 2008-06-09 | 572 | 239.43d | 0d | RKB [50%] | 8h |  |
| 577 | 1.3.78.2 | Implement Framework for Temporary Measurement flow to display Complex conjugate result | 2.86d? | 2008-07-07 | 2008-07-10 | 576, 565 | 223.93d | 0d | Anurag [70%] | 16h |  |
| 578 | 1.3.78.3 | Implement screen | 2.14d? | 2008-07-15 | 2008-07-17 | 577 | 223.93d | 0d | Anurag [70%] | 12h |  |
| 579 | 1.3.78.4 | Hooks the value change on screen with Temporary Measurement flow | 2.14d? | 2008-07-22 | 2008-07-24 | 578 | 223.93d | 0d | Anurag [70%] | 12h |  |
| 580 | 1.3.78.5 | Unit test case | 1.43d? | 2008-07-24 | 2008-07-28 | 579 | 223.93d | 0d | Anurag [70%] | 8h |  |
| 581 | 1.3.78.6 | Code Review/ Unit test case review/Design screen/ Screen usability reviews with Jan Ryles | 1.43d | 2008-09-11 | 2008-09-15 | 580 | 221.93d |  | Anurag [70%] | 8h |  |
| 582 | 1.3.79 | **Configure Limit line Analysis** | 46.45d? | 2008-06-09 | 2008-08-13 |  | 244.69d |  |  | 64h | P7 |
| 583 | 1.3.79.1 | Design | 2d? | 2008-06-09 | 2008-06-11 | 576 | 255.14d | 0d | RKB [50%] | 8h |  |
| 584 | 1.3.79.2 | Implement Framework for Temporary Measurement flow to display Complex conjugate result | 3.08d? | 2008-07-29 | 2008-08-01 | 583, 552 | 234.15d | 0d | Pallavi [65%] | 16h |  |
| 585 | 1.3.79.3 | Implement screen | 2.31d? | 2008-08-01 | 2008-08-05 | 584 | 234.15d | 0d | Pallavi [65%] | 12h |  |
| 586 | 1.3.79.4 | Hooks the value change on screen with Temporary Measurement flow | 2.31d? | 2008-08-05 | 2008-08-08 | 585 | 234.15d | 0d | Pallavi [65%] | 12h |  |
| 587 | 1.3.79.5 | Unit test case | 1.54d? | 2008-08-08 | 2008-08-11 | 586 | 234.15d | 0d | Pallavi [65%] | 8h |  |
| 588 | 1.3.79.6 | Code Review/ Unit test case review/Design screen/ Screen usability reviews with Jan Ryles | 1.54d | 2008-08-11 | 2008-08-13 | 587 | 244.69d |  | Pallavi [65%] | 8h |  |

| ID | WBS | Task | Duration | Start | Finish | Predecessors | Complete | Remaining | Total slack | Free slack | Constraint | Resources | Work | Actual work | Text1 |
| --- | --- | --- | --- | --- | --- | --- | --- | --- | --- | --- | --- | --- | --- | --- | --- |
| 589 | 1.3.80 | **Configure Complex Conjugate** | 66.57d? | 2008-06-11 | 2008-09-12 |  |  |  | 222.57d |  |  |  | 64h |  | P7 |
| 590 | 1.3.80.1 | Design | 2d? | 2008-06-11 | 2008-06-13 | 583 |  |  | 255.14d | 0d |  | RKB [50%] | 8h |  |  |
| 591 | 1.3.80.2 | Implement Framework for Temporary Measurement flow to display Complex conjugate result | 2.86d? | 2008-08-04 | 2008-08-06 | 590, 580 |  |  | 227d | 0d |  | Anurag [70%] | 16h |  |  |
| 592 | 1.3.80.3 | Implement screen | 2.14d? | 2008-08-06 | 2008-08-08 | 591 |  |  | 222d | 0.29d |  | Anurag [70%] | 12h |  |  |
| 593 | 1.3.80.4 | Hooks the value change on screen with Temporary Measurement flow | 2.14d? | 2008-08-19 | 2008-08-21 | 592 |  |  | 226.86d | 0.43d |  | Anurag [70%] | 12h |  |  |
| 594 | 1.3.80.5 | Unit test case | 1.43d? | 2008-08-25 | 2008-08-26 | 593 |  |  | 228.57d | 0.14d |  | Anurag [70%] | 8h |  |  |
| 595 | 1.3.80.6 | Code Review/ Unit test case review/Design screen/ Screen usability reviews with Jan Ryles | 1.43d | 2008-09-11 | 2008-09-12 | 594 |  |  | 227.57d |  |  | Anurag [70%] | 8h |  |  |
| 596 | 1.3.81 | **Software Version Display / Install update** | 253.3d? | 2008-06-13 | 2009-06-04 |  |  |  | 33.84d |  |  |  | 64h |  | P7 |
| 597 | 1.3.81.1 | Design | 2d? | 2008-06-13 | 2008-06-17 | 590 |  |  | 268.14d | 48.68d |  | RKB [50%] | 8h |  |  |
| 598 | 1.3.81.2 | Design screen for Installing software update | 2.31d? | 2008-09-01 | 2008-09-04 | 597, 526 |  |  | 218.41d | 0d |  | Ravi [65%] | 12h |  |  |
| 599 | 1.3.81.3 | Implemenation ( Display Software version) | 2.31d? | 2008-09-09 | 2008-09-11 | 598 |  |  | 218.41d | 0d |  | Ravi [65%] | 12h |  |  |
| 600 | 1.3.81.4 | Implementation ( Install updates) | 2.31d? | 2008-09-11 | 2008-09-16 | 599 |  |  | 218.41d | 0d |  | Ravi [65%] | 12h |  |  |
| 601 | 1.3.81.5 | Unit test case | 2.31d? | 2008-09-16 | 2008-09-18 | 600 |  |  | 218.41d |  |  | Ravi [65%] | 12h |  |  |
| 602 | 1.3.81.6 | Code Review/ Unit test case review/Design screen/ Screen usability reviews with Jan Ryles | 1.54d | 2009-06-02 | 2009-06-04 |  |  |  | 33.84d |  |  | Ravi [65%] | 8h |  |  |
| 603 | 1.3.82 | **Help** | 16.49d? | 2008-08-14 | 2008-09-05 |  |  |  | 227.51d |  |  |  | 48h |  | P8 |
| 604 | 1.3.82.1 | Access online manual help & Display version | 2.31d? | 2008-08-14 | 2008-08-19 | 552 |  |  | 233.62d | 0d |  | Pallavi [65%] | 12h |  |  |
| 605 | 1.3.82.2 | Installed localized help file | 1.54d? | 2008-08-19 | 2008-08-20 | 604, 587 |  |  | 228.62d | 0d |  | Pallavi [65%] | 8h |  |  |
| 606 | 1.3.82.3 | Print Help in different format | 1.54d? | 2008-08-20 | 2008-08-22 | 605 |  |  | 228.62d | 0d |  | Pallavi [65%] | 8h |  |  |
| 607 | 1.3.82.4 | Link each help button with its page | 3.85d? | 2008-08-29 | 2008-09-05 | 606 |  |  | 227.51d |  |  | Pallavi [65%] | 20h |  |  |
| 608 | 1.4 | **Analysis Measurement Layer** | 289.02d? | 2008-02-04 A | 2009-03-13 |  | 34% | 192.09d? | 97.98d |  |  |  | 2318.64h | 643.31h |  |
| 609 | 1.4.1 | **Error & Exception** | 2.86d? | 2008-02-18 A | 2008-02-20 A |  | 100% |  |  |  |  |  | 16h | 16h | P1 |
| 610 | 1.4.1.1 | Define Error code for AL | 1.43d? | 2008-02-18 A | 2008-02-19 A |  | 100% |  |  |  | start no earlier than 2008-02-18 | Himanshu [70%] | 8h | 8h |  |
| 611 | 1.4.1.2 | Provide Error code Vs Description string | 1.43d? | 2008-02-19 A | 2008-02-20 A | 610 | 100% |  |  |  |  | Himanshu [70%] | 8h | 8h |  |
| 612 | 1.4.2 | **Analyzer mode management :: FFT Analyzer** | 21.43d? | 2008-02-04 A | 2008-03-04 A |  | 100% |  |  |  |  |  | 136h | 136h | P2 |
| 613 | 1.4.2.1 | Design interface/Framework for mode change | 1.43d? | 2008-02-04 A | 2008-02-05 A |  | 100% |  |  |  |  | Gowie [70%] | 8h | 8h |  |
| 614 | 1.4.2.2 | Review with tech leads | 0.71d? | 2008-02-05 A | 2008-02-06 A | 613 | 100% |  |  |  |  | Gowie [70%] | 4h | 4h |  |
| 615 | 1.4.2.3 | Learn how to put stuff in Build system | 0.71d? | 2008-02-06 A | 2008-02-06 A | 614 | 100% |  |  |  |  | Gowie [70%] | 4h | 4h |  |
| 616 | 1.4.2.4 | Implement SET mode | 4.29d? | 2008-02-04 A | 2008-02-08 A | 615 | 100% |  |  |  |  | Gowie [70%] | 24h | 24h |  |
| 617 | 1.4.2.5 | implement trace types | 4.29d? | 2008-02-08 A | 2008-02-14 A | 616 | 100% |  |  |  |  | Gowie [70%] | 24h | 24h |  |
| 618 | 1.4.2.6 | Unit testing | 1.43d? | 2008-02-14 A | 2008-02-15 A | 617 | 100% |  |  |  |  | Gowie [70%] | 8h | 8h |  |
| 619 | 1.4.2.7 | Code **API **Review | 0.71d | 2008-02-15 A | 2008-02-18 A | 618 | 100% |  |  |  |  | Gowie [70%] | 4h | 4h |  |

| ID | WBS | Task | Duration | Start | Finish | Predecessors | Complete | Remaining | Total slack | Resources | Work | Actual work | Text1 |
| --- | --- | --- | --- | --- | --- | --- | --- | --- | --- | --- | --- | --- | --- |
| 620 | 1.4.2.8 | **State Management** | 7.86d? | 2008-02-18 A | 2008-02-28 A |  | 100% |  |  |  | 44h | 44h |  |
| 621 | 1.4.2.8.1 | Design framework for state change event | 1.43d? | 2008-02-18 A | 2008-02-20 A | 619 | 100% |  |  | Gowie [70%] | 8h | 8h |  |
| 622 | 1.4.2.8.2 | implement mode change event | 1.43d? | 2008-02-20 A | 2008-02-21 A | 621 | 100% |  |  | Gowie [70%] | 8h | 8h |  |
| 623 | 1.4.2.8.3 | implement state change event | 1.43d? | 2008-02-21 A | 2008-02-22 A | 622 | 100% |  |  | Gowie [70%] | 8h | 8h |  |
| 624 | 1.4.2.8.4 | implement data available event | 1.43d? | 2008-02-22 A | 2008-02-26 A | 623 | 100% |  |  | Gowie [70%] | 8h | 8h |  |
| 625 | 1.4.2.8.5 | Unit testing | 1.43d? | 2008-02-26 A | 2008-02-27 A | 624 | 100% |  |  | Gowie [70%] | 8h | 8h |  |
| 626 | 1.4.2.8.6 | Code** API ** Review | 0.71d | 2008-02-27 A | 2008-02-28 A | 625 | 100% |  |  | Gowie [70%] | 4h | 4h |  |
| 627 | 1.4.2.9 | Available Status (Place Holder) | 2.86d? | 2008-02-28 A | 2008-03-04 A | 626 | 100% |  |  | Gowie [70%] | 16h | 16h |  |
| 628 | 1.4.3 | **Trace management** | 71.74d? | 2008-02-04 A | 2008-05-13 A |  | 100% |  |  |  | 176h | 176h | P2 |
| 629 | 1.4.3.1 | Design Interface | 2.86d? | 2008-03-04 A | 2008-03-06 A | 614 | 100% |  |  | Gowie [70%] | 16h | 16h |  |
| 630 | 1.4.3.2 | Review interface design with Team leads | 2.86d? | 2008-04-22 A | 2008-04-25 A | 629 | 100% |  |  | Gowie [70%] | 16h | 16h |  |
| 631 | 1.4.3.3 | Implement Create Trace | 5.71d? | 2008-04-24 A | 2008-05-01 A | 619 | 100% |  |  | Gowie [70%] | 32h | 32h |  |
| 632 | 1.4.3.4 | Implement Delete Trace | 5.71d? | 2008-05-05 A | 2008-05-13 A | 631 | 100% |  |  | Gowie [70%] | 32h | 32h |  |
| 633 | 1.4.3.5 | Code **API** Review | 0.71d? | 2008-05-13 A | 2008-05-13 A | 632 | 100% |  |  | Gowie [70%] | 4h | 4h |  |
| 634 | 1.4.3.6 | **Data Flow** | 5.45d? | 2008-02-04 A | 2008-02-11 A |  | 100% |  |  |  | 64h | 64h |  |
| 635 | 1.4.3.6.1 | Understand Signal Flow/Design Data Types | 5.45d? | 2008-02-04 A | 2008-02-11 A | 633 | 100% |  |  | Mike [55%] | 24h | 24h |  |
| 636 | 1.4.3.6.2 | design data flow through trace management | 3.64d? | 2008-02-04 A | 2008-02-07 A | 635 | 100% |  |  | Mike [55%] | 16h | 16h |  |
| 637 | 1.4.3.6.3 | design state flow with data | 0.83d? | 2008-02-04 A | 2008-02-04 A | 636 | 100% |  |  | Gowie [70%]; Mike [55%] | 8h | 8h |  |
| 638 | 1.4.3.6.4 | implement data flow through trace management | 0.91d? | 2008-02-04 A | 2008-02-04 A | 637 | 100% |  |  | Gowie [70%]; Mike [55%] | 8h | 8h |  |
| 639 | 1.4.3.6.5 | implement state flow with data | 0.91d? | 2008-02-04 A | 2008-02-04 A | 638 | 100% |  |  | Gowie [70%]; Mike [55%] | 8h | 8h |  |
| 640 | 1.4.3.7 | implement enable trace | 1.3d? | 2008-02-04 A | 2008-02-05 A | 639 | 100% |  |  | Gowie [70%]; Mike [55%] | 12h | 12h |  |
| 641 | 1.4.4 | **Phase 2 Traces** | 15.48d? | 2008-02-04 A | 2008-02-25 |  | 91% | 1.35d? | 366.52d |  | 280.01h | 263.81h |  |
| 642 | 1.4.4.1 | **Linear Spectrum Trace** | 4.95d? | 2008-02-04 A | 2008-02-08 A |  | 100% |  |  |  | 48h | 48h |  |
| 643 | 1.4.4.1.1 | Implement Meas Data Transform | 0.45d? | 2008-02-04 A | 2008-02-05 A | 640 | 100% |  |  | Gowie [70%]; Mike [55%] | 4h | 4h |  |
| 644 | 1.4.4.1.2 | Implement Availablity Action | 2.73d? | 2008-02-04 A | 2008-02-06 A | 643 | 100% |  |  | Gowie [70%]; Mike [55%] | 24h | 24h |  |
| 645 | 1.4.4.1.3 | Unit testing | 0.45d? | 2008-02-04 A | 2008-02-07 A | 644 | 100% |  |  | Gowie [70%]; Mike [55%] | 4h | 4h |  |
| 646 | 1.4.4.1.4 | Enhance All Events for this data | 1.82d? | 2008-02-07 A | 2008-02-08 A | 645 | 100% |  |  | Gowie [70%]; Mike [55%] | 16h | 16h |  |

| ID | WBS | Task | Duration | Start | Finish | Predecessors | Complete | Remaining | Total slack | Resources | Work | Actual work |
| --- | --- | --- | --- | --- | --- | --- | --- | --- | --- | --- | --- | --- |
| 647 | 1.4.4.2 | **Cross Power Spectrum Trace** | 7.66d? | 2008-02-04 A | 2008-02-13 A |  | 100% |  |  |  | 38h | 38h |
| 648 | 1.4.4.2.1 | Implement Meas Data Transform | 1.82d? | 2008-02-04 A | 2008-02-11 A | 646 | 100% |  |  | Gowie [70%]; Mike [55%] | 16h | 16h |
| 649 | 1.4.4.2.2 | Implement Availablity Action | 1.36d? | 2008-02-04 A | 2008-02-12 A | 648 | 100% |  |  | Gowie [70%]; Mike [55%] | 12h | 12h |
| 650 | 1.4.4.2.3 | Unit testing | 0.23d? | 2008-02-04 A | 2008-02-12 A | 649 | 100% |  |  | Gowie [70%]; Mike [55%] | 2h | 2h |
| 651 | 1.4.4.2.4 | Enhance All Events for this data | 0.91d? | 2008-02-12 A | 2008-02-13 A | 650 | 100% |  |  | Gowie [70%]; Mike [55%] | 8h | 8h |
| 652 | 1.4.4.3 | **Time Sample Trace** | 2.39d? | 2008-02-04 A | 2008-02-06 A |  | 100% |  |  |  | 30h | 30h |
| 653 | 1.4.4.3.1 | Implement Meas Data Transform | 0.91d? | 2008-02-04 A | 2008-02-04 A | 651 | 100% |  |  | Gowie [70%]; Mike [55%] | 8h | 8h |
| 654 | 1.4.4.3.2 | Implement Availablity Action | 1.36d? | 2008-02-04 A | 2008-02-05 A | 653 | 100% |  |  | Gowie [70%]; Mike [55%] | 12h | 12h |
| 655 | 1.4.4.3.3 | Unit testing | 0.23d? | 2008-02-04 A | 2008-02-05 A | 654 | 100% |  |  | Gowie [70%]; Mike [55%] | 2h | 2h |
| 656 | 1.4.4.3.4 | Enhance All Events for this data | 0.91d? | 2008-02-05 A | 2008-02-06 A | 655 | 100% |  |  | Gowie [70%]; Mike [55%] | 8h | 8h |
| 657 | 1.4.4.4 | **THD Measurement Value** | 3.07d? | 2008-02-04 A | 2008-02-07 |  | 99% | 0.04d? | 378.93d |  | 30h | 29.8h |
| 658 | 1.4.4.4.1 | Implement Measurement Value Transform | 0.91d? | 2008-02-04 A | 2008-02-07 A | 656 | 100% |  |  | Gowie [70%]; Mike [55%] | 8h | 8h |
| 659 | 1.4.4.4.2 | Implement Availablity Action | 1.36d? | 2008-02-04 A | 2008-02-05 A | 658 | 100% |  |  | Gowie [70%]; Mike [55%] | 12h | 12h |
| 660 | 1.4.4.4.3 | Unit testing (still need auto detect testing) | 0.23d? | 2008-02-04 A | 2008-02-05 | 659 | 80% | 0.05d? | 385.43d | Gowie [70%]; Mike [55%] | 2h | 1.8h |
| 661 | 1.4.4.4.4 | Enhance All Events for this data | 0.91d? | 2008-02-05 A | 2008-02-06 A | 660 | 100% |  |  | Gowie [70%]; Mike [55%] | 8h | 8h |
| 662 | 1.4.4.5 | **Time Band Power Measurement Value** | 3.41d? | 2008-02-06 A | 2008-02-11 A |  | 100% |  |  |  | 30h | 30h |
| 663 | 1.4.4.5.1 | Implement Measurement Value Transform | 0.91d? | 2008-02-06 A | 2008-02-07 A | 661 | 100% |  |  | Gowie [70%]; Mike [55%] | 8h | 8h |
| 664 | 1.4.4.5.2 | Implement Availablity Action | 1.36d? | 2008-02-07 A | 2008-02-08 A | 663 | 100% |  |  | Gowie [70%]; Mike [55%] | 12h | 12h |
| 665 | 1.4.4.5.3 | Unit testing | 0.23d? | 2008-02-08 A | 2008-02-08 A | 664 | 100% |  |  | Gowie [70%]; Mike [55%] | 2h | 2h |
| 666 | 1.4.4.5.4 | Enhance All Events for this data | 0.91d? | 2008-02-08 A | 2008-02-11 A | 665 | 100% |  |  | Gowie [70%]; Mike [55%] | 8h | 8h |
| 667 | 1.4.4.6 | **Testing** | 15.48d? | 2008-02-04 A | 2008-02-25 |  | 75% | 3.83d? | 366.52d |  | 88h | 72h |
| 668 | 1.4.4.6.1 | Test available status for all combinatioins of Meas Data, Meas Value | 1.82d? | 2008-02-04 A | 2008-02-25 A |  | 100% |  |  | Gowie [70%]; Mike [55%] | 16h | 16h |
| 669 | 1.4.4.6.2 | Test mode change event for all combinations | 1.82d? | 2008-02-04 A | 2008-02-05 A | 668 | 100% |  |  | Gowie [70%]; Mike [55%] | 16h | 16h |
| 670 | 1.4.4.6.3 | Test state change event for all combinations | 1.82d? | 2008-02-04 A | 2008-02-05 A | 669 | 100% |  |  | Gowie [70%]; Mike [55%] | 16h | 16h |
| 671 | 1.4.4.6.4 | Test data available event for all combinations | 1.82d? | 2008-02-04 A | 2008-02-05 A | 670 | 100% |  |  | Gowie [70%]; Mike [55%] | 16h | 16h |
| 672 | 1.4.4.6.5 | Understand perfomance tools | 1.43d? | 2008-02-05 A | 2008-02-07 A | 671 | 100% |  |  | Gowie [70%] | 8h | 8h |
| 673 | 1.4.4.6.6 | Collect baseline performace | 2.86d? | 2008-02-07 | 2008-02-12 | 672 |  |  | 380.9d | Gowie [70%] | 16h |  |

| ID | WBS | Task | Type | Duration | Start | Finish | Predecessors | Complete | Remaining | Total slack | Free slack | Constraint | Resources | Work | Actual work | Text1 |
| --- | --- | --- | --- | --- | --- | --- | --- | --- | --- | --- | --- | --- | --- | --- | --- | --- |
| 674 | 1.4.4.7 | **Code Review** |  | 1.82d? | 2008-02-12 A | 2008-02-13 A |  | 100% |  |  |  |  |  | 16h | 16h |  |
| 675 | 1.4.4.7.1 | Code review trace and meas values |  | 0.91d? | 2008-02-12 A | 2008-02-13 A | 673 | 100% |  |  |  |  | Gowie [70%]; Mike [55%] | 8h | 8h |  |
| 676 | 1.4.4.7.2 | implement changes |  | 0.91d? | 2008-02-13 A | 2008-02-13 A | 675 | 100% |  |  |  |  | Gowie [70%]; Mike [55%] | 8h | 8h |  |
| 677 | 1.4.5 | Start of Phase 3 | milestone | 1d? | 2008-06-02 | 2008-06-02 |  |  |  | 301d |  | start no earlier than 2008-06-02 |  |  |  |  |
| 678 | 1.4.6 | **Phase 3** |  | 76.31d? | 2008-05-27 A | 2008-09-10 | 67 | 13% | 66.19d? | 170.91d | 0d |  |  | 539.6h | 51.5h | P3 |
| 679 | 1.4.6.1 | **Averaging FFT Mode** |  | 16.5d? | 2008-05-27 A | 2008-06-18 |  | 20% | 13.25d? | 1.98d | 0d |  |  | 94h | 23.5h | P3 |
| 680 | 1.4.6.1.1 | Understand data flow for averaging in the 35670 |  | 2.5d? | 2008-06-09 | 2008-06-11 |  |  |  | 16.56d | 0d | start no earlier than 2008-06-02 | Mike [80%] | 16h |  |  |
| 681 | 1.4.6.1.2 | Define Data flow for averaging in Mirage |  | 5d? | 2008-06-11 | 2008-06-18 | 680 |  |  | 16.56d |  |  | Mike [80%] | 32h |  |  |
| 682 | 1.4.6.1.3 | Design Averaging Interface |  | 0.77d? | 2008-05-27 A | 2008-06-09 |  | 52% | 0.37d? | 7.38d | 0.63d |  | Mike [80%]; Gowie [75%] | 8h | 4h |  |
| 683 | 1.4.6.1.4 | Implement Averaging Interface |  | 0.77d? | 2008-06-10 A | 2008-06-10 | 682 | 52% | 0.37d? | 6.35d | 0.23d |  | Mike [80%]; Gowie [75%] | 8h | 4h |  |
| 684 | 1.4.6.1.5 | Test & Verify Averaging Interface For All FFT average types |  | 1.55d? | 2008-06-11 A | 2008-06-12 | 683 | 52% | 0.75d? | 5.33d | 0d |  | Mike [80%]; Gowie [75%] | 16h | 8h |  |
| 685 | 1.4.6.1.6 | Review flow and code |  | 0.37d? | 2008-06-12 | 2008-06-12 | 684 |  |  | 20.14d |  |  | Mike [80%]; Gowie [75%] | 4h |  |  |
| 686 | 1.4.6.1.7 | Implement / Test Overlap Processing |  | 0.98d? | 2008-06-13 A | 2008-06-13 | 685 | 76% | 0.23d? | 4.5d |  |  | Mike [80%]; Gowie [75%] | 10h | 7.5h |  |
| 687 | 1.4.6.2 | **Math** |  | 0.69d? | 2008-06-18 | 2008-06-19 | 679 |  |  | 1.98d | 0d |  |  | 4.4h |  |  |
| 688 | 1.4.6.2.1 | Define where math happens in AML |  | 0.69d? | 2008-06-18 | 2008-06-19 | 681 |  |  | 16.56d |  |  | Mike [80%] | 4.4h |  |  |
| 689 | 1.4.6.3 | **Trace Coordinates** |  | 11.5d? | 2008-06-19 | 2008-07-04 | 687 |  |  | 1.98d | 42.29d |  |  | 138h |  |  |
| 690 | 1.4.6.3.1 | **Linear Mag Trace Coordinates** |  | 4d? | 2008-06-19 | 2008-06-25 |  |  |  | 1.98d | 0d |  |  | 48h |  | P3 |
| 691 | 1.4.6.3.1.1 | Implement Measurement Value Transform |  | 0.33d? | 2008-06-19 | 2008-06-19 |  |  |  | 1.98d | 0d |  | Gowie [75%]; Mike [80%] | 4h |  |  |
| 692 | 1.4.6.3.1.2 | Implement Availablity Action |  | 2d? | 2008-06-19 | 2008-06-23 | 691 |  |  | 16.56d | 0d |  | Gowie [75%]; Mike [80%] | 24h |  |  |
| 693 | 1.4.6.3.1.3 | Unit testing |  | 0.33d? | 2008-06-23 | 2008-06-23 | 692 |  |  | 16.56d | 0d |  | Gowie [75%]; Mike [80%] | 4h |  |  |
| 694 | 1.4.6.3.1.4 | Enhance All Events for this data |  | 1.33d? | 2008-06-23 | 2008-06-25 | 693 |  |  | 16.56d | 0d |  | Gowie [75%]; Mike [80%] | 16h |  |  |
| 695 | 1.4.6.3.2 | **Phase & Unwrapped Phase Trace Coordinates** |  | 2.5d? | 2008-06-25 | 2008-06-27 | 690 |  |  | 1.98d | 0d |  |  | 30h |  | P3 |
| 696 | 1.4.6.3.2.1 | Implement Measurement Value Transform |  | 0.67d? | 2008-06-25 | 2008-06-25 | 694 |  |  | 16.56d | 0d |  | Gowie [75%]; Mike [80%] | 8h |  |  |
| 697 | 1.4.6.3.2.2 | Implement Availablity Action |  | 1d? | 2008-06-25 | 2008-06-26 | 696 |  |  | 16.56d | 0d |  | Gowie [75%]; Mike [80%] | 12h |  |  |
| 698 | 1.4.6.3.2.3 | Unit testing |  | 0.17d? | 2008-06-26 | 2008-06-27 | 697 |  |  | 16.56d | 0d |  | Gowie [75%]; Mike [80%] | 2h |  |  |
| 699 | 1.4.6.3.2.4 | Enhance All Events for this data |  | 0.67d? | 2008-06-27 | 2008-06-27 | 698 |  |  | 16.56d | 0d |  | Gowie [75%]; Mike [80%] | 8h |  |  |

| ID | WBS | Task | Duration | Start | Finish | Predecessors | Complete | Remaining | Total slack | Free slack | Resources | Work | Actual work | Text1 |
| --- | --- | --- | --- | --- | --- | --- | --- | --- | --- | --- | --- | --- | --- | --- |
| 700 | 1.4.6.3.3 | **Log & dB Trace Coordinates** | 2.5d? | 2008-06-27 | 2008-07-02 | 695 |  |  | 1.98d | 0d |  | 30h |  | P3 |
| 701 | 1.4.6.3.3.1 | Implement Measurement Value Transform | 0.67d? | 2008-06-27 | 2008-06-30 | 699 |  |  | 16.56d | 0d | Gowie [75%]; Mike [80%] | 8h |  |  |
| 702 | 1.4.6.3.3.2 | Implement Availablity Action | 1d? | 2008-06-30 | 2008-07-01 | 701 |  |  | 16.56d | 0d | Gowie [75%]; Mike [80%] | 12h |  |  |
| 703 | 1.4.6.3.3.3 | Unit testing | 0.17d? | 2008-07-01 | 2008-07-01 | 702 |  |  | 16.56d | 0d | Gowie [75%]; Mike [80%] | 2h |  |  |
| 704 | 1.4.6.3.3.4 | Enhance All Events for this data | 0.67d? | 2008-07-01 | 2008-07-02 | 703 |  |  | 16.56d |  | Gowie [75%]; Mike [80%] | 8h |  |  |
| 705 | 1.4.6.3.4 | **Real & Imag Trace Coordinates** | 2.5d? | 2008-07-02 | 2008-07-04 | 700 |  |  | 1.98d |  |  | 30h |  | P3 |
| 706 | 1.4.6.3.4.1 | Implement Measurement Value Transform | 0.67d? | 2008-07-02 | 2008-07-02 |  |  |  | 1.98d | 0d | Gowie [75%]; Mike [80%] | 8h |  |  |
| 707 | 1.4.6.3.4.2 | Implement Availablity Action | 1d? | 2008-07-02 | 2008-07-03 | 706 |  |  | 16.56d | 0d | Gowie [75%]; Mike [80%] | 12h |  |  |
| 708 | 1.4.6.3.4.3 | Unit testing | 0.17d? | 2008-07-03 | 2008-07-04 | 707 |  |  | 16.56d | 0d | Gowie [75%]; Mike [80%] | 2h |  |  |
| 709 | 1.4.6.3.4.4 | Enhance All Events for this data | 0.67d? | 2008-07-04 | 2008-07-04 | 708 |  |  | 16.56d |  | Gowie [75%]; Mike [80%] | 8h |  |  |
| 710 | 1.4.6.4 | **Windowing** | 4.5d? | 2008-07-08 A | 2008-07-14 | 689 |  | 4.5d? | 207.39d | 36.48d |  | 24h |  |  |
| 711 | 1.4.6.4.1 | Design Window Interface | 1.25d | 2008-07-08 A | 2008-07-09 | 708 |  | 1.25d | 15.81d | 0.75d | Mike [80%] | 8h |  | P3 |
| 712 | 1.4.6.4.2 | Implement Window Interface | 1.25d | 2008-07-10 A | 2008-07-11 | 711 |  | 1.25d | 207.39d | 0d | Mike [80%] | 8h |  | P3 |
| 713 | 1.4.6.4.3 | Test & Verify Window Interface For Hann, Hamming, Flat Top, Uniform | 1.25d? | 2008-07-11 | 2008-07-14 | 712 |  |  | 207.39d |  | Mike [80%] | 8h |  | P3 |
| 714 | 1.4.6.5 | **Transforms** | 20.3d? | 2008-07-15 A | 2008-08-12 | 710 | 59% | 8.27d? | 184.28d | 0d |  | 24h | 12h |  |
| 715 | 1.4.6.5.1 | **FFT** | 20.3d? | 2008-07-15 A | 2008-08-12 |  | 59% | 8.27d? | 184.28d |  |  | 24h | 12h | P3 |
| 716 | 1.4.6.5.1.1 | Design FFT Interface | 1.82d? | 2008-07-15 A | 2008-07-16 A |  | 100% |  |  |  | Mike [80%] | 8h | 8h |  |
| 717 | 1.4.6.5.1.2 | Implement FFT Interface | 1.53d? | 2008-08-07 A | 2008-08-11 | 716 | 59% | 0.62d? | 184.28d | 0d | Mike [80%] | 8h | 4h |  |
| 718 | 1.4.6.5.1.3 | Test & Verify FFT Interface | 1.25d? | 2008-08-11 | 2008-08-12 | 717 |  |  | 189.28d |  | Mike [80%] | 8h |  |  |
| 719 | 1.4.6.6 | **Measurement Traces** | 2.3d? | 2008-08-12 | 2008-08-14 | 714 |  |  | 184.28d | 13.37d |  | 24h |  |  |
| 720 | 1.4.6.6.1 | **Auto Power Spectrum** | 2.3d? | 2008-08-12 | 2008-08-14 | 647 |  |  | 184.28d |  |  | 24h |  | P3 |
| 721 | 1.4.6.6.1.1 | Implement Meas Data Transform | 0.39d? | 2008-08-12 | 2008-08-12 |  |  |  | 184.28d | 0d | Mike [80%]; Gowie [75%] | 4h |  |  |
| 722 | 1.4.6.6.1.2 | Implement Availablity Action | 0.39d? | 2008-08-12 | 2008-08-13 | 721 |  |  | 184.28d | 0d | Mike [80%]; Gowie [75%] | 4h |  |  |
| 723 | 1.4.6.6.1.3 | Unit testing | 0.78d? | 2008-08-13 | 2008-08-13 | 722 |  |  | 184.28d | 0d | Mike [80%]; Gowie [75%] | 8h |  |  |
| 724 | 1.4.6.6.1.4 | Enhance All Events for this data | 0.75d? | 2008-08-13 | 2008-08-14 | 723 |  |  | 184.28d |  | Gowie [75%]; Mike [80%] | 8h |  |  |

| ID | WBS | Task | Duration | Start | Finish | Predecessors | Complete | Remaining | Total slack | Free slack | Constraint | Resources | Work | Actual work | Text1 |
| --- | --- | --- | --- | --- | --- | --- | --- | --- | --- | --- | --- | --- | --- | --- | --- |
| 725 | 1.4.6.7 | **Scalar Measurements** | 54.88d? | 2008-06-09 A | 2008-08-22 | 719 | 25% | 41.07d? | 170.91d | 0d |  |  | 91.2h | 16h |  |
| 726 | 1.4.6.7.1 | **Single Tone Distortion** | 3.03d? | 2008-06-09 | 2008-06-12 |  |  |  | 222.76d |  |  |  | 39.2h |  | P3 |
| 727 | 1.4.6.7.1.1 | Design Interface | 0.78d? | 2008-06-09 | 2008-06-09 |  |  |  | 227.76d | 0d |  | Mike [80%]; Gowie [75%] | 8h |  |  |
| 728 | 1.4.6.7.1.2 | Implement Interface | 0.78d? | 2008-06-09 | 2008-06-10 | 727 |  |  | 222.76d | 0d |  | Mike [80%]; Gowie [75%] | 8h |  |  |
| 729 | 1.4.6.7.1.3 | Test & Verify Interface for THD + Noise | 0.78d? | 2008-06-10 | 2008-06-11 | 728 |  |  | 222.76d | 0d |  | Mike [80%]; Gowie [75%] | 8h |  |  |
| 730 | 1.4.6.7.1.4 | Test & Verify Interface for SINAD | 0.23d? | 2008-06-11 | 2008-06-11 | 729 |  |  | 222.76d | 0d |  | Mike [80%]; Gowie [75%] | 2.4h |  |  |
| 731 | 1.4.6.7.1.5 | Test & Verify Interface for ENOB | 0.23d? | 2008-06-11 | 2008-06-11 | 730 |  |  | 222.76d | 0d |  | Mike [80%]; Gowie [75%] | 2.4h |  |  |
| 732 | 1.4.6.7.1.6 | Test & Verify Interface for SNR | 0.23d? | 2008-06-11 | 2008-06-12 | 731 |  |  | 222.76d |  |  | Mike [80%]; Gowie [75%] | 2.4h |  |  |
| 733 | 1.4.6.7.1.7 | Enhance All Events for this data | 0.65d? | 2008-06-10 | 2008-06-11 | 728 |  |  | 228.59d |  |  | Mike [80%]; Gowie [75%] | 8h |  |  |
| 734 | 1.4.6.7.2 | **Band Power (time)** | 51.88d? | 2008-06-12 A | 2008-08-22 | 726 | 58% | 21.99d? | 170.91d |  |  |  | 32h | 16h | P3 |
| 735 | 1.4.6.7.2.1 | Implement Meas Data Transform | 1.25d? | 2008-06-12 A | 2008-06-13 A |  | 100% |  |  |  |  | Mike [80%]; Gowie [75%] | 8h | 8h |  |
| 736 | 1.4.6.7.2.2 | Implement Availablity Action | 1.25d? | 2008-08-20 A | 2008-08-22 A | 735 | 100% |  |  |  |  | Mike [80%]; Gowie [75%] | 8h | 8h |  |
| 737 | 1.4.6.7.2.3 | Unit testing | 1.09d? | 2008-06-16 | 2008-06-17 |  |  |  | 219.7d |  | start no earlier than 2008-06-16 | Mike [80%]; Gowie [75%] | 8h |  |  |
| 738 | 1.4.6.7.2.4 | Enhance All Events for this data | 0.75d? | 2008-08-22 | 2008-08-22 | 736 |  |  | 170.91d |  |  | Mike [80%]; Gowie [75%] | 8h |  |  |
| 739 | 1.4.6.7.3 | **Band Power (Freq)** | 1.52d? | 2008-06-23 | 2008-06-24 |  |  |  | 214.27d |  |  |  | 20h |  | P3 |
| 740 | 1.4.6.7.3.1 | Implement Meas Data Transform | 0.39d? | 2008-06-23 | 2008-06-23 |  |  |  | 214.27d | 0d | start no earlier than 2008-06-23 | Mike [80%]; Gowie [75%] | 4h |  |  |
| 741 | 1.4.6.7.3.2 | Implement Availablity Action | 0.39d? | 2008-06-23 | 2008-06-23 | 740 |  |  | 214.27d | 0d |  | Mike [80%]; Gowie [75%] | 4h |  |  |
| 742 | 1.4.6.7.3.3 | Unit testing | 0.39d? | 2008-06-23 | 2008-06-24 | 741 |  |  | 214.63d |  |  | Mike [80%]; Gowie [75%] | 4h |  |  |
| 743 | 1.4.6.7.3.4 | Enhance All Events for this data | 0.75d? | 2008-06-23 | 2008-06-24 | 741 |  |  | 214.27d |  |  | Mike [80%]; Gowie [75%] | 8h |  |  |
| 744 | 1.4.6.8 | **Unit Conversion** | 7.09d? | 2008-08-22 | 2008-09-02 | 725 |  |  | 170.91d | 0d |  |  | 76h |  |  |
| 745 | 1.4.6.8.1 | Design interface for unit conversion | 1.49d? | 2008-08-22 | 2008-08-26 |  |  |  | 170.91d | 0d |  | Gowie [75%]; Mike [80%] | 16h |  |  |
| 746 | 1.4.6.8.2 | Review with tech leads | 0.37d? | 2008-08-26 | 2008-08-26 | 745 |  |  | 170.91d | 0d |  | Gowie [75%]; Mike [80%] | 4h |  |  |
| 747 | 1.4.6.8.3 | Implementation | 1.49d? | 2008-08-26 | 2008-08-28 | 746 |  |  | 170.91d | 0d |  | Gowie [75%]; Mike [80%] | 16h |  |  |
| 748 | 1.4.6.8.4 | Unit testing | 2.24d? | 2008-08-28 | 2008-09-01 | 747 |  |  | 170.91d | 0d |  | Gowie [75%]; Mike [80%] | 24h |  |  |
| 749 | 1.4.6.8.5 | How unit will ripple down | 1.49d? | 2008-09-01 | 2008-09-02 | 748 |  |  | 170.91d |  |  | Gowie [75%]; Mike [80%] | 16h |  |  |

| ID | WBS | Task | Duration | Start | Finish | Predecessors | Total slack | Free slack | Resources | Work | Text1 |
| --- | --- | --- | --- | --- | --- | --- | --- | --- | --- | --- | --- |
| 750 | 1.4.6.9 | **Testing** | 4d? | 2008-09-02 | 2008-09-08 | 679, 687, 710, 714, 719, 725, 744, 689 | 170.91d | 0d |  | 48h |  |
| 751 | 1.4.6.9.1 | Test available status for all combinatioins of Meas Data, Meas Value, transducer units, trace coord | 0.67d? | 2008-09-02 | 2008-09-03 |  | 170.91d | 0d | Gowie [75%]; Mike [80%] | 8h |  |
| 752 | 1.4.6.9.2 | Test mode change event for all combinations | 0.67d? | 2008-09-03 | 2008-09-04 | 751 | 170.91d | 0d | Gowie [75%]; Mike [80%] | 8h |  |
| 753 | 1.4.6.9.3 | Test state change event for all combinations | 0.67d? | 2008-09-04 | 2008-09-04 | 752 | 170.91d | 0d | Gowie [75%]; Mike [80%] | 8h |  |
| 754 | 1.4.6.9.4 | Test data available event for all combinations | 0.67d? | 2008-09-04 | 2008-09-05 | 753 | 170.91d | 0d | Gowie [75%]; Mike [80%] | 8h |  |
| 755 | 1.4.6.9.5 | Collect baseline performace | 1.33d? | 2008-09-05 | 2008-09-08 | 754 | 170.91d | 0d | Gowie [75%]; Mike [80%] | 16h |  |
| 756 | 1.4.6.10 | **Code Review** | 1.33d? | 2008-09-08 | 2008-09-10 | 750 | 170.91d |  |  | 16h |  |
| 757 | 1.4.6.10.1 | Code review trace and meas values | 0.67d? | 2008-09-08 | 2008-09-09 | 755 | 170.91d | 0d | Gowie [75%]; Mike [80%] | 8h |  |
| 758 | 1.4.6.10.2 | implement changes | 0.67d? | 2008-09-09 | 2008-09-10 | 757 | 170.91d |  | Gowie [75%]; Mike [80%] | 8h |  |
| 759 | 1.4.7 | **Phase 4** | 93.52d? | 2008-09-10 | 2009-01-19 | 678 | 92.98d | 0d |  | 605.03h | P4 |
| 760 | 1.4.7.1 | **Windowing** | 3.64d? | 2008-09-10 | 2008-09-15 | 1048, 710 | 182.87d |  |  | 16h |  |
| 761 | 1.4.7.1.1 | Test & Verify Window interface all remaining windows | 3.64d? | 2008-09-10 | 2008-09-15 |  | 182.87d |  | Mike [55%] | 16h | P4 |
| 762 | 1.4.7.2 | **Transforms** | 5.45d? | 2008-09-10 | 2008-09-17 | 714 | 181.05d | 88.07d |  | 24h |  |
| 763 | 1.4.7.2.1 | **ZOOM FFT** | 5.45d? | 2008-09-10 | 2008-09-17 | 1070 | 181.05d |  |  | 24h | P4 |
| 764 | 1.4.7.2.1.1 | Design FFT Interface | 1.82d? | 2008-09-10 | 2008-09-12 |  | 181.05d | 0d | Mike [55%] | 8h |  |
| 765 | 1.4.7.2.1.2 | Implement FFT Interface | 1.82d? | 2008-09-12 | 2008-09-15 | 764 | 181.05d | 0d | Mike [55%] | 8h |  |
| 766 | 1.4.7.2.1.3 | Test & Verify FFT Interface | 1.82d? | 2008-09-15 | 2008-09-17 | 765 | 181.05d |  | Mike [55%] | 8h |  |
| 767 | 1.4.7.3 | **Measurement Traces** | 93.52d? | 2008-09-10 | 2009-01-19 | 719 | 92.98d | 16.36d |  | 92.27h |  |
| 768 | 1.4.7.3.1 | **Frequency Response (H1, H2, Hv)** | 3.8d? | 2008-09-10 | 2008-09-16 | 1172 | 180.24d | 0d |  | 34.8h | P4 |
| 769 | 1.4.7.3.1.1 | Implement Meas Data Transform | 1d | 2008-09-10 | 2008-09-11 |  | 180.24d | 0d | Mike [55%]; Gowie [70%] | 8.93h |  |
| 770 | 1.4.7.3.1.2 | Implement Availablity Action | 1d | 2008-09-11 | 2008-09-12 | 769 | 180.24d | 0d | Mike [55%]; Gowie [70%] | 8.93h |  |
| 771 | 1.4.7.3.1.3 | Unit testing | 1d | 2008-09-12 | 2008-09-15 | 770 | 180.24d | 0d | Mike [55%]; Gowie [70%] | 8.93h |  |
| 772 | 1.4.7.3.1.4 | Enhance All Events for this data | 0.8d? | 2008-09-15 | 2008-09-16 | 771 | 180.24d |  | Gowie [70%]; Mike [55%] | 8h |  |
| 773 | 1.4.7.3.2 | **Coherence** | 2.47d? | 2008-09-16 | 2008-09-18 | 768 | 180.24d |  |  | 24h | P4 |
| 774 | 1.4.7.3.2.1 | Implement Meas Data Transform | 0.42d? | 2008-09-16 | 2008-09-16 |  | 180.24d | 0d | Mike [55%]; Gowie [70%] | 4h |  |
| 775 | 1.4.7.3.2.2 | Implement Availablity Action | 0.42d? | 2008-09-16 | 2008-09-16 | 774 | 180.24d | 0d | Mike [55%]; Gowie [70%] | 4h |  |
| 776 | 1.4.7.3.2.3 | Unit testing | 0.83d? | 2008-09-16 | 2008-09-17 | 775 | 180.24d | 0d | Mike [55%]; Gowie [70%] | 8h |  |
| 777 | 1.4.7.3.2.4 | Enhance All Events for this data | 0.8d? | 2008-09-17 | 2008-09-18 | 776 | 180.24d |  | Gowie [70%]; Mike [55%] | 8h |  |

| ID | WBS | Task | Duration | Start | Finish | Predecessors | Total slack | Free slack | Resources | Work | Text1 |
| --- | --- | --- | --- | --- | --- | --- | --- | --- | --- | --- | --- |
| 778 | 1.4.7.3.3 | **Orbit Diagram** | 4d? | 2009-01-13 | 2009-01-19 | 1361 | 92.98d |  |  | 33.47h | P4 |
| 779 | 1.4.7.3.3.1 | Implement Meas Data Transform | 1d | 2009-01-13 | 2009-01-14 |  | 92.98d | 0d | Mike [55%]; Gowie [70%] | 7.27h |  |
| 780 | 1.4.7.3.3.2 | Implement Availablity Action | 1d | 2009-01-14 | 2009-01-15 | 779 | 92.98d | 0d | Mike [55%]; Gowie [70%] | 7.27h |  |
| 781 | 1.4.7.3.3.3 | Unit testing | 1d | 2009-01-15 | 2009-01-16 | 780 | 92.98d | 0d | Mike [55%]; Gowie [70%] | 8.93h |  |
| 782 | 1.4.7.3.3.4 | Enhance All Events for this data | 1d? | 2009-01-16 | 2009-01-19 | 781 | 92.98d |  | Gowie [70%]; Mike [55%] | 10h |  |
| 783 | 1.4.7.4 | **Scalar Measurements** | 15.6d? | 2008-09-10 | 2008-10-01 | 725 | 170.91d |  |  | 286h |  |
| 784 | 1.4.7.4.1 | **Spurious Free Dynamic Range** | 2.67d? | 2008-09-10 | 2008-09-12 | 1256 | 182.17d | 0d |  | 34h | P4 |
| 785 | 1.4.7.4.1.1 | Implement Meas Data Transform | 0.83d? | 2008-09-10 | 2008-09-11 |  | 182.17d | 0d | Mike [55%]; Gowie [70%] | 8h |  |
| 786 | 1.4.7.4.1.2 | Implement Availablity Action | 0.83d? | 2008-09-11 | 2008-09-11 | 785 | 182.17d | 0d | Mike [55%]; Gowie [70%] | 8h |  |
| 787 | 1.4.7.4.1.3 | Unit testing | 0.83d? | 2008-09-11 | 2008-09-12 | 786 | 182.34d |  | Mike [55%]; Gowie [70%] | 8h |  |
| 788 | 1.4.7.4.1.4 | Enhance All Events for this data | 1d? | 2008-09-11 | 2008-09-12 | 786 | 182.17d |  | Mike [55%]; Gowie [70%] | 10h |  |
| 789 | 1.4.7.4.2 | **Side Band Power** | 1.67d? | 2008-09-12 | 2008-09-16 | 784 | 182.17d |  |  | 24h | P4 |
| 790 | 1.4.7.4.2.1 | Implement Meas Data Transform | 0.42d? | 2008-09-12 | 2008-09-15 |  | 182.17d | 0d | Mike [55%]; Gowie [70%] | 4h |  |
| 791 | 1.4.7.4.2.2 | Implement Availablity Action | 0.42d? | 2008-09-15 | 2008-09-15 | 790 | 182.17d | 0d | Mike [55%]; Gowie [70%] | 4h |  |
| 792 | 1.4.7.4.2.3 | Unit testing | 0.83d? | 2008-09-15 | 2008-09-16 | 791 | 182.17d |  | Mike [55%]; Gowie [70%] | 8h |  |
| 793 | 1.4.7.4.2.4 | Enhance All Events for this data | 0.8d? | 2008-09-15 | 2008-09-16 | 791 | 182.21d |  | Mike [55%]; Gowie [70%] | 8h |  |
| 794 | 1.4.7.4.3 | **Gain and Phase Margins** | 3.33d? | 2008-09-10 | 2008-09-15 | 1150 | 183.17d |  |  | 40h | P4 |
| 795 | 1.4.7.4.3.1 | Implement Meas Data Transform | 0.83d? | 2008-09-10 | 2008-09-11 |  | 183.17d | 0d | Mike [55%]; Gowie [70%] | 8h |  |
| 796 | 1.4.7.4.3.2 | Implement Availablity Action | 0.83d? | 2008-09-11 | 2008-09-11 | 795 | 183.17d | 0d | Mike [55%]; Gowie [70%] | 8h |  |
| 797 | 1.4.7.4.3.3 | Unit testing | 1.67d? | 2008-09-11 | 2008-09-15 | 796 | 183.17d |  | Mike [55%]; Gowie [70%] | 16h |  |
| 798 | 1.4.7.4.3.4 | Enhance All Events for this data | 0.8d? | 2008-09-11 | 2008-09-12 | 796 | 184.04d |  | Mike [55%]; Gowie [70%] | 8h |  |
| 799 | 1.4.7.4.4 | **Frequency and Damping** | 4.17d? | 2008-09-10 | 2008-09-16 | 1161 | 170.91d | 0d |  | 48h | P4 |
| 800 | 1.4.7.4.4.1 | Implement Meas Data Transform | 1.67d? | 2008-09-10 | 2008-09-11 |  | 170.91d | 0d | Mike [55%]; Gowie [70%] | 16h |  |
| 801 | 1.4.7.4.4.2 | Implement Availablity Action | 0.83d? | 2008-09-11 | 2008-09-12 | 800 | 170.91d | 0d | Mike [55%]; Gowie [70%] | 8h |  |
| 802 | 1.4.7.4.4.3 | Unit testing | 1.67d? | 2008-09-12 | 2008-09-16 | 801 | 170.91d |  | Mike [55%]; Gowie [70%] | 16h |  |
| 803 | 1.4.7.4.4.4 | Enhance All Events for this data | 0.8d? | 2008-09-12 | 2008-09-15 | 801 | 171.77d |  | Mike [55%]; Gowie [70%] | 8h |  |

| ID | WBS | Task | Duration | Start | Finish | Predecessors | Total slack | Free slack | Resources | Work | Text1 |
| --- | --- | --- | --- | --- | --- | --- | --- | --- | --- | --- | --- |
| 804 | 1.4.7.4.5 | **Delay Time** | 1.63d? | 2008-09-16 | 2008-09-18 | 799 | 170.91d | 0d |  | 20h | P4 |
| 805 | 1.4.7.4.5.1 | Implement Meas Data Transform | 0.42d? | 2008-09-16 | 2008-09-16 |  | 170.91d | 0d | Mike [55%]; Gowie [70%] | 4h |  |
| 806 | 1.4.7.4.5.2 | Implement Availablity Action | 0.42d? | 2008-09-16 | 2008-09-17 | 805 | 170.91d | 0d | Mike [55%]; Gowie [70%] | 4h |  |
| 807 | 1.4.7.4.5.3 | Unit testing | 0.42d? | 2008-09-17 | 2008-09-17 | 806 | 171.29d |  | Mike [55%]; Gowie [70%] | 4h |  |
| 808 | 1.4.7.4.5.4 | Enhance All Events for this data | 0.8d? | 2008-09-17 | 2008-09-18 | 806 | 170.91d |  | Mike [55%]; Gowie [70%] | 8h |  |
| 809 | 1.4.7.4.6 | **Rise Time** | 1.63d? | 2008-09-18 | 2008-09-19 | 804 | 170.91d | 0d |  | 20h | P4 |
| 810 | 1.4.7.4.6.1 | Implement Meas Data Transform | 0.42d? | 2008-09-18 | 2008-09-18 |  | 170.91d | 0d | Mike [55%]; Gowie [70%] | 4h |  |
| 811 | 1.4.7.4.6.2 | Implement Availablity Action | 0.42d? | 2008-09-18 | 2008-09-18 | 810 | 170.91d | 0d | Mike [55%]; Gowie [70%] | 4h |  |
| 812 | 1.4.7.4.6.3 | Unit testing | 0.42d? | 2008-09-18 | 2008-09-19 | 811 | 171.29d |  | Mike [55%]; Gowie [70%] | 4h |  |
| 813 | 1.4.7.4.6.4 | Enhance All Events for this data | 0.8d? | 2008-09-18 | 2008-09-19 | 811 | 170.91d |  | Mike [55%]; Gowie [70%] | 8h |  |
| 814 | 1.4.7.4.7 | **Decay Time** | 1.63d? | 2008-09-19 | 2008-09-23 | 809 | 170.91d | 0d |  | 20h | P4 |
| 815 | 1.4.7.4.7.1 | Implement Meas Data Transform | 0.42d? | 2008-09-19 | 2008-09-22 |  | 170.91d | 0d | Mike [55%]; Gowie [70%] | 4h |  |
| 816 | 1.4.7.4.7.2 | Implement Availablity Action | 0.42d? | 2008-09-22 | 2008-09-22 | 815 | 170.91d | 0d | Mike [55%]; Gowie [70%] | 4h |  |
| 817 | 1.4.7.4.7.3 | Unit testing | 0.42d? | 2008-09-22 | 2008-09-22 | 816 | 171.29d |  | Mike [55%]; Gowie [70%] | 4h |  |
| 818 | 1.4.7.4.7.4 | Enhance All Events for this data | 0.8d? | 2008-09-22 | 2008-09-23 | 816 | 170.91d |  | Mike [55%]; Gowie [70%] | 8h |  |
| 819 | 1.4.7.4.8 | **Settling Time** | 1.63d? | 2008-09-23 | 2008-09-25 | 814 | 170.91d | 0d |  | 20h | P4 |
| 820 | 1.4.7.4.8.1 | Implement Meas Data Transform | 0.42d? | 2008-09-23 | 2008-09-23 |  | 170.91d | 0d | Mike [55%]; Gowie [70%] | 4h |  |
| 821 | 1.4.7.4.8.2 | Implement Availablity Action | 0.42d? | 2008-09-23 | 2008-09-24 | 820 | 170.91d | 0d | Mike [55%]; Gowie [70%] | 4h |  |
| 822 | 1.4.7.4.8.3 | Unit testing | 0.42d? | 2008-09-24 | 2008-09-24 | 821 | 171.29d |  | Mike [55%]; Gowie [70%] | 4h |  |
| 823 | 1.4.7.4.8.4 | Enhance All Events for this data | 0.8d? | 2008-09-24 | 2008-09-25 | 821 | 170.91d |  | Mike [55%]; Gowie [70%] | 8h |  |
| 824 | 1.4.7.4.9 | **Pulse Width** | 1.63d? | 2008-09-25 | 2008-09-26 | 819 | 170.91d | 0d |  | 20h | P4 |
| 825 | 1.4.7.4.9.1 | Implement Meas Data Transform | 0.42d? | 2008-09-25 | 2008-09-25 |  | 170.91d | 0d | Mike [55%]; Gowie [70%] | 4h |  |
| 826 | 1.4.7.4.9.2 | Implement Availablity Action | 0.42d? | 2008-09-25 | 2008-09-25 | 825 | 170.91d | 0d | Mike [55%]; Gowie [70%] | 4h |  |
| 827 | 1.4.7.4.9.3 | Unit testing | 0.42d? | 2008-09-25 | 2008-09-26 | 826 | 171.29d |  | Mike [55%]; Gowie [70%] | 4h |  |
| 828 | 1.4.7.4.9.4 | Enhance All Events for this data | 0.8d? | 2008-09-25 | 2008-09-26 | 826 | 170.91d |  | Mike [55%]; Gowie [70%] | 8h |  |

| ID | WBS | Task | Duration | Start | Finish | Predecessors | Total slack | Free slack | Resources | Work | Text1 |
| --- | --- | --- | --- | --- | --- | --- | --- | --- | --- | --- | --- |
| 829 | 1.4.7.4.10 | **Voltage Min** | 1.63d? | 2008-09-26 | 2008-09-30 | 824 | 170.91d | 0d |  | 20h | P4 |
| 830 | 1.4.7.4.10.1 | Implement Meas Data Transform | 0.42d? | 2008-09-26 | 2008-09-29 |  | 170.91d | 0d | Mike [55%]; Gowie [70%] | 4h |  |
| 831 | 1.4.7.4.10.2 | Implement Availablity Action | 0.42d? | 2008-09-29 | 2008-09-29 | 830 | 170.91d | 0d | Mike [55%]; Gowie [70%] | 4h |  |
| 832 | 1.4.7.4.10.3 | Unit testing | 0.42d? | 2008-09-29 | 2008-09-29 | 831 | 171.29d |  | Mike [55%]; Gowie [70%] | 4h |  |
| 833 | 1.4.7.4.10.4 | Enhance All Events for this data | 0.8d? | 2008-09-29 | 2008-09-30 | 831 | 170.91d |  | Mike [55%]; Gowie [70%] | 8h |  |
| 834 | 1.4.7.4.11 | **Voltage Max** | 1.63d? | 2008-09-30 | 2008-10-01 | 829 | 170.91d |  |  | 20h | P4 |
| 835 | 1.4.7.4.11.1 | Implement Meas Data Transform | 0.42d? | 2008-09-30 | 2008-09-30 |  | 170.91d | 0d | Mike [55%]; Gowie [70%] | 4h |  |
| 836 | 1.4.7.4.11.2 | Implement Availablity Action | 0.42d? | 2008-09-30 | 2008-10-01 | 835 | 170.91d | 0d | Mike [55%]; Gowie [70%] | 4h |  |
| 837 | 1.4.7.4.11.3 | Unit testing | 0.42d? | 2008-10-01 | 2008-10-01 | 836 | 171.29d |  | Mike [55%]; Gowie [70%] | 4h |  |
| 838 | 1.4.7.4.11.4 | Enhance All Events for this data | 0.8d? | 2008-10-01 | 2008-10-01 | 836 | 170.91d |  | Mike [55%]; Gowie [70%] | 8h |  |
| 839 | 1.4.7.5 | **Trace Coordinates** | 7.36d? | 2008-09-10 | 2008-09-19 | 689 | 179.14d |  |  | 60h |  |
| 840 | 1.4.7.5.1 | **Group Delay Trace Coordinates** | 3.68d? | 2008-09-10 | 2008-09-15 | 1193 | 179.14d | 0d |  | 30h |  |
| 841 | 1.4.7.5.1.1 | Implement Measurement Value Transform | 0.91d? | 2008-09-10 | 2008-09-11 |  | 179.14d | 0d | Gowie [70%]; Mike [55%] | 8h |  |
| 842 | 1.4.7.5.1.2 | Implement Availablity Action | 1.36d? | 2008-09-11 | 2008-09-12 | 841 | 179.14d | 0d | Gowie [70%]; Mike [55%] | 12h |  |
| 843 | 1.4.7.5.1.3 | Unit testing | 0.5d? | 2008-09-12 | 2008-09-15 | 842 | 179.14d | 0d | Gowie [25%]; Mike [25%] | 2h |  |
| 844 | 1.4.7.5.1.4 | Enhance All Events for this data | 0.91d? | 2008-09-15 | 2008-09-15 | 843 | 179.14d |  | Gowie [70%]; Mike [55%] | 8h |  |
| 845 | 1.4.7.5.2 | **Polar Trace Coordinates** | 3.68d? | 2008-09-15 | 2008-09-19 | 840 | 179.14d |  |  | 30h |  |
| 846 | 1.4.7.5.2.1 | Implement Measurement Value Transform | 0.91d? | 2008-09-15 | 2008-09-16 |  | 179.14d | 0d | Gowie [70%]; Mike [55%] | 8h |  |
| 847 | 1.4.7.5.2.2 | Implement Availablity Action | 1.36d? | 2008-09-16 | 2008-09-18 | 846 | 179.14d | 0d | Gowie [70%]; Mike [55%] | 12h |  |
| 848 | 1.4.7.5.2.3 | Unit testing | 0.5d? | 2008-09-18 | 2008-09-18 | 847 | 179.14d | 0d | Gowie [25%]; Mike [25%] | 2h |  |
| 849 | 1.4.7.5.2.4 | Enhance All Events for this data | 0.91d? | 2008-09-18 | 2008-09-19 | 848 | 179.14d |  | Gowie [70%]; Mike [55%] | 8h |  |
| 850 | 1.4.7.6 | **Signal Generation** | 3.08d? | 2008-09-10 | 2008-09-15 |  | 183.43d |  |  | 30.77h |  |
| 851 | 1.4.7.6.1 | **Noise** | 3.08d? | 2008-09-10 | 2008-09-15 |  | 183.43d |  |  | 30.77h |  |
| 852 | 1.4.7.6.1.1 | Random | 0.77d? | 2008-09-10 | 2008-09-11 |  | 183.43d | 0d | Gowie [70%]; Mike [55%] | 7.69h |  |
| 853 | 1.4.7.6.1.2 | Pink | 0.77d? | 2008-09-11 | 2008-09-11 | 852 | 183.43d | 0d | Gowie [70%]; Mike [55%] | 7.69h |  |
| 854 | 1.4.7.6.1.3 | White | 0.77d? | 2008-09-11 | 2008-09-12 | 853 | 183.43d | 0d | Gowie [70%]; Mike [55%] | 7.69h |  |
| 855 | 1.4.7.6.1.4 | Gaussian | 0.77d? | 2008-09-12 | 2008-09-15 | 854 | 183.43d |  | Gowie [70%]; Mike [55%] | 7.69h |  |

| ID | WBS | Task | Type | Duration | Start | Finish | Predecessors | Total slack | Free slack | Resources | Work | Text1 |
| --- | --- | --- | --- | --- | --- | --- | --- | --- | --- | --- | --- | --- |
| 856 | 1.4.7.7 | **Testing** |  | 9.09d? | 2008-09-10 | 2008-09-23 |  | 175.6d | 0d |  | 80h |  |
| 857 | 1.4.7.7.1 | Test available status for all combinatioins of Meas Data, Meas Value, transducer units, trace coord |  | 1.82d? | 2008-09-10 | 2008-09-12 |  | 175.6d | 0d | Gowie [70%]; Mike [55%] | 16h |  |
| 858 | 1.4.7.7.2 | Test mode change event for all combinations |  | 1.82d? | 2008-09-12 | 2008-09-15 | 857 | 175.6d | 0d | Gowie [70%]; Mike [55%] | 16h |  |
| 859 | 1.4.7.7.3 | Test state change event for all combinations |  | 1.82d? | 2008-09-15 | 2008-09-17 | 858 | 175.6d | 0d | Gowie [70%]; Mike [55%] | 16h |  |
| 860 | 1.4.7.7.4 | Test data available event for all combinations |  | 1.82d? | 2008-09-17 | 2008-09-19 | 859 | 175.6d | 0d | Gowie [70%]; Mike [55%] | 16h |  |
| 861 | 1.4.7.7.5 | Collect baseline performace |  | 1.82d? | 2008-09-19 | 2008-09-23 | 860 | 175.6d | 0d | Gowie [70%]; Mike [55%] | 16h |  |
| 862 | 1.4.7.8 | **Code Review** |  | 1.82d? | 2008-09-23 | 2008-09-25 | 856 | 175.6d |  |  | 16h |  |
| 863 | 1.4.7.8.1 | Code review trace and meas values |  | 0.91d? | 2008-09-23 | 2008-09-24 | 861 | 175.6d | 0d | Gowie [70%]; Mike [55%] | 8h |  |
| 864 | 1.4.7.8.2 | implement changes |  | 0.91d? | 2008-09-24 | 2008-09-25 | 863 | 175.6d |  | Gowie [70%]; Mike [55%] | 8h |  |
| 865 | 1.4.8 | **Phase 5** |  | 16.36d? | 2009-01-19 | 2009-02-11 | 759 | 92.98d | 0d |  | 144h | P5 |
| 866 | 1.4.8.1 | **Transforms** |  | 5.45d? | 2009-01-19 | 2009-01-27 | 762 | 92.98d | 0d |  | 24h |  |
| 867 | 1.4.8.1.1 | **STFT** |  | 5.45d? | 2009-01-19 | 2009-01-27 | 1037 | 92.98d | 0d |  | 24h | P5 |
| 868 | 1.4.8.1.1.1 | Design FFT Interface |  | 1.82d? | 2009-01-19 | 2009-01-21 |  | 97.98d | 0d | Mike [55%] | 8h |  |
| 869 | 1.4.8.1.1.2 | Implement FFT Interface |  | 1.82d? | 2009-01-21 | 2009-01-23 | 868 | 97.98d | 0d | Mike [55%] | 8h |  |
| 870 | 1.4.8.1.1.3 | Test & Verify FFT Interface |  | 1.82d? | 2009-01-23 | 2009-01-27 | 869 | 97.98d |  | Mike [55%] | 8h |  |
| 871 | 1.4.8.1.2 | **Resampling : Assume this will be done in the IE** |  | 0d? | 2009-01-27 | 2009-01-27 | 867 | 92.98d |  |  |  | P5 |
| 872 | 1.4.8.1.2.1 | Design FFT Interface | milestone | 0d? | 2009-01-27 | 2009-01-27 |  | 97.98d | 0d | Mike [55%] |  |  |
| 873 | 1.4.8.1.2.2 | Implement FFT Interface | milestone | 0d? | 2009-01-27 | 2009-01-27 | 872 | 97.98d | 0d | Mike [55%] |  |  |
| 874 | 1.4.8.1.2.3 | Test & Verify FFT Interface | milestone | 0d? | 2009-01-27 | 2009-01-27 | 873 | 97.98d |  | Mike [55%] |  |  |
| 875 | 1.4.8.2 | **Marker Functions** |  | 4.29d? | 2009-01-19 | 2009-01-26 | 1333 | 94.15d | 1.17d |  | 24h |  |
| 876 | 1.4.8.2.1 | Peak Search |  | 0.71d? | 2009-01-19 | 2009-01-20 |  | 94.15d | 0d | Kapil [70%] | 4h |  |
| 877 | 1.4.8.2.2 | Next Largest Peak |  | 0.71d? | 2009-01-20 | 2009-01-21 | 876 | 94.15d | 0d | Kapil [70%] | 4h |  |
| 878 | 1.4.8.2.3 | Next Peak Right |  | 0.71d? | 2009-01-21 | 2009-01-21 | 877 | 99.15d | 0d | Kapil [70%] | 4h |  |
| 879 | 1.4.8.2.4 | Next Peak Left |  | 0.71d? | 2009-01-21 | 2009-01-22 | 878 | 99.15d | 0d | Kapil [70%] | 4h |  |
| 880 | 1.4.8.2.5 | Peak Tracking |  | 0.71d? | 2009-01-22 | 2009-01-23 | 879 | 99.15d | 0d | Kapil [70%] | 4h |  |
| 881 | 1.4.8.2.6 | Marker to Center |  | 0.71d? | 2009-01-23 | 2009-01-26 | 880 | 94.15d |  | Kapil [70%] | 4h |  |

| ID | WBS | Task | Duration | Start | Finish | Predecessors | Total slack | Free slack | Resources | Work | Text1 |
| --- | --- | --- | --- | --- | --- | --- | --- | --- | --- | --- | --- |
| 882 | 1.4.8.3 | **Testing** | 9.09d? | 2009-01-27 | 2009-02-09 | 866, 875 | 92.98d | 0d |  | 80h |  |
| 883 | 1.4.8.3.1 | Test available status for all combinatioins of Meas Data, Meas Value, transducer units, trace coord | 1.82d? | 2009-01-27 | 2009-01-29 |  | 97.98d | 0d | Gowie [70%]; Mike [55%] | 16h |  |
| 884 | 1.4.8.3.2 | Test mode change event for all combinations | 1.82d? | 2009-01-29 | 2009-01-30 | 883 | 97.98d | 0d | Gowie [70%]; Mike [55%] | 16h |  |
| 885 | 1.4.8.3.3 | Test state change event for all combinations | 1.82d? | 2009-01-30 | 2009-02-03 | 884 | 97.98d | 0d | Gowie [70%]; Mike [55%] | 16h |  |
| 886 | 1.4.8.3.4 | Test data available event for all combinations | 1.82d? | 2009-02-03 | 2009-02-05 | 885 | 97.98d | 0d | Gowie [70%]; Mike [55%] | 16h |  |
| 887 | 1.4.8.3.5 | Collect baseline performace | 1.82d? | 2009-02-05 | 2009-02-09 | 886 | 97.98d | 0d | Gowie [70%]; Mike [55%] | 16h |  |
| 888 | 1.4.8.4 | **Code Review** | 1.82d? | 2009-02-09 | 2009-02-11 | 882 | 92.98d |  |  | 16h |  |
| 889 | 1.4.8.4.1 | Code review trace and meas values | 0.91d? | 2009-02-09 | 2009-02-10 | 887 | 97.98d | 0d | Gowie [70%]; Mike [55%] | 8h |  |
| 890 | 1.4.8.4.2 | implement changes | 0.91d? | 2009-02-10 | 2009-02-11 | 889 | 97.98d |  | Gowie [70%]; Mike [55%] | 8h |  |
| 891 | 1.4.9 | **Phase 6** | 10.91d? | 2009-02-11 | 2009-02-26 | 865 | 92.98d | 0d |  | 302h | P6 |
| 892 | 1.4.9.1 | **Averaging Stepped Sine Mode** | 2.73d? | 2009-02-11 | 2009-02-13 |  | 101.17d |  |  | 24h |  |
| 893 | 1.4.9.1.1 | Design Averaging Interface | 0.91d? | 2009-02-11 | 2009-02-12 |  | 106.17d | 0d | Gowie [70%]; Mike [55%] | 8h |  |
| 894 | 1.4.9.1.2 | Implement Averaging Interface | 0.91d? | 2009-02-12 | 2009-02-13 | 893 | 101.17d | 0d | Gowie [70%]; Mike [55%] | 8h |  |
| 895 | 1.4.9.1.3 | Test & Verify Averaging Interface For All Swept Sine average types | 0.91d? | 2009-02-13 | 2009-02-13 | 894 | 101.17d |  | Gowie [70%]; Mike [55%] | 8h |  |
| 896 | 1.4.9.2 | **Measurement Traces** | 2.67d? | 2009-02-11 | 2009-02-13 | 767 | 101.23d |  |  | 26h |  |
| 897 | 1.4.9.2.1 | **Normalize Variance** | 2.67d? | 2009-02-11 | 2009-02-13 | 1182 | 101.23d |  |  | 26h | P6 |
| 898 | 1.4.9.2.1.1 | Implement Meas Data Transform | 0.42d? | 2009-02-11 | 2009-02-11 |  | 101.23d | 0d | Mike [55%]; Gowie [70%] | 4h |  |
| 899 | 1.4.9.2.1.2 | Implement Availablity Action | 0.42d? | 2009-02-11 | 2009-02-12 | 898 | 101.23d | 0d | Mike [55%]; Gowie [70%] | 4h |  |
| 900 | 1.4.9.2.1.3 | Unit testing | 0.83d? | 2009-02-12 | 2009-02-12 | 899 | 101.23d | 0d | Mike [55%]; Gowie [70%] | 8h |  |
| 901 | 1.4.9.2.1.4 | Enhance All Events for this data | 1d? | 2009-02-12 | 2009-02-13 | 900 | 101.23d |  | Gowie [70%]; Mike [55%] | 10h |  |
| 902 | 1.4.9.3 | **Filters** | 6d? | 2009-02-11 | 2009-02-19 |  | 97.89d |  |  | 116h |  |
| 903 | 1.4.9.3.1 | **Weighting Filters** | 6d? | 2009-02-11 | 2009-02-19 |  | 97.89d |  |  | 58h |  |
| 904 | 1.4.9.3.1.1 | Implement Meas Data Transform | 1.67d? | 2009-02-11 | 2009-02-12 |  | 97.89d | 0d | Mike [55%]; Gowie [70%] | 16h |  |
| 905 | 1.4.9.3.1.2 | Implement Availablity Action | 1.67d? | 2009-02-12 | 2009-02-16 | 904 | 97.89d | 0d | Mike [55%]; Gowie [70%] | 16h |  |
| 906 | 1.4.9.3.1.3 | Unit testing | 1.67d? | 2009-02-16 | 2009-02-18 | 905 | 97.89d | 0d | Mike [55%]; Gowie [70%] | 16h |  |
| 907 | 1.4.9.3.1.4 | Enhance All Events for this data | 1d? | 2009-02-18 | 2009-02-19 | 906 | 97.89d |  | Gowie [70%]; Mike [55%] | 10h |  |

| ID | WBS | Task | Duration | Start | Finish | Predecessors | Total slack | Free slack | Resources | Work |
| --- | --- | --- | --- | --- | --- | --- | --- | --- | --- | --- |
| 908 | 1.4.9.3.2 | **C Message** | 6d? | 2009-02-11 | 2009-02-19 |  | 97.89d |  |  | 58h |
| 909 | 1.4.9.3.2.1 | Implement Meas Data Transform | 1.67d? | 2009-02-11 | 2009-02-12 |  | 97.89d | 0d | Mike [55%]; Gowie [70%] | 16h |
| 910 | 1.4.9.3.2.2 | Implement Availablity Action | 1.67d? | 2009-02-12 | 2009-02-16 | 909 | 97.89d | 0d | Mike [55%]; Gowie [70%] | 16h |
| 911 | 1.4.9.3.2.3 | Unit testing | 1.67d? | 2009-02-16 | 2009-02-18 | 910 | 97.89d | 0d | Mike [55%]; Gowie [70%] | 16h |
| 912 | 1.4.9.3.2.4 | Enhance All Events for this data | 1d? | 2009-02-18 | 2009-02-19 | 911 | 97.89d |  | Gowie [70%]; Mike [55%] | 10h |
| 913 | 1.4.9.4 | **Math** | 3.2d? | 2009-02-11 | 2009-02-16 | 687, 1428 | 99.89d |  |  | 32h |
| 914 | 1.4.9.4.1 | Cepstrum | 0.4d? | 2009-02-11 | 2009-02-11 |  | 99.89d | 0d | Gowie [70%]; Mike [55%] | 4h |
| 915 | 1.4.9.4.2 | Basic Complex math | 0.4d? | 2009-02-11 | 2009-02-11 | 914 | 99.89d | 0d | Gowie [70%]; Mike [55%] | 4h |
| 916 | 1.4.9.4.3 | Hilbert | 0.8d? | 2009-02-11 | 2009-02-12 | 915 | 99.89d | 0d | Gowie [70%]; Mike [55%] | 8h |
| 917 | 1.4.9.4.4 | Conversions | 0.8d? | 2009-02-12 | 2009-02-13 | 916 | 99.89d | 0d | Gowie [70%]; Mike [55%] | 8h |
| 918 | 1.4.9.4.5 | Differentiation/Integration | 0.4d? | 2009-02-13 | 2009-02-13 | 917 | 99.89d | 0d | Gowie [70%]; Mike [55%] | 4h |
| 919 | 1.4.9.4.6 | Statistical (mean,mode…) | 0.4d? | 2009-02-13 | 2009-02-16 | 918 | 104.89d | 0d | Gowie [70%]; Mike [55%] | 4h |
| 920 | 1.4.9.5 | **Limit lines** | 0.8d? | 2009-02-16 | 2009-02-17 |  | 99.89d |  |  | 8h |
| 921 | 1.4.9.5.1 | Upper limit | 0.4d? | 2009-02-16 | 2009-02-16 | 919 | 104.89d | 0d | Gowie [70%]; Mike [55%] | 4h |
| 922 | 1.4.9.5.2 | Lower limit | 0.4d? | 2009-02-16 | 2009-02-17 | 921 | 99.89d |  | Gowie [70%]; Mike [55%] | 4h |
| 923 | 1.4.9.6 | **Testing** | 9.09d? | 2009-02-11 | 2009-02-24 |  | 92.98d | 0d |  | 80h |
| 924 | 1.4.9.6.1 | Test available status for all combinatioins of Meas Data, Meas Value, transducer units, trace coord | 1.82d? | 2009-02-11 | 2009-02-13 |  | 97.98d | 0d | Gowie [70%]; Mike [55%] | 16h |
| 925 | 1.4.9.6.2 | Test mode change event for all combinations | 1.82d? | 2009-02-13 | 2009-02-16 | 924 | 97.98d | 0d | Gowie [70%]; Mike [55%] | 16h |
| 926 | 1.4.9.6.3 | Test state change event for all combinations | 1.82d? | 2009-02-16 | 2009-02-18 | 925 | 97.98d | 0d | Gowie [70%]; Mike [55%] | 16h |
| 927 | 1.4.9.6.4 | Test data available event for all combinations | 1.82d? | 2009-02-18 | 2009-02-20 | 926 | 97.98d | 0d | Gowie [70%]; Mike [55%] | 16h |
| 928 | 1.4.9.6.5 | Collect baseline performace | 1.82d? | 2009-02-20 | 2009-02-24 | 927 | 97.98d | 0d | Gowie [70%]; Mike [55%] | 16h |
| 929 | 1.4.9.7 | **Code Review** | 1.82d? | 2009-02-24 | 2009-02-26 | 923 | 92.98d |  |  | 16h |
| 930 | 1.4.9.7.1 | Code review trace and meas values | 0.91d? | 2009-02-24 | 2009-02-25 | 928 | 97.98d | 0d | Gowie [70%]; Mike [55%] | 8h |
| 931 | 1.4.9.7.2 | implement changes | 0.91d? | 2009-02-25 | 2009-02-26 | 930 | 97.98d |  | Gowie [70%]; Mike [55%] | 8h |

| ID | WBS | Task | Duration | Start | Finish | Predecessors | Complete | Remaining | Total slack | Free slack | Resources | Work | Actual work | Text1 |
| --- | --- | --- | --- | --- | --- | --- | --- | --- | --- | --- | --- | --- | --- | --- |
| 932 | 1.4.10 | **Phase 7** | 10.91d? | 2009-02-26 | 2009-03-13 | 891 |  |  | 92.98d |  |  | 120h |  | P7 |
| 933 | 1.4.10.1 | **Averaging Octave Mode** | 3d? | 2009-02-26 | 2009-03-03 |  |  |  | 100.89d |  |  | 24h |  |  |
| 934 | 1.4.10.1.1 | Design Averaging Interface | 1d? | 2009-02-26 | 2009-02-27 |  |  |  | 100.89d | 0d |  | 8h |  |  |
| 935 | 1.4.10.1.2 | Implement Averaging Interface | 1d? | 2009-02-27 | 2009-03-02 | 934 |  |  | 100.89d | 0d |  | 8h |  |  |
| 936 | 1.4.10.1.3 | Test & Verify Averaging Interface For All Swept Sine average types | 1d? | 2009-03-02 | 2009-03-03 | 935 |  |  | 100.89d |  |  | 8h |  |  |
| 937 | 1.4.10.2 | **Testing** | 9.09d? | 2009-02-26 | 2009-03-11 |  |  |  | 92.98d | 0d |  | 80h |  |  |
| 938 | 1.4.10.2.1 | Test available status for all combinatioins of Meas Data, Meas Value, transducer units, trace coord | 1.82d? | 2009-02-26 | 2009-02-27 |  |  |  | 97.98d | 0d | Gowie [70%]; Mike [55%] | 16h |  |  |
| 939 | 1.4.10.2.2 | Test mode change event for all combinations | 1.82d? | 2009-02-27 | 2009-03-03 | 938 |  |  | 97.98d | 0d | Gowie [70%]; Mike [55%] | 16h |  |  |
| 940 | 1.4.10.2.3 | Test state change event for all combinations | 1.82d? | 2009-03-03 | 2009-03-05 | 939 |  |  | 97.98d | 0d | Gowie [70%]; Mike [55%] | 16h |  |  |
| 941 | 1.4.10.2.4 | Test data available event for all combinations | 1.82d? | 2009-03-05 | 2009-03-09 | 940 |  |  | 97.98d | 0d | Gowie [70%]; Mike [55%] | 16h |  |  |
| 942 | 1.4.10.2.5 | Collect baseline performace | 1.82d? | 2009-03-09 | 2009-03-11 | 941 |  |  | 97.98d | 0d | Gowie [70%]; Mike [55%] | 16h |  |  |
| 943 | 1.4.10.3 | **Code Review** | 1.82d? | 2009-03-11 | 2009-03-13 | 937 |  |  | 92.98d |  |  | 16h |  |  |
| 944 | 1.4.10.3.1 | Code review trace and meas values | 0.91d? | 2009-03-11 | 2009-03-12 | 942 |  |  | 97.98d | 0d | Gowie [70%]; Mike [55%] | 8h |  |  |
| 945 | 1.4.10.3.2 | implement changes | 0.91d? | 2009-03-12 | 2009-03-13 | 944 |  |  | 97.98d |  | Gowie [70%]; Mike [55%] | 8h |  |  |
| 946 | 1.5 | **Measurement Layer** | 382d? | 2008-02-04 A | 2009-07-21 |  | 21% | 301.41d? | 0d |  |  | 5649.48h | 1229.88h |  |
| 947 | 1.5.1 | **Data model design** | 6.43d? | 2008-05-14 A | 2008-05-22 A |  | 100% |  |  |  |  | 36h | 36h | P1 |
| 948 | 1.5.1.1 | Review the current design/implementation | 0.71d? | 2008-05-14 A | 2008-05-14 A |  | 100% |  |  |  | Kapil [70%] | 4h | 4h |  |
| 949 | 1.5.1.2 | Complete the implementation | 2.86d? | 2008-05-14 A | 2008-05-19 A | 948 | 100% |  |  |  | Kapil [70%] | 16h | 16h |  |
| 950 | 1.5.1.3 | Review with the team & update | 1.43d? | 2008-05-19 A | 2008-05-21 A | 949 | 100% |  |  |  | Kapil [70%] | 8h | 8h |  |
| 951 | 1.5.1.4 | Build some test cases | 1.43d? | 2008-05-21 A | 2008-05-22 A | 950 | 100% |  |  |  | Kapil [70%] | 8h | 8h |  |
| 952 | 1.5.2 | **Infrastrucutre development** | 12.14d? | 2008-05-22 A | 2008-06-09 A |  | 100% |  |  |  |  | 68h | 68h | P1 |
| 953 | 1.5.2.1 | VS Project setup and tuning | 2.86d? | 2008-05-22 A | 2008-05-27 A | 951 | 100% |  |  |  | Kapil [70%] | 16h | 16h |  |
| 954 | 1.5.2.2 | Performance test framework and setup | 2.86d? | 2008-05-27 A | 2008-05-30 A | 953 | 100% |  |  |  | Kapil [70%] | 16h | 16h |  |
| 955 | 1.5.2.3 | Verfication test process and guidelines | 3.57d? | 2008-05-30 A | 2008-06-04 A | 954 | 100% |  |  |  | Kapil [70%] | 20h | 20h |  |
| 956 | 1.5.2.4 | Documentation tool setup for library users | 0.71d? | 2008-06-04 A | 2008-06-05 A | 955 | 100% |  |  |  | Kapil [70%] | 4h | 4h |  |
| 957 | 1.5.2.5 | FxCop setup | 2.14d? | 2008-06-05 A | 2008-06-09 A | 956 | 100% |  |  |  | Kapil [70%] | 12h | 12h |  |

| ID | WBS | Task | Duration | Start | Finish | Predecessors | Complete | Remaining | Total slack | Free slack | Constraint | Resources | Work | Actual work | Text1 |
| --- | --- | --- | --- | --- | --- | --- | --- | --- | --- | --- | --- | --- | --- | --- | --- |
| 958 | 1.5.3 | **Unmanaged interface definition** | 99d? | 2008-02-04 A | 2008-06-19 |  | 30% | 69.6d? | 283d |  |  |  | 376h | 108h |  |
| 959 | 1.5.3.1 | Define interface style/model | 8d? | 2008-02-04 A | 2008-02-13 A |  | 100% |  |  |  |  | Mike [50%] | 32h | 32h | P1 |
| 960 | 1.5.3.2 | **Transforms** | 3.57d? | 2008-02-04 A | 2008-02-07 |  | 43% | 2.04d? | 378.43d |  |  |  | 28h | 12h |  |
| 961 | 1.5.3.2.1 | FFT | 1.43d? | 2008-02-04 A | 2008-02-05 A |  | 100% |  |  |  |  | Kapil [70%] | 8h | 8h | P1 |
| 962 | 1.5.3.2.2 | STFT | 1.43d? | 2008-02-04 | 2008-02-05 |  |  |  | 380.57d |  |  | Kapil [70%] | 8h |  | P4 |
| 963 | 1.5.3.2.3 | Windowing | 0.71d? | 2008-02-06 A | 2008-02-07 A | 961 | 100% |  |  |  |  | Kapil [70%] | 4h | 4h | P1 |
| 964 | 1.5.3.2.4 | Resampling | 0.71d? | 2008-02-04 | 2008-02-04 |  |  |  | 380.57d | 0d |  | Kapil [70%] | 4h |  | P4 |
| 965 | 1.5.3.2.5 | ZoomFFT | 0.71d? | 2008-02-04 | 2008-02-05 | 964 |  |  | 380.57d |  |  | Kapil [70%] | 4h |  | P4 |
| 966 | 1.5.3.3 | **Spectrums** | 3.08d? | 2008-02-12 A | 2008-02-15 A |  | 100% |  |  |  |  |  | 16h | 16h |  |
| 967 | 1.5.3.3.1 | Linear | 0.77d? | 2008-02-12 A | 2008-02-12 A | 965 | 100% |  |  |  |  | ShashiP [65%] | 4h | 4h | P1 |
| 968 | 1.5.3.3.2 | Power | 0.77d? | 2008-02-12 A | 2008-02-13 A | 967 | 100% |  |  |  |  | ShashiP [65%] | 4h | 4h | P1 |
| 969 | 1.5.3.3.3 | Phase | 0.77d? | 2008-02-13 A | 2008-02-14 A | 968 | 100% |  |  |  |  | ShashiP [65%] | 4h | 4h | P2 |
| 970 | 1.5.3.3.4 | Cross power | 0.77d? | 2008-02-14 A | 2008-02-15 A | 969 | 100% |  |  |  |  | ShashiP [65%] | 4h | 4h | P2 |
| 971 | 1.5.3.4 | **Filters** | 11.43d? | 2008-02-15 | 2008-03-03 |  |  |  | 361.49d |  |  |  | 64h |  | P5 |
| 972 | 1.5.3.4.1 | Weighting filters | 5.71d? | 2008-02-15 | 2008-02-22 | 970 |  |  | 361.49d | 0d |  | Kapil [70%] | 32h |  |  |
| 973 | 1.5.3.4.2 | CCIR | 2.86d? | 2008-02-22 | 2008-02-27 | 972 |  |  | 361.49d | 0d |  | Kapil [70%] | 16h |  |  |
| 974 | 1.5.3.4.3 | Low Pass, high pass, band pass, notch | 2.86d? | 2008-02-27 | 2008-03-03 | 973 |  |  | 361.49d |  |  | Kapil [70%] | 16h |  |  |
| 975 | 1.5.3.5 | **Distortion** | 67.35d? | 2008-03-03 A | 2008-06-04 |  | 14% | 57.73d? | 291.29d |  |  |  | 28h | 4h |  |
| 976 | 1.5.3.5.1 | THD | 0.71d? | 2008-03-03 A | 2008-03-04 A | 974 | 100% |  |  |  |  | Kapil [70%] | 4h | 4h | P1 |
| 977 | 1.5.3.5.2 | THD + Noise | 1.43d? | 2008-06-02 | 2008-06-03 |  |  |  | 262.25d | 0d | start no earlier than 2008-06-02 | Ramkumar [70%] | 8h |  | P3 |
| 978 | 1.5.3.5.3 | SINAD | 0.71d? | 2008-06-02 | 2008-06-02 |  |  |  | 295.57d | 0d | start no earlier than 2008-06-02 | Kapil [70%] | 4h |  | P3 |
| 979 | 1.5.3.5.4 | ENOB | 0.71d? | 2008-06-03 | 2008-06-04 | 977 |  |  | 262.25d | 0d |  | Ramkumar [70%] | 4h |  | P3 |
| 980 | 1.5.3.5.5 | SNR | 0.71d? | 2008-06-04 | 2008-06-04 | 979 |  |  | 262.25d | 0d |  | Ramkumar [70%] | 4h |  | P3 |
| 981 | 1.5.3.5.6 | SFDR | 0.71d? | 2008-06-02 | 2008-06-03 | 978 |  |  | 284.43d |  |  | Kapil [70%] | 4h |  | P3 |
| 982 | 1.5.3.6 | Averaging | 7.14d? | 2008-03-10 A | 2008-03-19 A |  | 100% |  |  |  |  | Kapil [70%] | 40h | 40h | P2 |
| 983 | 1.5.3.7 | Coherence | 1.43d? | 2008-06-03 | 2008-06-04 | 981 |  |  | 284.43d | 0d |  | Kapil [70%] | 8h |  | P3 |

| ID | WBS | Task | Duration | Start | Finish | Predecessors | Complete | Remaining | Total slack | Free slack | Resources | Work | Actual work | Text1 |
| --- | --- | --- | --- | --- | --- | --- | --- | --- | --- | --- | --- | --- | --- | --- |
| 984 | 1.5.3.8 | **Signal Generation** | 55.64d? | 2008-03-24 A | 2008-06-09 |  | 21% | 43.84d? | 261.28d |  |  | 20h | 4h |  |
| 985 | 1.5.3.8.1 | Sine | 0.77d? | 2008-03-24 A | 2008-03-24 A | 983 | 100% |  |  |  | Ramkumar [70%] | 4h | 4h | P2 |
| 986 | 1.5.3.8.2 | **Noise** | 2.86d? | 2008-06-04 | 2008-06-09 |  |  |  | 261.28d |  |  | 16h |  | P3 |
| 987 | 1.5.3.8.2.1 | Random | 0.71d? | 2008-06-04 | 2008-06-05 | 980 |  |  | 262.25d | 0d | Ramkumar [70%] | 4h |  |  |
| 988 | 1.5.3.8.2.2 | Pink | 0.71d? | 2008-06-05 | 2008-06-06 | 987 |  |  | 262.25d | 0d | Ramkumar [70%] | 4h |  |  |
| 989 | 1.5.3.8.2.3 | White | 0.71d? | 2008-06-06 | 2008-06-09 | 988 |  |  | 262.25d | 0d | Ramkumar [70%] | 4h |  |  |
| 990 | 1.5.3.8.2.4 | Gaussian | 0.71d? | 2008-06-09 | 2008-06-09 | 989 |  |  | 261.28d |  | Ramkumar [70%] | 4h |  |  |
| 991 | 1.5.3.9 | Octave | 1.43d? | 2008-02-04 | 2008-02-05 |  |  |  | 362.68d | 0d | Ramkumar [70%] | 8h |  | P6 |
| 992 | 1.5.3.10 | **Math** | 8.14d? | 2008-02-05 | 2008-02-15 |  |  |  | 361.68d |  |  | 40h |  | P6 |
| 993 | 1.5.3.10.1 | Cepstrum | 1.43d? | 2008-02-05 | 2008-02-06 | 991 |  |  | 362.68d | 0d | Kapil [70%] | 8h |  |  |
| 994 | 1.5.3.10.2 | Basic Complex math | 1.43d? | 2008-02-06 | 2008-02-08 | 993 |  |  | 362.68d | 0d | Kapil [70%] | 8h |  |  |
| 995 | 1.5.3.10.3 | Hilbert | 1.43d? | 2008-02-08 | 2008-02-12 | 994 |  |  | 361.68d | 0d | Kapil [70%] | 8h |  |  |
| 996 | 1.5.3.10.4 | Conversions | 1.43d? | 2008-02-12 | 2008-02-14 | 995 |  |  | 361.68d | 0d | Kapil [70%] | 8h |  |  |
| 997 | 1.5.3.10.5 | Differentiation/Integration | 0.71d? | 2008-02-14 | 2008-02-14 | 996 |  |  | 361.68d | 0d | Kapil [70%] | 4h |  |  |
| 998 | 1.5.3.10.6 | Statistical (mean,mode…) | 0.71d? | 2008-02-14 | 2008-02-15 | 997 |  |  | 361.68d | 0d | Kapil [70%] | 4h |  |  |
| 999 | 1.5.3.11 | **Limit lines** | 2d? | 2008-02-15 | 2008-02-19 |  |  |  | 361.68d |  |  | 8h |  | P6 |
| 1000 | 1.5.3.11.1 | Upper limit | 1d? | 2008-02-15 | 2008-02-18 | 998 |  |  | 361.68d | 0d | Mike [50%] | 4h |  |  |
| 1001 | 1.5.3.11.2 | Lower limit | 1d? | 2008-02-18 | 2008-02-19 | 1000 |  |  | 361.68d | 0d | Mike [50%] | 4h |  |  |
| 1002 | 1.5.3.12 | **Swept Sine** | 4.46d? | 2008-02-19 | 2008-02-26 |  |  |  | 361.68d |  |  | 20h |  |  |
| 1003 | 1.5.3.12.1 | Gain, Phase margins | 1d? | 2008-02-19 | 2008-02-20 | 1001 |  |  | 361.68d | 0d | Mike [50%] | 4h |  | P3 |
| 1004 | 1.5.3.12.2 | Frequency, Damping | 1d? | 2008-02-20 | 2008-02-21 | 1003 |  |  | 361.68d | 0d | Mike [50%] | 4h |  | P3 |
| 1005 | 1.5.3.12.3 | Frequency Response | 0.51d? | 2008-02-21 | 2008-02-22 | 1004 |  |  | 361.68d | 0d | Kapil [50%]; ShashiP [65%] | 4h |  | P3 |
| 1006 | 1.5.3.12.4 | Variance | 1d? | 2008-02-22 | 2008-02-25 | 1005 |  |  | 361.68d | 0d | Mike [50%] | 4h |  | P3 |
| 1007 | 1.5.3.12.5 | Group Delay | 0.77d? | 2008-02-25 | 2008-02-26 | 1006 |  |  | 361.68d | 0d | Ramkumar [65%] | 4h |  | P3 |

| ID | WBS | Task | Duration | Start | Finish | Predecessors | Complete | Remaining | Total slack | Free slack | Resources | Work | Actual work | Text1 |
| --- | --- | --- | --- | --- | --- | --- | --- | --- | --- | --- | --- | --- | --- | --- |
| 1008 | 1.5.3.13 | **Marker Functions** | 4.29d? | 2008-02-26 | 2008-03-03 |  |  |  | 361.68d |  |  | 24h |  | P4 |
| 1009 | 1.5.3.13.1 | Peak Search | 0.71d? | 2008-02-26 | 2008-02-26 | 1007 |  |  | 361.68d | 0d | Kapil [70%] | 4h |  |  |
| 1010 | 1.5.3.13.2 | Next Largest Peak | 0.71d? | 2008-02-26 | 2008-02-27 | 1009 |  |  | 361.68d | 0d | Kapil [70%] | 4h |  |  |
| 1011 | 1.5.3.13.3 | Next Peak Right | 0.71d? | 2008-02-27 | 2008-02-28 | 1010 |  |  | 361.68d | 0d | Kapil [70%] | 4h |  |  |
| 1012 | 1.5.3.13.4 | Next Peak Left | 0.71d? | 2008-02-28 | 2008-02-28 | 1011 |  |  | 361.68d | 0d | Kapil [70%] | 4h |  |  |
| 1013 | 1.5.3.13.5 | Peak Tracking | 0.71d? | 2008-02-28 | 2008-02-29 | 1012 |  |  | 361.68d | 0d | Kapil [70%] | 4h |  |  |
| 1014 | 1.5.3.13.6 | Marker to Center | 0.71d? | 2008-02-29 | 2008-03-03 | 1013 |  |  | 361.68d |  | Kapil [70%] | 4h |  |  |
| 1015 | 1.5.3.14 | Orbit | 0.71d? | 2008-06-04 | 2008-06-05 | 983 |  |  | 284.43d | 1.43d | Kapil [70%] | 4h |  | P3 |
| 1016 | 1.5.3.15 | **Time measurements** | 9d? | 2008-06-09 | 2008-06-19 |  |  |  | 283d |  |  | 36h |  | P4 |
| 1017 | 1.5.3.15.1 | Delay time function | 1d? | 2008-06-09 | 2008-06-09 | 1015 |  |  | 283d | 0d | Mike [50%] | 4h |  |  |
| 1018 | 1.5.3.15.2 | Maximum overshoot | 1d? | 2008-06-10 | 2008-06-10 | 1017 |  |  | 283d | 0d | Mike [50%] | 4h |  |  |
| 1019 | 1.5.3.15.3 | Rise time | 1d? | 2008-06-11 | 2008-06-11 | 1018 |  |  | 283d | 0d | Mike [50%] | 4h |  |  |
| 1020 | 1.5.3.15.4 | Decay Time | 2d? | 2008-06-12 | 2008-06-13 | 1019 |  |  | 283d | 0d | Mike [50%] | 8h |  |  |
| 1021 | 1.5.3.15.5 | Pulse Width | 1d? | 2008-06-16 | 2008-06-16 | 1020 |  |  | 283d | 0d | Mike [50%] | 4h |  |  |
| 1022 | 1.5.3.15.6 | Voltage Max | 1d? | 2008-06-17 | 2008-06-17 | 1021 |  |  | 283d | 0d | Mike [50%] | 4h |  |  |
| 1023 | 1.5.3.15.7 | Voltage Min | 1d? | 2008-06-18 | 2008-06-18 | 1022 |  |  | 283d | 0d | Mike [50%] | 4h |  |  |
| 1024 | 1.5.3.15.8 | Settling time | 1d? | 2008-06-19 | 2008-06-19 | 1023 |  |  | 283d |  | Mike [50%] | 4h |  |  |
| 1025 | 1.5.4 | **Research/Implementation** | 246.83d? | 2008-02-04 A | 2009-01-13 |  | 12% | 216.41d? | 135.17d |  |  | 3182.65h | 403.05h |  |
| 1026 | 1.5.4.1 | **FFT** | 8.57d? | 2008-06-09 A | 2008-06-20 A |  | 100% |  |  |  |  | 48h | 48h | P2 |
| 1027 | 1.5.4.1.1 | Review meas catalog & update | 0.71d? | 2008-06-09 A | 2008-06-10 A | 957 | 100% |  |  |  | Kapil [70%] | 4h | 4h |  |
| 1028 | 1.5.4.1.2 | Review managed & Native interface definitions | 0.71d? | 2008-06-10 A | 2008-06-11 A | 1027 | 100% |  |  |  | Kapil [70%] | 4h | 4h |  |
| 1029 | 1.5.4.1.3 | Implementation | 2.14d? | 2008-06-11 A | 2008-06-13 A | 1028 | 100% |  |  |  | Kapil [70%] | 12h | 12h |  |
| 1030 | 1.5.4.1.4 | Unit test the code | 0.71d? | 2008-06-13 A | 2008-06-16 A | 1029 | 100% |  |  |  | Kapil [70%] | 4h | 4h |  |
| 1031 | 1.5.4.1.5 | **Verifcation** | 2.14d? | 2008-06-16 A | 2008-06-18 A |  | 100% |  |  |  |  | 12h | 12h |  |
| 1032 | 1.5.4.1.5.1 | Develop the verification code in Matlab | 0.71d? | 2008-06-16 A | 2008-06-16 A | 1030 | 100% |  |  |  | Kapil [70%] | 4h | 4h |  |
| 1033 | 1.5.4.1.5.2 | Define the test input data & pass to ML & MATLAB | 0.71d? | 2008-06-16 A | 2008-06-17 A | 1032 | 100% |  |  |  | Kapil [70%] | 4h | 4h |  |
| 1034 | 1.5.4.1.5.3 | Compare the outputs | 0.71d? | 2008-06-17 A | 2008-06-18 A | 1033 | 100% |  |  |  | Kapil [70%] | 4h | 4h |  |
| 1035 | 1.5.4.1.6 | Measure performance & document mesaurements | 1.43d? | 2008-06-18 A | 2008-06-19 A | 1034 | 100% |  |  |  | Kapil [70%] | 8h | 8h |  |
| 1036 | 1.5.4.1.7 | Interface definition, code, Nunit , Result & Doc review | 0.71d? | 2008-06-19 A | 2008-06-20 A | 1035 | 100% |  |  |  | Kapil [70%] | 4h | 4h |  |

| ID | WBS | Task | Duration | Start | Finish | Predecessors | Complete | Total slack | Free slack | Resources | Work | Actual work | Text1 |
| --- | --- | --- | --- | --- | --- | --- | --- | --- | --- | --- | --- | --- | --- |
| 1037 | 1.5.4.2 | **STFT** | 10.71d? | 2008-06-20 | 2008-07-07 |  |  | 233.81d | 140.83d |  | 60h |  | P5 |
| 1038 | 1.5.4.2.1 | Review meas catalog & update | 0.71d? | 2008-06-20 | 2008-06-23 | 1036 |  | 238.81d | 0d | Kapil [70%] | 4h |  |  |
| 1039 | 1.5.4.2.2 | Review managed & Native interface definitions | 0.71d? | 2008-06-23 | 2008-06-23 | 1038 |  | 233.81d | 0d | Kapil [70%] | 4h |  |  |
| 1040 | 1.5.4.2.3 | Implementation Write code | 5d? | 2008-06-23 | 2008-06-30 | 1039 |  | 233.81d | 0d | Kapil [70%] | 28h |  |  |
| 1041 | 1.5.4.2.4 | Unit test the code | 0.71d? | 2008-06-30 | 2008-07-01 | 1040 |  | 233.81d | 0d | Kapil [70%] | 4h |  |  |
| 1042 | 1.5.4.2.5 | **Verifcation** | 2.14d? | 2008-07-01 | 2008-07-03 |  |  | 233.81d |  |  | 12h |  |  |
| 1043 | 1.5.4.2.5.1 | Develop the verification code in Matlab | 0.71d? | 2008-07-01 | 2008-07-02 | 1041 |  | 233.81d | 0d | Kapil [70%] | 4h |  |  |
| 1044 | 1.5.4.2.5.2 | Define the test input data & pass to ML & MATLAB | 0.71d? | 2008-07-02 | 2008-07-02 | 1043 |  | 233.81d | 0d | Kapil [70%] | 4h |  |  |
| 1045 | 1.5.4.2.5.3 | Compare the outputs | 0.71d? | 2008-07-02 | 2008-07-03 | 1044 |  | 233.81d | 0d | Kapil [70%] | 4h |  |  |
| 1046 | 1.5.4.2.6 | Measure performance & document mesaurements | 0.71d? | 2008-07-03 | 2008-07-04 | 1045 |  | 233.81d | 0d | Kapil [70%] | 4h |  |  |
| 1047 | 1.5.4.2.7 | Interface definition, code, Nunit , Result & Doc review | 0.71d? | 2008-07-04 | 2008-07-07 | 1046 |  | 238.81d |  | Kapil [70%] | 4h |  |  |
| 1048 | 1.5.4.3 | **Windowing** | 7.69d? | 2008-07-07 A | 2008-07-16 A |  | 100% |  |  |  | 40h | 40h | P2 |
| 1049 | 1.5.4.3.1 | Review meas catalog & update | 0.77d? | 2008-07-07 A | 2008-07-07 A | 1047 | 100% |  |  | ShashiP [65%] | 4h | 4h |  |
| 1050 | 1.5.4.3.2 | Review managed & Native interface definitions | 0.77d? | 2008-07-07 A | 2008-07-08 A | 1049 | 100% |  |  | ShashiP [65%] | 4h | 4h |  |
| 1051 | 1.5.4.3.3 | Write code | 1.54d? | 2008-07-08 A | 2008-07-10 A | 1050 | 100% |  |  | ShashiP [65%] | 8h | 8h |  |
| 1052 | 1.5.4.3.4 | Unit test the code | 0.77d? | 2008-07-10 A | 2008-07-10 A | 1051 | 100% |  |  | ShashiP [65%] | 4h | 4h |  |
| 1053 | 1.5.4.3.5 | **Verifcation** | 2.31d? | 2008-07-10 A | 2008-07-15 A |  | 100% |  |  |  | 12h | 12h |  |
| 1054 | 1.5.4.3.5.1 | Develop the verification code in Matlab | 0.77d? | 2008-07-10 A | 2008-07-11 A | 1052 | 100% |  |  | ShashiP [65%] | 4h | 4h |  |
| 1055 | 1.5.4.3.5.2 | Define the test input data & pass to ML & MATLAB | 0.77d? | 2008-07-11 A | 2008-07-14 A | 1054 | 100% |  |  | ShashiP [65%] | 4h | 4h |  |
| 1056 | 1.5.4.3.5.3 | Compare the outputs | 0.77d? | 2008-07-14 A | 2008-07-15 A | 1055 | 100% |  |  | ShashiP [65%] | 4h | 4h |  |
| 1057 | 1.5.4.3.6 | Measure performance & document mesaurements | 0.77d? | 2008-07-15 A | 2008-07-15 A | 1056 | 100% |  |  | ShashiP [65%] | 4h | 4h |  |
| 1058 | 1.5.4.3.7 | Interface definition, code, Nunit , Result & Doc review | 0.77d? | 2008-07-15 A | 2008-07-16 A | 1057 | 100% |  |  | ShashiP [65%] | 4h | 4h |  |
| 1059 | 1.5.4.4 | **Resampling** | 10d? | 2008-07-16 | 2008-07-30 |  |  | 200.67d |  |  | 56h |  | P4 |
| 1060 | 1.5.4.4.1 | Review meas catalog & update | 1.43d? | 2008-07-16 | 2008-07-18 | 1058 |  | 205.67d | 0d | Kapil [70%] | 8h |  |  |
| 1061 | 1.5.4.4.2 | Review managed & Native interface definitions | 1.43d? | 2008-07-18 | 2008-07-21 | 1060 |  | 200.67d | 0d | Kapil [70%] | 8h |  |  |
| 1062 | 1.5.4.4.3 | Write code | 2.86d? | 2008-07-21 | 2008-07-24 | 1061 |  | 200.67d | 0d | Kapil [70%] | 16h |  |  |
| 1063 | 1.5.4.4.4 | Unit test the code | 0.71d? | 2008-07-24 | 2008-07-25 | 1062 |  | 200.67d | 0d | Kapil [70%] | 4h |  |  |

| ID | WBS | Task | Duration | Start | Finish | Predecessors | Complete | Remaining | Total slack | Free slack | Resources | Work | Actual work | Text1 |
| --- | --- | --- | --- | --- | --- | --- | --- | --- | --- | --- | --- | --- | --- | --- |
| 1064 | 1.5.4.4.5 | **Verifcation** | 2.14d? | 2008-07-25 | 2008-07-29 |  |  |  | 200.67d |  |  | 12h |  |  |
| 1065 | 1.5.4.4.5.1 | Develop the verification code in Matlab | 0.71d? | 2008-07-25 | 2008-07-25 | 1063 |  |  | 200.67d | 0d | Kapil [70%] | 4h |  |  |
| 1066 | 1.5.4.4.5.2 | Define the test input data & pass to ML & MATLAB | 0.71d? | 2008-07-25 | 2008-07-28 | 1065 |  |  | 200.67d | 0d | Kapil [70%] | 4h |  |  |
| 1067 | 1.5.4.4.5.3 | Compare the outputs | 0.71d? | 2008-07-28 | 2008-07-29 | 1066 |  |  | 205.67d | 0d | Kapil [70%] | 4h |  |  |
| 1068 | 1.5.4.4.6 | Measure performance & document mesaurements | 0.71d? | 2008-07-29 | 2008-07-29 | 1067 |  |  | 200.67d | 0d | Kapil [70%] | 4h |  |  |
| 1069 | 1.5.4.4.7 | Interface definition, code, Nunit , Result & Doc review | 0.71d? | 2008-07-29 | 2008-07-30 | 1068 |  |  | 205.67d | 0d | Kapil [70%] | 4h |  |  |
| 1070 | 1.5.4.5 | **ZoomFFT** | 10d? | 2008-07-30 | 2008-08-13 |  |  |  | 200.67d | 21.14d |  | 56h |  | P4 |
| 1071 | 1.5.4.5.1 | Review meas catalog & update | 0.71d? | 2008-07-30 | 2008-07-31 | 1069 |  |  | 205.67d | 0d | Kapil [70%] | 4h |  |  |
| 1072 | 1.5.4.5.2 | Review managed & Native interface definitions | 0.71d? | 2008-07-31 | 2008-08-01 | 1071 |  |  | 200.67d | 0d | Kapil [70%] | 4h |  |  |
| 1073 | 1.5.4.5.3 | Write code | 2.86d? | 2008-08-01 | 2008-08-05 | 1072 |  |  | 200.67d | 0d | Kapil [70%] | 16h |  |  |
| 1074 | 1.5.4.5.4 | Unit test the code | 1.43d? | 2008-08-05 | 2008-08-07 | 1073 |  |  | 200.67d | 0d | Kapil [70%] | 8h |  |  |
| 1075 | 1.5.4.5.5 | **Verifcation** | 2.86d? | 2008-08-07 | 2008-08-12 |  |  |  | 200.67d |  |  | 16h |  |  |
| 1076 | 1.5.4.5.5.1 | Develop the verification code in Matlab | 1.43d? | 2008-08-07 | 2008-08-08 | 1074 |  |  | 200.67d | 0d | Kapil [70%] | 8h |  |  |
| 1077 | 1.5.4.5.5.2 | Define the test input data & pass to ML & MATLAB | 0.71d? | 2008-08-08 | 2008-08-11 | 1076 |  |  | 200.67d | 0d | Kapil [70%] | 4h |  |  |
| 1078 | 1.5.4.5.5.3 | Compare the outputs | 0.71d? | 2008-08-11 | 2008-08-12 | 1077 |  |  | 205.67d | 0d | Kapil [70%] | 4h |  |  |
| 1079 | 1.5.4.5.6 | Measure performance & document mesaurements | 0.71d? | 2008-08-12 | 2008-08-12 | 1078 |  |  | 200.67d | 0d | Kapil [70%] | 4h |  |  |
| 1080 | 1.5.4.5.7 | Interface definition, code, Nunit , Result & Doc review | 0.71d? | 2008-08-12 | 2008-08-13 | 1079 |  |  | 205.67d |  | Kapil [70%] | 4h |  |  |
| 1081 | 1.5.4.6 | **Spectrums** | 140.41d? | 2008-03-03 A | 2008-09-15 |  | 73% | 37.81d? | 221.59d |  |  | 163.39h | 119.39h | P2-P4 |
| 1082 | 1.5.4.6.1 | **Linear** | 7.43d? | 2008-08-13 A | 2008-08-25 A |  | 100% |  |  |  |  | 36h | 36h | P2 |
| 1083 | 1.5.4.6.1.1 | Review meas catalog & update | 0.71d? | 2008-08-13 A | 2008-08-14 A | 1080 | 100% |  |  |  | Kapil [70%] | 4h | 4h |  |
| 1084 | 1.5.4.6.1.2 | Review managed & Native interface definitions | 0.71d? | 2008-08-14 A | 2008-08-18 A | 1083 | 100% |  |  |  | Kapil [70%] | 4h | 4h |  |
| 1085 | 1.5.4.6.1.3 | Write code | 0.71d? | 2008-08-18 A | 2008-08-18 A | 1084 | 100% |  |  |  | Kapil [70%] | 4h | 4h |  |
| 1086 | 1.5.4.6.1.4 | Unit test the code | 0.71d? | 2008-08-18 A | 2008-08-19 A | 1085 | 100% |  |  |  | Kapil [70%] | 4h | 4h |  |
| 1087 | 1.5.4.6.1.5 | **Verifcation** | 2.14d? | 2008-08-19 A | 2008-08-21 A |  | 100% |  |  |  |  | 12h | 12h |  |
| 1088 | 1.5.4.6.1.5.1 | Develop the verification code in Matlab | 0.71d? | 2008-08-19 A | 2008-08-20 A | 1086 | 100% |  |  |  | Kapil [70%] | 4h | 4h |  |
| 1089 | 1.5.4.6.1.5.2 | Define the test input data & pass to ML & MATLAB | 0.71d? | 2008-08-20 A | 2008-08-20 A | 1088 | 100% |  |  |  | Kapil [70%] | 4h | 4h |  |
| 1090 | 1.5.4.6.1.5.3 | Compare the outputs | 0.71d? | 2008-08-20 A | 2008-08-21 A | 1089 | 100% |  |  |  | Kapil [70%] | 4h | 4h |  |
| 1091 | 1.5.4.6.1.6 | Measure performance & document mesaurements | 0.71d? | 2008-08-21 A | 2008-08-22 A | 1090 | 100% |  |  |  | Kapil [70%] | 4h | 4h |  |
| 1092 | 1.5.4.6.1.7 | Interface definition, code, Nunit , Result & Doc review | 0.71d? | 2008-08-22 A | 2008-08-25 A | 1091 | 100% |  |  |  | Kapil [70%] | 4h | 4h |  |

| ID | WBS | Task | Duration | Start | Finish | Predecessors | Complete | Total slack | Free slack | Resources | Work | Actual work | Text1 |
| --- | --- | --- | --- | --- | --- | --- | --- | --- | --- | --- | --- | --- | --- |
| 1093 | 1.5.4.6.2 | **Power** | 6.43d? | 2008-08-25 A | 2008-09-02 A |  | 100% |  |  |  | 36h | 36h | P2 |
| 1094 | 1.5.4.6.2.1 | Review meas catalog & update | 0.71d? | 2008-08-25 A | 2008-08-25 A | 1092 | 100% |  |  | Kapil [70%] | 4h | 4h |  |
| 1095 | 1.5.4.6.2.2 | Review managed & Native interface definitions | 0.71d? | 2008-08-25 A | 2008-08-26 A | 1094 | 100% |  |  | Kapil [70%] | 4h | 4h |  |
| 1096 | 1.5.4.6.2.3 | Write code | 0.71d? | 2008-08-26 A | 2008-08-27 A | 1095 | 100% |  |  | Kapil [70%] | 4h | 4h |  |
| 1097 | 1.5.4.6.2.4 | Unit test the code | 0.71d? | 2008-08-27 A | 2008-08-27 A | 1096 | 100% |  |  | Kapil [70%] | 4h | 4h |  |
| 1098 | 1.5.4.6.2.5 | **Verifcation** | 2.14d? | 2008-08-27 A | 2008-09-01 A |  | 100% |  |  |  | 12h | 12h |  |
| 1099 | 1.5.4.6.2.5.1 | Develop the verification code in Matlab | 0.71d? | 2008-08-27 A | 2008-08-28 A | 1097 | 100% |  |  | Kapil [70%] | 4h | 4h |  |
| 1100 | 1.5.4.6.2.5.2 | Define the test input data & pass to ML & MATLAB | 0.71d? | 2008-08-28 A | 2008-08-29 A | 1099 | 100% |  |  | Kapil [70%] | 4h | 4h |  |
| 1101 | 1.5.4.6.2.5.3 | Compare the outputs | 0.71d? | 2008-08-29 A | 2008-09-01 A | 1100 | 100% |  |  | Kapil [70%] | 4h | 4h |  |
| 1102 | 1.5.4.6.2.6 | Measure performance & document mesaurements | 0.71d? | 2008-09-01 A | 2008-09-01 A | 1101 | 100% |  |  | Kapil [70%] | 4h | 4h |  |
| 1103 | 1.5.4.6.2.7 | Interface definition, code, Nunit , Result & Doc review | 0.71d? | 2008-09-01 A | 2008-09-02 A | 1102 | 100% |  |  | Kapil [70%] | 4h | 4h |  |
| 1104 | 1.5.4.6.3 | **Phase** | 8.86d? | 2008-09-02 | 2008-09-15 |  |  | 221.59d |  |  | 44h |  | P4 |
| 1105 | 1.5.4.6.3.1 | Review meas catalog & update | 0.71d? | 2008-09-02 | 2008-09-04 | 1103 |  | 221.59d | 0d | Kapil [70%] | 4h |  |  |
| 1106 | 1.5.4.6.3.2 | Review managed & Native interface definitions | 0.71d? | 2008-09-04 | 2008-09-04 | 1105 |  | 221.59d | 0d | Kapil [70%] | 4h |  |  |
| 1107 | 1.5.4.6.3.3 | Write code | 1.43d? | 2008-09-04 | 2008-09-08 | 1106 |  | 221.59d | 0d | Kapil [70%] | 8h |  |  |
| 1108 | 1.5.4.6.3.4 | Unit test the code | 0.71d? | 2008-09-08 | 2008-09-09 | 1107 |  | 221.59d | 0d | Kapil [70%] | 4h |  |  |
| 1109 | 1.5.4.6.3.5 | **Verifcation** | 2.86d? | 2008-09-09 | 2008-09-11 |  |  | 221.59d |  |  | 16h |  |  |
| 1110 | 1.5.4.6.3.5.1 | Develop the verification code in Matlab | 1.43d? | 2008-09-09 | 2008-09-10 | 1108 |  | 221.59d | 0d | Kapil [70%] | 8h |  |  |
| 1111 | 1.5.4.6.3.5.2 | Define the test input data & pass to ML & MATLAB | 0.71d? | 2008-09-10 | 2008-09-11 | 1110 |  | 221.59d | 0d | Kapil [70%] | 4h |  |  |
| 1112 | 1.5.4.6.3.5.3 | Compare the outputs | 0.71d? | 2008-09-11 | 2008-09-11 | 1111 |  | 221.59d | 0d | Kapil [70%] | 4h |  |  |
| 1113 | 1.5.4.6.3.6 | Measure performance & document mesaurements | 0.71d? | 2008-09-11 | 2008-09-12 | 1112 |  | 221.59d | 0d | Kapil [70%] | 4h |  |  |
| 1114 | 1.5.4.6.3.7 | Interface definition, code, Nunit , Result & Doc review | 0.71d? | 2008-09-12 | 2008-09-15 | 1113 |  | 226.59d |  | Kapil [70%] | 4h |  |  |
| 1115 | 1.5.4.6.4 | **Cross power** | 8.46d? | 2008-03-03 A | 2008-03-13 A |  | 100% |  |  |  | 47.38h | 47.38h | P2 |
| 1116 | 1.5.4.6.4.1 | Review meas catalog & update | 0.77d? | 2008-03-03 A | 2008-03-03 A |  | 100% |  |  | ShashiP [70%] | 4.31h | 4.31h |  |
| 1117 | 1.5.4.6.4.2 | Review managed & Native interface definitions | 0.77d? | 2008-03-03 A | 2008-03-04 A | 1116 | 100% |  |  | ShashiP [70%] | 4.31h | 4.31h |  |
| 1118 | 1.5.4.6.4.3 | Write code | 1.54d? | 2008-03-04 A | 2008-03-06 A | 1117 | 100% |  |  | ShashiP [70%] | 8.62h | 8.62h |  |
| 1119 | 1.5.4.6.4.4 | Unit test the code | 0.77d? | 2008-03-06 A | 2008-03-06 A | 1118 | 100% |  |  | ShashiP [70%] | 4.31h | 4.31h |  |

| ID | WBS | Task | Duration | Start | Finish | Predecessors | Complete | Total slack | Free slack | Resources | Work | Actual work | Text1 |
| --- | --- | --- | --- | --- | --- | --- | --- | --- | --- | --- | --- | --- | --- |
| 1120 | 1.5.4.6.4.5 | **Verifcation** | 3.08d? | 2008-03-06 A | 2008-03-11 A |  | 100% |  |  |  | 17.23h | 17.23h |  |
| 1121 | 1.5.4.6.4.5.1 | Develop the verification code in Matlab | 1.54d? | 2008-03-06 A | 2008-03-10 A | 1119 | 100% |  |  | ShashiP [70%] | 8.62h | 8.62h |  |
| 1122 | 1.5.4.6.4.5.2 | Define the test input data & pass to ML & MATLAB | 0.77d? | 2008-03-10 A | 2008-03-11 A | 1121 | 100% |  |  | ShashiP [70%] | 4.31h | 4.31h |  |
| 1123 | 1.5.4.6.4.5.3 | Compare the outputs | 0.77d? | 2008-03-11 A | 2008-03-11 A | 1122 | 100% |  |  | ShashiP [70%] | 4.31h | 4.31h |  |
| 1124 | 1.5.4.6.4.6 | Measure performance & document mesaurements | 0.77d? | 2008-03-11 A | 2008-03-12 A | 1123 | 100% |  |  | ShashiP [70%] | 4.31h | 4.31h |  |
| 1125 | 1.5.4.6.4.7 | Interface definition, code, Nunit , Result & Doc review | 0.77d? | 2008-03-12 A | 2008-03-13 A | 1124 | 100% |  |  | ShashiP [70%] | 4.31h | 4.31h |  |
| 1126 | 1.5.4.7 | **Limit lines** | 18.86d? | 2008-03-13 | 2008-04-09 |  |  | 238.04d |  |  | 100h |  | P7 |
| 1127 | 1.5.4.7.1 | Review meas catalog & update | 0.71d? | 2008-03-13 | 2008-03-14 | 1125 |  | 244.04d | 0d | Kapil [70%] | 4h |  |  |
| 1128 | 1.5.4.7.2 | Review managed & Native interface definitions | 0.71d? | 2008-03-14 | 2008-03-14 | 1127 |  | 239.04d | 0d | Kapil [70%] | 4h |  |  |
| 1129 | 1.5.4.7.3 | Write code | 5d? | 2008-03-14 | 2008-03-24 | 1128 |  | 238.04d | 0d | Kapil [70%] | 28h |  |  |
| 1130 | 1.5.4.7.4 | Unit test the code | 2.14d? | 2008-03-24 | 2008-03-27 | 1129 |  | 238.04d | 0d | Kapil [70%] | 12h |  |  |
| 1131 | 1.5.4.7.5 | **Verifcation** | 3.57d? | 2008-03-27 | 2008-04-01 |  |  | 238.04d |  |  | 20h |  |  |
| 1132 | 1.5.4.7.5.1 | Develop the verification code in Matlab | 1.43d? | 2008-03-27 | 2008-03-28 | 1130 |  | 238.04d | 0d | Kapil [70%] | 8h |  |  |
| 1133 | 1.5.4.7.5.2 | Define the test input data & pass to ML & MATLAB | 1.43d? | 2008-03-28 | 2008-03-31 | 1132 |  | 238.04d | 0d | Kapil [70%] | 8h |  |  |
| 1134 | 1.5.4.7.5.3 | Compare the outputs | 0.71d? | 2008-03-31 | 2008-04-01 | 1133 |  | 238.04d | 0d | Kapil [70%] | 4h |  |  |
| 1135 | 1.5.4.7.6 | Measure performance & document mesaurements | 0.71d? | 2008-04-01 | 2008-04-02 | 1134 |  | 238.04d | 0d | Kapil [70%] | 4h |  |  |
| 1136 | 1.5.4.7.7 | Interface definition, code, Nunit , Result & Doc review | 0.71d? | 2008-04-02 | 2008-04-03 | 1135 |  | 243.04d | 0d | Kapil [70%] | 4h |  |  |
| 1137 | 1.5.4.7.8 | Upper limit | 2.14d? | 2008-04-03 | 2008-04-07 | 1136 |  | 238.04d | 0d | Kapil [70%] | 12h |  |  |
| 1138 | 1.5.4.7.9 | Lower limit | 2.14d? | 2008-04-07 | 2008-04-09 | 1137 |  | 238.04d | 0d | Kapil [70%] | 12h |  |  |
| 1139 | 1.5.4.8 | **Swept Sine** | 17.29d? | 2008-04-09 | 2008-05-02 |  |  | 235.04d |  |  | 80h |  | P6 |
| 1140 | 1.5.4.8.1 | Review meas catalog & update | 0.71d? | 2008-04-09 | 2008-04-10 | 1138 |  | 238.04d | 0d | Kapil [70%] | 4h |  |  |
| 1141 | 1.5.4.8.2 | Review managed & Native interface definitions | 1.43d? | 2008-04-10 | 2008-04-11 | 1140 |  | 238.04d | 0d | Kapil [70%] | 8h |  |  |
| 1142 | 1.5.4.8.3 | Write code | 5d? | 2008-04-11 | 2008-04-22 | 1141 |  | 236.04d | 0d | Kapil [70%] | 28h |  |  |
| 1143 | 1.5.4.8.4 | Unit test the code | 2.14d? | 2008-04-22 | 2008-04-24 | 1142 |  | 236.04d | 0d | Kapil [70%] | 12h |  |  |

| ID | WBS | Task | Duration | Start | Finish | Predecessors | Total slack | Free slack | Resources | Work | Text1 |
| --- | --- | --- | --- | --- | --- | --- | --- | --- | --- | --- | --- |
| 1144 | 1.5.4.8.5 | **Verifcation** | 3.57d? | 2008-04-24 | 2008-04-30 |  | 236.04d |  |  | 20h |  |
| 1145 | 1.5.4.8.5.1 | Develop the verification code in Matlab | 1.43d? | 2008-04-24 | 2008-04-28 | 1143 | 236.04d | 0d | Kapil [70%] | 8h |  |
| 1146 | 1.5.4.8.5.2 | Define the test input data & pass to ML & MATLAB | 1.43d? | 2008-04-28 | 2008-04-29 | 1145 | 236.04d | 0d | Kapil [70%] | 8h |  |
| 1147 | 1.5.4.8.5.3 | Compare the outputs | 0.71d? | 2008-04-29 | 2008-04-30 | 1146 | 236.04d | 0d | Kapil [70%] | 4h |  |
| 1148 | 1.5.4.8.6 | Measure performance & document mesaurements | 0.71d? | 2008-04-30 | 2008-04-30 | 1147 | 236.04d | 0d | Kapil [70%] | 4h |  |
| 1149 | 1.5.4.8.7 | Interface definition, code, Nunit , Result & Doc review | 0.71d? | 2008-04-30 | 2008-05-02 | 1148 | 240.04d | 0d | Kapil [70%] | 4h |  |
| 1150 | 1.5.4.9 | **Gain, Phase margins** | 14.29d? | 2008-05-02 | 2008-05-22 |  | 235.04d | 79.94d |  | 80h | P6 |
| 1151 | 1.5.4.9.1 | Review meas catalog & update | 0.71d? | 2008-05-02 | 2008-05-05 | 1149 | 240.04d | 0d | Kapil [70%] | 4h |  |
| 1152 | 1.5.4.9.2 | Review managed & Native interface definitions | 1.43d? | 2008-05-05 | 2008-05-06 | 1151 | 235.04d | 0d | Kapil [70%] | 8h |  |
| 1153 | 1.5.4.9.3 | Write code | 5d? | 2008-05-06 | 2008-05-13 | 1152 | 235.04d | 0d | Kapil [70%] | 28h |  |
| 1154 | 1.5.4.9.4 | Unit test the code | 2.14d? | 2008-05-13 | 2008-05-15 | 1153 | 235.04d | 0d | Kapil [70%] | 12h |  |
| 1155 | 1.5.4.9.5 | **Verifcation** | 3.57d? | 2008-05-15 | 2008-05-21 |  | 235.04d |  |  | 20h |  |
| 1156 | 1.5.4.9.5.1 | Develop the verification code in Matlab | 1.43d? | 2008-05-15 | 2008-05-19 | 1154 | 235.04d | 0d | Kapil [70%] | 8h |  |
| 1157 | 1.5.4.9.5.2 | Define the test input data & pass to ML & MATLAB | 1.43d? | 2008-05-19 | 2008-05-20 | 1156 | 235.04d | 0d | Kapil [70%] | 8h |  |
| 1158 | 1.5.4.9.5.3 | Compare the outputs | 0.71d? | 2008-05-20 | 2008-05-21 | 1157 | 235.04d | 0d | Kapil [70%] | 4h |  |
| 1159 | 1.5.4.9.6 | Measure performance & document mesaurements | 0.71d? | 2008-05-21 | 2008-05-22 | 1158 | 235.04d | 0d | Kapil [70%] | 4h |  |
| 1160 | 1.5.4.9.7 | Interface definition, code, Nunit , Result & Doc review | 0.71d? | 2008-05-22 | 2008-05-22 | 1159 | 240.04d | 0d | Kapil [70%] | 4h |  |
| 1161 | 1.5.4.10 | **Frequency, Damping** | 14.29d? | 2008-05-22 | 2008-06-12 |  | 235.04d | 65.66d |  | 80h | P6 |
| 1162 | 1.5.4.10.1 | Review meas catalog & update | 0.71d? | 2008-05-22 | 2008-05-23 | 1160 | 240.04d | 0d | Kapil [70%] | 4h |  |
| 1163 | 1.5.4.10.2 | Review managed & Native interface definitions | 1.43d? | 2008-05-23 | 2008-05-27 | 1162 | 235.04d | 0d | Kapil [70%] | 8h |  |
| 1164 | 1.5.4.10.3 | Write code | 5d? | 2008-05-27 | 2008-06-03 | 1163 | 235.04d | 0d | Kapil [70%] | 28h |  |
| 1165 | 1.5.4.10.4 | Unit test the code | 2.14d? | 2008-06-03 | 2008-06-05 | 1164 | 235.04d | 0d | Kapil [70%] | 12h |  |
| 1166 | 1.5.4.10.5 | **Verifcation** | 3.57d? | 2008-06-05 | 2008-06-10 |  | 235.04d |  |  | 20h |  |
| 1167 | 1.5.4.10.5.1 | Develop the verification code in Matlab | 1.43d? | 2008-06-05 | 2008-06-06 | 1165 | 235.04d | 0d | Kapil [70%] | 8h |  |
| 1168 | 1.5.4.10.5.2 | Define the test input data & pass to ML & MATLAB | 1.43d? | 2008-06-06 | 2008-06-10 | 1167 | 235.04d | 0d | Kapil [70%] | 8h |  |
| 1169 | 1.5.4.10.5.3 | Compare the outputs | 0.71d? | 2008-06-10 | 2008-06-10 | 1168 | 235.04d | 0d | Kapil [70%] | 4h |  |
| 1170 | 1.5.4.10.6 | Measure performance & document mesaurements | 0.71d? | 2008-06-10 | 2008-06-11 | 1169 | 235.04d | 0d | Kapil [70%] | 4h |  |
| 1171 | 1.5.4.10.7 | Interface definition, code, Nunit , Result & Doc review | 0.71d? | 2008-06-11 | 2008-06-12 | 1170 | 235.04d |  | Kapil [70%] | 4h |  |

| ID | WBS | Task | Duration | Start | Finish | Predecessors | Complete | Remaining | Total slack | Free slack | Constraint | Resources | Work | Actual work | Text1 |
| --- | --- | --- | --- | --- | --- | --- | --- | --- | --- | --- | --- | --- | --- | --- | --- |
| 1172 | 1.5.4.11 | **Frequency Response** | 26.43d? | 2008-06-02 A | 2008-07-08 |  | 5% | 25d? | 199.31d | 47.41d |  |  | 148h | 8h | P3 |
| 1173 | 1.5.4.11.1 | Review meas catalog & update | 0.71d? | 2008-06-02 A | 2008-06-02 |  | 80% | 0.14d? | 200.17d | 0d | start no earlier than 2008-06-02 | ShashiP [70%] | 4h | 3.2h |  |
| 1174 | 1.5.4.11.2 | Write code | 14.29d? | 2008-06-02 | 2008-06-20 | 1173 |  |  | 200.17d | 0d |  | ShashiP [70%] | 80h |  |  |
| 1175 | 1.5.4.11.3 | Unit test the code | 3.57d? | 2008-06-23 | 2008-06-26 | 1174 |  |  | 205.17d | 0d |  | ShashiP [70%] | 20h |  |  |
| 1176 | 1.5.4.11.4 | **Verifcation** | 5.71d? | 2008-06-26 A | 2008-07-04 |  | 15% | 4.86d? | 199.31d |  |  |  | 32h | 4.8h |  |
| 1177 | 1.5.4.11.4.1 | Develop the verification code in Matlab | 2.14d? | 2008-06-26 A | 2008-06-30 | 1175 | 40% | 1.29d? | 199.31d | 0d |  | ShashiP [70%] | 12h | 4.8h |  |
| 1178 | 1.5.4.11.4.2 | Define the test input data & pass to ML & MATLAB | 2.14d? | 2008-06-30 | 2008-07-02 | 1177 |  |  | 199.31d | 0d |  | ShashiP [70%] | 12h |  |  |
| 1179 | 1.5.4.11.4.3 | Compare the outputs | 1.43d? | 2008-07-02 | 2008-07-04 | 1178 |  |  | 199.31d | 0d |  | ShashiP [70%] | 8h |  |  |
| 1180 | 1.5.4.11.5 | Measure performance & document mesaurements | 0.71d? | 2008-07-04 | 2008-07-07 | 1179 |  |  | 199.31d | 0d |  | ShashiP [70%] | 4h |  |  |
| 1181 | 1.5.4.11.6 | Interface definition, code, Nunit , Result & Doc review | 1.43d? | 2008-07-07 | 2008-07-08 | 1180 |  |  | 199.31d | 0d |  | ShashiP [70%] | 8h |  |  |
| 1182 | 1.5.4.12 | **Variance** | 11.43d? | 2008-07-08 | 2008-07-23 |  |  |  | 199.31d | 144.34d |  |  | 64h |  | P6 |
| 1183 | 1.5.4.12.1 | Review meas catalog & update | 0.71d? | 2008-07-08 | 2008-07-09 | 1181 |  |  | 204.31d | 0d |  | Kapil [70%] | 4h |  |  |
| 1184 | 1.5.4.12.2 | Review managed & Native interface definitions | 1.43d? | 2008-07-09 | 2008-07-10 | 1183 |  |  | 199.31d | 0d |  | Kapil [70%] | 8h |  |  |
| 1185 | 1.5.4.12.3 | Write code | 2.14d? | 2008-07-10 | 2008-07-14 | 1184 |  |  | 199.31d | 0d |  | Kapil [70%] | 12h |  |  |
| 1186 | 1.5.4.12.4 | Unit test the code | 1.43d? | 2008-07-14 | 2008-07-16 | 1185 |  |  | 199.31d | 0d |  | Kapil [70%] | 8h |  |  |
| 1187 | 1.5.4.12.5 | **Verifcation** | 3.57d? | 2008-07-16 | 2008-07-21 |  |  |  | 199.31d |  |  |  | 20h |  |  |
| 1188 | 1.5.4.12.5.1 | Develop the verification code in Matlab | 1.43d? | 2008-07-16 | 2008-07-17 | 1186 |  |  | 199.31d | 0d |  | Kapil [70%] | 8h |  |  |
| 1189 | 1.5.4.12.5.2 | Define the test input data & pass to ML & MATLAB | 1.43d? | 2008-07-17 | 2008-07-21 | 1188 |  |  | 199.31d | 0d |  | Kapil [70%] | 8h |  |  |
| 1190 | 1.5.4.12.5.3 | Compare the outputs | 0.71d? | 2008-07-21 | 2008-07-21 | 1189 |  |  | 199.31d | 0d |  | Kapil [70%] | 4h |  |  |
| 1191 | 1.5.4.12.6 | Measure performance & document mesaurements | 0.71d? | 2008-07-21 | 2008-07-22 | 1190 |  |  | 199.31d | 0d |  | Kapil [70%] | 4h |  |  |
| 1192 | 1.5.4.12.7 | Interface definition, code, Nunit , Result & Doc review | 1.43d? | 2008-07-22 | 2008-07-23 | 1191 |  |  | 199.31d | 0d |  | Kapil [70%] | 8h |  |  |
| 1193 | 1.5.4.13 | **Group Delay** | 14.29d? | 2008-07-23 | 2008-08-13 |  |  |  | 199.31d | 21.69d |  |  | 80h |  | P3 |
| 1194 | 1.5.4.13.1 | Review meas catalog & update | 0.71d? | 2008-07-23 | 2008-07-24 | 1192 |  |  | 199.31d | 0d |  | Kapil [70%] | 4h |  |  |
| 1195 | 1.5.4.13.2 | Review managed & Native interface definitions | 1.43d? | 2008-07-24 | 2008-07-28 | 1194 |  |  | 199.31d | 0d |  | Kapil [70%] | 8h |  |  |
| 1196 | 1.5.4.13.3 | Write code | 4.29d? | 2008-07-28 | 2008-08-01 | 1195 |  |  | 199.31d | 0d |  | Kapil [70%] | 24h |  |  |
| 1197 | 1.5.4.13.4 | Unit test the code | 2.14d? | 2008-08-01 | 2008-08-05 | 1196 |  |  | 199.31d | 0d |  | Kapil [70%] | 12h |  |  |

| ID | WBS | Task | Duration | Start | Finish | Predecessors | Complete | Remaining | Total slack | Free slack | Constraint | Resources | Work | Actual work | Text1 |
| --- | --- | --- | --- | --- | --- | --- | --- | --- | --- | --- | --- | --- | --- | --- | --- |
| 1198 | 1.5.4.13.5 | **Verifcation** | 3.57d? | 2008-08-05 | 2008-08-11 |  |  |  | 199.31d |  |  |  | 20h |  |  |
| 1199 | 1.5.4.13.5.1 | Develop the verification code in Matlab | 1.43d? | 2008-08-05 | 2008-08-06 | 1197 |  |  | 199.31d | 0d |  | Kapil [70%] | 8h |  |  |
| 1200 | 1.5.4.13.5.2 | Define the test input data & pass to ML & MATLAB | 1.43d? | 2008-08-06 | 2008-08-08 | 1199 |  |  | 199.31d | 0d |  | Kapil [70%] | 8h |  |  |
| 1201 | 1.5.4.13.5.3 | Compare the outputs | 0.71d? | 2008-08-08 | 2008-08-11 | 1200 |  |  | 199.31d | 0d |  | Kapil [70%] | 4h |  |  |
| 1202 | 1.5.4.13.6 | Measure performance & document mesaurements | 0.71d? | 2008-08-11 | 2008-08-11 | 1201 |  |  | 199.31d | 0d |  | Kapil [70%] | 4h |  |  |
| 1203 | 1.5.4.13.7 | Interface definition, code, Nunit , Result & Doc review | 1.43d? | 2008-08-11 | 2008-08-13 | 1202 |  |  | 199.31d |  |  | Kapil [70%] | 8h |  |  |
| 1204 | 1.5.4.14 | **Distortion** | 100.72d? | 2008-03-03 A | 2008-07-21 |  | 19% | 81.76d? | 261.28d |  |  |  | 341.66h | 71.66h | P2-P3 |
| 1205 | 1.5.4.14.1 | **THD** | 12.44d? | 2008-03-03 A | 2008-03-19 A |  | 100% |  |  |  |  |  | 69.66h | 69.66h | P2 |
| 1206 | 1.5.4.14.1.1 | Review meas catalog & update | 0.36d? | 2008-03-03 A | 2008-03-03 A |  | 100% |  |  |  |  | Kapil70 [70%] | 2h | 2h |  |
| 1207 | 1.5.4.14.1.2 | Review managed & Native interface definitions | 0.36d? | 2008-03-03 A | 2008-03-03 A | 1206 | 100% |  |  |  |  | Kapil70 [70%] | 2h | 2h |  |
| 1208 | 1.5.4.14.1.3 | Write code | 2.14d? | 2008-03-03 A | 2008-03-05 A | 1207 | 100% |  |  |  |  | Kapil70 [70%] | 12h | 12h |  |
| 1209 | 1.5.4.14.1.4 | Unit test the code | 1.43d? | 2008-03-05 A | 2008-03-07 A | 1208 | 100% |  |  |  |  | Kapil70 [70%] | 8h | 8h |  |
| 1210 | 1.5.4.14.1.5 | **Verifcation** | 6.62d? | 2008-03-07 A | 2008-03-17 A |  | 100% |  |  |  |  |  | 37.05h | 37.05h |  |
| 1211 | 1.5.4.14.1.5.1 | Develop the verification code in Matlab | 3.08d? | 2008-03-07 A | 2008-03-12 A | 1209 | 100% |  |  |  |  | Kapil70 [70%] | 17.23h | 17.23h |  |
| 1212 | 1.5.4.14.1.5.2 | Define the test input data & pass to ML & MATLAB | 0.77d? | 2008-03-12 A | 2008-03-13 A | 1211 | 100% |  |  |  |  | Kapil70 [70%] | 4.31h | 4.31h |  |
| 1213 | 1.5.4.14.1.5.3 | Compare the outputs | 2.77d? | 2008-03-13 A | 2008-03-17 A | 1212 | 100% |  |  |  |  | Kapil70 [70%] | 15.51h | 15.51h |  |
| 1214 | 1.5.4.14.1.6 | Measure performance & document mesaurements | 0.77d? | 2008-03-17 A | 2008-03-18 A | 1213 | 100% |  |  |  |  | Kapil70 [70%] | 4.31h | 4.31h |  |
| 1215 | 1.5.4.14.1.7 | Interface definition, code, Nunit , Result & Doc review | 0.77d? | 2008-03-18 A | 2008-03-19 A | 1214 | 100% |  |  |  |  | Kapil70 [70%] | 4.31h | 4.31h |  |
| 1216 | 1.5.4.14.2 | **THD + Noise** | 13.57d? | 2008-06-09 A | 2008-06-27 |  | 3% | 13.21d? | 261.28d |  |  |  | 76h | 2h | P3 |
| 1217 | 1.5.4.14.2.1 | Review meas catalog & update | 0.71d? | 2008-06-09 A | 2008-06-10 | 990 | 50% | 0.36d? | 261.28d | 0d | start no earlier than 2008-06-02 | Ramkumar [70%] | 4h | 2h |  |
| 1218 | 1.5.4.14.2.2 | Write code | 5d? | 2008-06-10 | 2008-06-17 | 1217 |  |  | 261.28d | 0d |  | Ramkumar [70%] | 28h |  |  |
| 1219 | 1.5.4.14.2.3 | Unit test the code | 1.43d? | 2008-06-17 | 2008-06-18 | 1218 |  |  | 261.28d | 0d |  | Ramkumar [70%] | 8h |  |  |
| 1220 | 1.5.4.14.2.4 | **Verifcation** | 4.29d? | 2008-06-18 | 2008-06-25 |  |  |  | 261.28d |  |  |  | 24h |  |  |
| 1221 | 1.5.4.14.2.4.1 | Develop the verification code in Matlab | 2.86d? | 2008-06-18 | 2008-06-23 | 1219 |  |  | 261.28d | 0d |  | Ramkumar [70%] | 16h |  |  |
| 1222 | 1.5.4.14.2.4.2 | Define the test input data & pass to ML & MATLAB | 0.71d? | 2008-06-23 | 2008-06-24 | 1221 |  |  | 261.28d | 0d |  | Ramkumar [70%] | 4h |  |  |
| 1223 | 1.5.4.14.2.4.3 | Compare the outputs | 0.71d? | 2008-06-24 | 2008-06-25 | 1222 |  |  | 261.28d | 0d |  | Ramkumar [70%] | 4h |  |  |
| 1224 | 1.5.4.14.2.5 | Measure performance & document mesaurements | 0.71d? | 2008-06-25 | 2008-06-25 | 1223 |  |  | 261.28d | 0d |  | Ramkumar [70%] | 4h |  |  |
| 1225 | 1.5.4.14.2.6 | Interface definition, code, Nunit , Result & Doc review | 1.43d? | 2008-06-25 | 2008-06-27 | 1224 |  |  | 261.28d | 0d |  | Ramkumar [70%] | 8h |  |  |

| ID | WBS | Task | Duration | Start | Finish | Predecessors | Total slack | Free slack | Constraint | Resources | Work | Text1 |
| --- | --- | --- | --- | --- | --- | --- | --- | --- | --- | --- | --- | --- |
| 1226 | 1.5.4.14.3 | **SINAD** | 9.29d? | 2008-06-27 | 2008-07-10 |  | 268.43d |  |  |  | 52h | P3 |
| 1227 | 1.5.4.14.3.1 | Review meas catalog & update | 0.71d? | 2008-06-27 | 2008-06-30 | 1225 | 268.43d | 0d |  | Kapil70 [70%] | 4h |  |
| 1228 | 1.5.4.14.3.2 | Write code | 2.86d? | 2008-06-30 | 2008-07-02 | 1227 | 268.43d | 0d |  | Kapil70 [70%] | 16h |  |
| 1229 | 1.5.4.14.3.3 | Unit test the code | 1.43d? | 2008-07-02 | 2008-07-04 | 1228 | 268.43d | 0d |  | Kapil70 [70%] | 8h |  |
| 1230 | 1.5.4.14.3.4 | **Verifcation** | 2.86d? | 2008-07-04 | 2008-07-09 |  | 268.43d |  |  |  | 16h |  |
| 1231 | 1.5.4.14.3.4.1 | Develop the verification code in Matlab | 1.43d? | 2008-07-04 | 2008-07-07 | 1229 | 268.43d | 0d |  | Kapil70 [70%] | 8h |  |
| 1232 | 1.5.4.14.3.4.2 | Define the test input data & pass to ML & MATLAB | 0.71d? | 2008-07-07 | 2008-07-08 | 1231 | 268.43d | 0d |  | Kapil70 [70%] | 4h |  |
| 1233 | 1.5.4.14.3.4.3 | Compare the outputs | 0.71d? | 2008-07-08 | 2008-07-09 | 1232 | 268.43d | 0d |  | Kapil70 [70%] | 4h |  |
| 1234 | 1.5.4.14.3.5 | Measure performance & document mesaurements | 0.71d? | 2008-07-09 | 2008-07-09 | 1233 | 268.43d | 0d |  | Kapil70 [70%] | 4h |  |
| 1235 | 1.5.4.14.3.6 | Interface definition, code, Nunit , Result & Doc review | 0.71d? | 2008-07-09 | 2008-07-10 | 1234 | 268.43d |  |  | Kapil70 [70%] | 4h |  |
| 1236 | 1.5.4.14.4 | **ENOB** | 8.57d? | 2008-06-27 | 2008-07-09 |  | 261.28d |  |  |  | 48h | P3 |
| 1237 | 1.5.4.14.4.1 | Review meas catalog & update | 0.71d? | 2008-06-27 | 2008-06-30 | 1225 | 261.28d | 0d | start no earlier than 2008-06-09 | Ramkumar [70%] | 4h |  |
| 1238 | 1.5.4.14.4.2 | Write code | 1.43d? | 2008-06-30 | 2008-07-01 | 1237 | 261.28d | 0d |  | Ramkumar [70%] | 8h |  |
| 1239 | 1.5.4.14.4.3 | Unit test the code | 1.43d? | 2008-07-01 | 2008-07-02 | 1238 | 261.28d | 0d |  | Ramkumar [70%] | 8h |  |
| 1240 | 1.5.4.14.4.4 | **Verifcation** | 2.86d? | 2008-07-02 | 2008-07-07 |  | 261.28d |  |  |  | 16h |  |
| 1241 | 1.5.4.14.4.4.1 | Develop the verification code in Matlab | 1.43d? | 2008-07-02 | 2008-07-04 | 1239 | 261.28d | 0d |  | Ramkumar [70%] | 8h |  |
| 1242 | 1.5.4.14.4.4.2 | Define the test input data & pass to ML & MATLAB | 0.71d? | 2008-07-04 | 2008-07-07 | 1241 | 261.28d | 0d |  | Ramkumar [70%] | 4h |  |
| 1243 | 1.5.4.14.4.4.3 | Compare the outputs | 0.71d? | 2008-07-07 | 2008-07-07 | 1242 | 261.28d | 0d |  | Ramkumar [70%] | 4h |  |
| 1244 | 1.5.4.14.4.5 | Measure performance & document mesaurements | 0.71d? | 2008-07-07 | 2008-07-08 | 1243 | 261.28d | 0d |  | Ramkumar [70%] | 4h |  |
| 1245 | 1.5.4.14.4.6 | Interface definition, code, Nunit , Result & Doc review | 1.43d? | 2008-07-08 | 2008-07-09 | 1244 | 261.28d | 0d |  | Ramkumar [70%] | 8h |  |
| 1246 | 1.5.4.14.5 | **SNR** | 7.86d? | 2008-07-09 | 2008-07-21 |  | 261.28d |  |  |  | 44h | P3 |
| 1247 | 1.5.4.14.5.1 | Review meas catalog & update | 0.71d? | 2008-07-09 | 2008-07-10 | 1245 | 261.28d | 0d |  | Ramkumar [70%] | 4h |  |
| 1248 | 1.5.4.14.5.2 | Write code | 1.43d? | 2008-07-10 | 2008-07-14 | 1247 | 261.28d | 0d |  | Ramkumar [70%] | 8h |  |
| 1249 | 1.5.4.14.5.3 | Unit test the code | 1.43d? | 2008-07-14 | 2008-07-15 | 1248 | 261.28d | 0d |  | Ramkumar [70%] | 8h |  |

| ID | WBS | Task | Duration | Start | Finish | Predecessors | Total slack | Free slack | Constraint | Resources | Work | Text1 |
| --- | --- | --- | --- | --- | --- | --- | --- | --- | --- | --- | --- | --- |
| 1250 | 1.5.4.14.5.4 | **Verifcation** | 2.86d? | 2008-07-15 | 2008-07-18 |  | 261.28d |  |  |  | 16h |  |
| 1251 | 1.5.4.14.5.4.1 | Develop the verification code in Matlab | 1.43d? | 2008-07-15 | 2008-07-16 | 1249 | 261.28d | 0d |  | Ramkumar [70%] | 8h |  |
| 1252 | 1.5.4.14.5.4.2 | Define the test input data & pass to ML & MATLAB | 0.71d? | 2008-07-16 | 2008-07-17 | 1251 | 261.28d | 0d |  | Ramkumar [70%] | 4h |  |
| 1253 | 1.5.4.14.5.4.3 | Compare the outputs | 0.71d? | 2008-07-17 | 2008-07-18 | 1252 | 261.28d | 0d |  | Ramkumar [70%] | 4h |  |
| 1254 | 1.5.4.14.5.5 | Measure performance & document mesaurements | 0.71d? | 2008-07-18 | 2008-07-21 | 1253 | 261.28d | 0d |  | Ramkumar [70%] | 4h |  |
| 1255 | 1.5.4.14.5.6 | Interface definition, code, Nunit , Result & Doc review | 0.71d? | 2008-07-21 | 2008-07-21 | 1254 | 261.28d |  |  | Ramkumar [70%] | 4h |  |
| 1256 | 1.5.4.14.6 | **SFDR** | 16.25d? | 2008-06-13 | 2008-07-07 |  | 181.18d | 47.94d |  |  | 52h | P3 |
| 1257 | 1.5.4.14.6.1 | Review meas catalog & update | 1.25d? | 2008-06-13 | 2008-06-16 | 1275 | 181.18d | 0d | start no earlier than 2008-06-10 | Kapil [40%] | 4h |  |
| 1258 | 1.5.4.14.6.2 | Write code | 5d? | 2008-06-16 | 2008-06-23 | 1257 | 181.18d | 0d |  | Kapil [40%] | 16h |  |
| 1259 | 1.5.4.14.6.3 | Unit test the code | 2.5d? | 2008-06-23 | 2008-06-26 | 1258 | 181.18d | 0d |  | Kapil [40%] | 8h |  |
| 1260 | 1.5.4.14.6.4 | **Verifcation** | 5d? | 2008-06-26 | 2008-07-03 |  | 181.18d |  |  |  | 16h |  |
| 1261 | 1.5.4.14.6.4.1 | Develop the verification code in Matlab | 2.5d? | 2008-06-26 | 2008-06-30 | 1259 | 181.18d | 0d |  | Kapil [40%] | 8h |  |
| 1262 | 1.5.4.14.6.4.2 | Define the test input data & pass to ML & MATLAB | 1.25d? | 2008-06-30 | 2008-07-02 | 1261 | 181.18d | 0d |  | Kapil [40%] | 4h |  |
| 1263 | 1.5.4.14.6.4.3 | Compare the outputs | 1.25d? | 2008-07-02 | 2008-07-03 | 1262 | 181.18d | 0d |  | Kapil [40%] | 4h |  |
| 1264 | 1.5.4.14.6.5 | Measure performance & document mesaurements | 1.25d? | 2008-07-03 | 2008-07-04 | 1263 | 181.18d | 0d |  | Kapil [40%] | 4h |  |
| 1265 | 1.5.4.14.6.6 | Interface definition, code, Nunit , Result & Doc review | 1.25d? | 2008-07-04 | 2008-07-07 | 1264 | 181.18d | 0d |  | Kapil [40%] | 4h |  |
| 1266 | 1.5.4.15 | **Averaging** | 9.64d? | 2008-06-02 | 2008-06-13 |  | 0d |  |  |  | 54h | P3 |
| 1267 | 1.5.4.15.1 | Review meas catalog & update | 0.36d? | 2008-06-02 | 2008-06-02 |  | 0d |  | start no earlier than 2008-06-02 | Kapil70 [70%] | 2h |  |
| 1268 | 1.5.4.15.2 | Write code | 2.14d? | 2008-06-02 | 2008-06-04 | 1267 | 0d |  |  | Kapil70 [70%] | 12h |  |
| 1269 | 1.5.4.15.3 | Unit test the code | 1.43d? | 2008-06-04 | 2008-06-05 | 1268 | 0d |  |  | Kapil70 [70%] | 8h |  |
| 1270 | 1.5.4.15.4 | **Verifcation** | 3.57d? | 2008-06-05 | 2008-06-11 |  | 0d |  |  |  | 20h |  |
| 1271 | 1.5.4.15.4.1 | Develop the verification code in Matlab | 2.14d? | 2008-06-05 | 2008-06-10 | 1269 | 0d |  |  | Kapil70 [70%] | 12h |  |
| 1272 | 1.5.4.15.4.2 | Define the test input data & pass to ML & MATLAB | 0.71d? | 2008-06-10 | 2008-06-10 | 1271 | 0d |  |  | Kapil70 [70%] | 4h |  |
| 1273 | 1.5.4.15.4.3 | Compare the outputs | 0.71d? | 2008-06-10 | 2008-06-11 | 1272 | 0d |  |  | Kapil70 [70%] | 4h |  |
| 1274 | 1.5.4.15.5 | Measure performance & document mesaurements | 0.71d? | 2008-06-11 | 2008-06-12 | 1273 | 0d |  |  | Kapil70 [70%] | 4h |  |
| 1275 | 1.5.4.15.6 | Interface definition, code, Nunit , Result & Doc review | 1.43d? | 2008-06-12 | 2008-06-13 | 1274 | 0d |  |  | Kapil70 [70%] | 8h |  |

| ID | WBS | Task | Duration | Start | Finish | Predecessors | Complete | Remaining | Total slack | Free slack | Resources | Work | Actual work | Text1 |
| --- | --- | --- | --- | --- | --- | --- | --- | --- | --- | --- | --- | --- | --- | --- |
| 1276 | 1.5.4.16 | **P** | 64.77d? | 2008-02-04 A | 2008-05-02 |  | 43% | 37.2d? | 317.23d |  |  | 272h | 116h | P2-P4 |
| 1277 | 1.5.4.16.1 | **Sine** | 8.69d? | 2008-02-04 A | 2008-02-14 A |  | 100% |  |  |  |  | 40h | 40h | P2 |
| 1278 | 1.5.4.16.1.1 | Review meas catalog & update | 0.77d? | 2008-02-04 A | 2008-02-04 A |  | 100% |  |  |  | Ramkumar [65%] | 4h | 4h |  |
| 1279 | 1.5.4.16.1.2 | Review managed & Native interface definitions | 0.77d? | 2008-02-04 A | 2008-02-05 A | 1278 | 100% |  |  |  | Ramkumar [65%] | 4h | 4h |  |
| 1280 | 1.5.4.16.1.3 | Write code | 0.77d? | 2008-02-05 A | 2008-02-06 A | 1279 | 100% |  |  |  | Ramkumar [65%] | 4h | 4h |  |
| 1281 | 1.5.4.16.1.4 | Unit test the code | 0.77d? | 2008-02-06 A | 2008-02-07 A | 1280 | 100% |  |  |  | Ramkumar [65%] | 4h | 4h |  |
| 1282 | 1.5.4.16.1.5 | **Verifcation** | 4.08d? | 2008-02-07 A | 2008-02-13 A |  | 100% |  |  |  |  | 16h | 16h |  |
| 1283 | 1.5.4.16.1.5.1 | Develop the verification code in Matlab | 1.54d? | 2008-02-07 A | 2008-02-08 A | 1281 | 100% |  |  |  | Ramkumar [65%] | 8h | 8h |  |
| 1284 | 1.5.4.16.1.5.2 | Define the test input data & pass to ML & MATLAB | 0.77d? | 2008-02-08 A | 2008-02-12 A | 1283 | 100% |  |  |  | Ramkumar [65%] | 4h | 4h |  |
| 1285 | 1.5.4.16.1.5.3 | Compare the outputs | 0.77d? | 2008-02-12 A | 2008-02-13 A | 1284 | 100% |  |  |  | Ramkumar [65%] | 4h | 4h |  |
| 1286 | 1.5.4.16.1.6 | Measure performance & document mesaurements | 0.77d? | 2008-02-13 A | 2008-02-13 A | 1285 | 100% |  |  |  | Ramkumar [65%] | 4h | 4h |  |
| 1287 | 1.5.4.16.1.7 | Interface definition, code, Nunit , Result & Doc review | 0.77d? | 2008-02-13 A | 2008-02-14 A | 1286 | 100% |  |  |  | Ramkumar [65%] | 4h | 4h |  |
| 1288 | 1.5.4.16.2 | **Noise** | 64d? | 2008-02-04 A | 2008-05-02 |  | 33% | 43.17d? | 317.23d |  |  | 232h | 76h | P2-P4 |
| 1289 | 1.5.4.16.2.1 | **Random** | 64d? | 2008-02-04 A | 2008-05-02 |  | 59% | 26.33d? | 317.23d |  |  | 48h | 28h | P2 |
| 1290 | 1.5.4.16.2.1.1 | Review meas catalog & update | 0.77d? | 2008-05-01 A | 2008-05-02 A |  | 100% |  |  |  | Ramkumar [70%] | 4h | 4h |  |
| 1291 | 1.5.4.16.2.1.2 | Review managed & Native interface definitions | 0.77d? | 2008-02-04 A | 2008-02-05 A | 1290 | 100% |  |  |  | Ramkumar [70%] | 4h | 4h |  |
| 1292 | 1.5.4.16.2.1.3 | Write code | 0.71d? | 2008-02-05 A | 2008-02-06 A | 1291 | 100% |  |  |  | Ramkumar [70%] | 4h | 4h |  |
| 1293 | 1.5.4.16.2.1.4 | Unit test the code | 0.71d? | 2008-02-06 | 2008-02-06 | 1292 |  |  | 379.03d |  | Ramkumar [70%] | 4h |  |  |
| 1294 | 1.5.4.16.2.1.5 | **Verifcation** | 5.29d? | 2008-02-06 A | 2008-02-14 |  | 67% | 1.76d? | 372.32d |  |  | 24h | 16h |  |
| 1295 | 1.5.4.16.2.1.5.1 | Develop the verification code in Matlab | 2.86d? | 2008-02-06 A | 2008-02-12 A | 1293 | 100% |  |  |  | Ramkumar [70%] | 16h | 16h |  |
| 1296 | 1.5.4.16.2.1.5.2 | Define the test input data & pass to ML & MATLAB | 0.71d? | 2008-02-12 | 2008-02-13 | 1295 |  |  | 372.32d | 0d | Ramkumar [70%] | 4h |  |  |
| 1297 | 1.5.4.16.2.1.5.3 | Compare the outputs | 0.71d? | 2008-02-13 | 2008-02-14 | 1296 |  |  | 372.32d | 0d | Ramkumar [70%] | 4h |  |  |
| 1298 | 1.5.4.16.2.1.6 | Measure performance & document mesaurements | 0.71d? | 2008-02-14 | 2008-02-14 | 1297 |  |  | 372.32d | 0d | Ramkumar [70%] | 4h |  |  |
| 1299 | 1.5.4.16.2.1.7 | Interface definition, code, Nunit , Result & Doc review | 0.71d? | 2008-02-14 | 2008-02-15 | 1298 |  |  | 372.32d |  | Ramkumar [70%] | 4h |  |  |

| ID | WBS | Task | Duration | Start | Finish | Predecessors | Complete | Remaining | Total slack | Free slack | Resources | Work | Actual work | Text1 |
| --- | --- | --- | --- | --- | --- | --- | --- | --- | --- | --- | --- | --- | --- | --- |
| 1300 | 1.5.4.16.2.2 | **Pink** | 13.08d? | 2008-02-15 A | 2008-03-05 |  | 12% | 11.54d? | 359.24d |  |  | 68h | 8h | P4 |
| 1301 | 1.5.4.16.2.2.1 | Review meas catalog & update | 0.77d? | 2008-02-15 A | 2008-02-18 A | 1299 | 100% |  |  |  | Ramkumar [65%] | 4h | 4h |  |
| 1302 | 1.5.4.16.2.2.2 | Review managed & Native interface definitions | 0.77d? | 2008-02-18 A | 2008-02-19 A | 1301 | 100% |  |  |  | Ramkumar [65%] | 4h | 4h |  |
| 1303 | 1.5.4.16.2.2.3 | Write code | 3.08d? | 2008-02-19 | 2008-02-22 | 1302 |  |  | 359.24d | 0d | Ramkumar [65%] | 16h |  |  |
| 1304 | 1.5.4.16.2.2.4 | Unit test the code | 1.54d? | 2008-02-22 | 2008-02-25 | 1303 |  |  | 359.24d | 0d | Ramkumar [65%] | 8h |  |  |
| 1305 | 1.5.4.16.2.2.5 | **Verifcation** | 4.62d? | 2008-02-25 | 2008-03-03 |  |  |  | 359.24d |  |  | 24h |  |  |
| 1306 | 1.5.4.16.2.2.5.1 | Develop the verification code in Matlab | 3.08d? | 2008-02-25 | 2008-02-28 | 1304 |  |  | 359.24d | 0d | Ramkumar [65%] | 16h |  |  |
| 1307 | 1.5.4.16.2.2.5.2 | Define the test input data & pass to ML & MATLAB | 0.77d? | 2008-02-28 | 2008-02-29 | 1306 |  |  | 359.24d | 0d | Ramkumar [65%] | 4h |  |  |
| 1308 | 1.5.4.16.2.2.5.3 | Compare the outputs | 0.77d? | 2008-02-29 | 2008-03-03 | 1307 |  |  | 359.24d | 0d | Ramkumar [65%] | 4h |  |  |
| 1309 | 1.5.4.16.2.2.6 | Measure performance & document mesaurements | 0.77d? | 2008-03-03 | 2008-03-04 | 1308 |  |  | 359.24d | 0d | Ramkumar [65%] | 4h |  |  |
| 1310 | 1.5.4.16.2.2.7 | Interface definition, code, Nunit , Result & Doc review | 1.54d? | 2008-03-04 | 2008-03-05 | 1309 |  |  | 359.24d |  | Ramkumar [65%] | 8h |  |  |
| 1311 | 1.5.4.16.2.3 | **White** | 10.77d? | 2008-03-05 A | 2008-03-20 |  | 29% | 7.69d? | 348.47d |  |  | 56h | 16h | P4 |
| 1312 | 1.5.4.16.2.3.1 | Review meas catalog & update | 0.77d? | 2008-03-05 A | 2008-03-06 A | 1310 | 100% |  |  |  | Ramkumar [65%] | 4h | 4h |  |
| 1313 | 1.5.4.16.2.3.2 | Review managed & Native interface definitions | 0.77d? | 2008-03-06 A | 2008-03-07 A | 1312 | 100% |  |  |  | Ramkumar [65%] | 4h | 4h |  |
| 1314 | 1.5.4.16.2.3.3 | Write code | 1.54d? | 2008-03-07 A | 2008-03-10 A | 1313 | 100% |  |  |  | Ramkumar [65%] | 8h | 8h |  |
| 1315 | 1.5.4.16.2.3.4 | Unit test the code | 1.54d? | 2008-03-10 | 2008-03-12 | 1314 |  |  | 348.47d | 0d | Ramkumar [65%] | 8h |  |  |
| 1316 | 1.5.4.16.2.3.5 | **Verifcation** | 4.62d? | 2008-03-12 | 2008-03-18 |  |  |  | 348.47d |  |  | 24h |  |  |
| 1317 | 1.5.4.16.2.3.5.1 | Develop the verification code in Matlab | 3.08d? | 2008-03-12 | 2008-03-17 | 1315 |  |  | 348.47d | 0d | Ramkumar [65%] | 16h |  |  |
| 1318 | 1.5.4.16.2.3.5.2 | Define the test input data & pass to ML & MATLAB | 0.77d? | 2008-03-17 | 2008-03-18 | 1317 |  |  | 348.47d | 0d | Ramkumar [65%] | 4h |  |  |
| 1319 | 1.5.4.16.2.3.5.3 | Compare the outputs | 0.77d? | 2008-03-18 | 2008-03-18 | 1318 |  |  | 348.47d | 0d | Ramkumar [65%] | 4h |  |  |
| 1320 | 1.5.4.16.2.3.6 | Measure performance & document mesaurements | 0.77d? | 2008-03-18 | 2008-03-19 | 1319 |  |  | 348.47d | 0d | Ramkumar [65%] | 4h |  |  |
| 1321 | 1.5.4.16.2.3.7 | Interface definition, code, Nunit , Result & Doc review | 0.77d? | 2008-03-19 | 2008-03-20 | 1320 |  |  | 348.47d |  | Ramkumar [65%] | 4h |  |  |
| 1322 | 1.5.4.16.2.4 | **Gaussian** | 12.54d? | 2008-03-20 A | 2008-04-08 |  | 40% | 7.52d? | 98.01d |  |  | 60h | 24h | P4 |
| 1323 | 1.5.4.16.2.4.1 | Review meas catalog & update | 0.77d? | 2008-03-20 A | 2008-03-24 A | 1321 | 100% |  |  |  | Ramkumar [65%] | 4h | 4h |  |
| 1324 | 1.5.4.16.2.4.2 | Review managed & Native interface definitions | 0.77d? | 2008-03-24 A | 2008-03-25 A | 1323 | 100% |  |  |  | Ramkumar [65%] | 4h | 4h |  |
| 1325 | 1.5.4.16.2.4.3 | Write code | 3.08d? | 2008-03-25 A | 2008-03-28 A | 1324 | 100% |  |  |  | Ramkumar [65%] | 16h | 16h |  |
| 1326 | 1.5.4.16.2.4.4 | Unit test the code | 0.77d? | 2008-03-28 | 2008-03-28 | 1325 |  |  | 97.01d | 0d | Ramkumar [65%] | 4h |  |  |

| ID | WBS | Task | Duration | Start | Finish | Predecessors | Total slack | Free slack | Resources | Work | Text1 |
| --- | --- | --- | --- | --- | --- | --- | --- | --- | --- | --- | --- |
| 1327 | 1.5.4.16.2.4.5 | **Verifcation** | 4.62d? | 2008-03-28 | 2008-04-04 |  | 92.01d |  |  | 24h |  |
| 1328 | 1.5.4.16.2.4.5.1 | Develop the verification code in Matlab | 3.08d? | 2008-03-28 | 2008-04-02 | 1326 | 97.01d | 0d | Ramkumar [65%] | 16h |  |
| 1329 | 1.5.4.16.2.4.5.2 | Define the test input data & pass to ML & MATLAB | 0.77d? | 2008-04-02 | 2008-04-03 | 1328 | 98.01d | 0d | Ramkumar [65%] | 4h |  |
| 1330 | 1.5.4.16.2.4.5.3 | Compare the outputs | 0.77d? | 2008-04-03 | 2008-04-04 | 1329 | 98.01d | 0d | Ramkumar [65%] | 4h |  |
| 1331 | 1.5.4.16.2.4.6 | Measure performance & document mesaurements | 0.77d? | 2008-04-04 | 2008-04-07 | 1330 | 98.01d | 0d | Ramkumar [65%] | 4h |  |
| 1332 | 1.5.4.16.2.4.7 | Interface definition, code, Nunit , Result & Doc review | 0.77d? | 2008-04-07 | 2008-04-08 | 1331 | 98.01d | 0d | Ramkumar [65%] | 4h |  |
| 1333 | 1.5.4.17 | **Marker Functions** | 13.31d? | 2008-08-27 | 2008-09-16 |  | 94.01d | 89.77d |  | 64h | P5/P4 |
| 1334 | 1.5.4.17.1 | Review meas catalog & update | 0.77d? | 2008-08-27 | 2008-08-28 | 1494 | 95.01d | 0d | Ramkumar [65%] | 4h |  |
| 1335 | 1.5.4.17.2 | Review managed & Native interface definitions | 0.77d? | 2008-08-28 | 2008-08-29 | 1334 | 95.01d | 0d | Ramkumar [65%] | 4h |  |
| 1336 | 1.5.4.17.3 | Write code | 3.08d? | 2008-08-29 | 2008-09-04 | 1335 | 94.01d | 0d | Ramkumar [65%] | 16h |  |
| 1337 | 1.5.4.17.4 | Unit test the code | 3.08d? | 2008-09-04 | 2008-09-09 | 1336 | 94.01d | 0d | Ramkumar [65%] | 16h |  |
| 1338 | 1.5.4.17.5 | **Verifcation** | 3.08d? | 2008-09-09 | 2008-09-12 |  | 94.01d |  |  | 16h |  |
| 1339 | 1.5.4.17.5.1 | Develop the verification code in Matlab | 1.54d? | 2008-09-09 | 2008-09-10 | 1337 | 94.01d | 0d | Ramkumar [65%] | 8h |  |
| 1340 | 1.5.4.17.5.2 | Define the test input data & pass to ML & MATLAB | 0.77d? | 2008-09-10 | 2008-09-11 | 1339 | 94.01d | 0d | Ramkumar [65%] | 4h |  |
| 1341 | 1.5.4.17.5.3 | Compare the outputs | 0.77d? | 2008-09-11 | 2008-09-12 | 1340 | 94.01d | 0d | Ramkumar [65%] | 4h |  |
| 1342 | 1.5.4.17.6 | Measure performance & document mesaurements | 0.77d? | 2008-09-12 | 2008-09-15 | 1341 | 94.01d | 0d | Ramkumar [65%] | 4h |  |
| 1343 | 1.5.4.17.7 | Interface definition, code, Nunit , Result & Doc review | 0.77d? | 2008-09-15 | 2008-09-16 | 1342 | 94.01d | 0d | Ramkumar [65%] | 4h |  |
| 1344 | 1.5.4.18 | **Octave** | 70.15d? | 2008-09-16 | 2008-12-23 |  | 90.01d |  |  | 344h | P7 |
| 1345 | 1.5.4.18.1 | Research & Investigation | 7.69d? | 2008-09-16 | 2008-09-25 | 1343 | 99.01d | 0d | Ramkumar [65%] | 40h | P1 |
| 1346 | 1.5.4.18.2 | Review meas catalog & update | 1.54d? | 2008-09-25 | 2008-09-29 | 1345 | 94.01d | 0d | Ramkumar [65%] | 8h |  |
| 1347 | 1.5.4.18.3 | Review managed & Native interface definitions | 1.54d? | 2008-09-29 | 2008-09-30 | 1346 | 94.01d | 0d | Ramkumar [65%] | 8h |  |
| 1348 | 1.5.4.18.4 | Overall interface structure for Octave | 3.85d? | 2008-09-30 | 2008-10-07 | 1347 | 93.01d | 0d | Ramkumar [65%] | 20h |  |
| 1349 | 1.5.4.18.5 | Octave band filter Design | 9.23d? | 2008-10-07 | 2008-10-21 | 1348 | 92.01d | 0d | Ramkumar [65%] | 48h |  |
| 1350 | 1.5.4.18.6 | Filtering Operation | 12.31d? | 2008-10-21 | 2008-11-10 | 1349 | 91.01d | 0d | Ramkumar [65%] | 64h |  |
| 1351 | 1.5.4.18.7 | Averaging Operation and Octave band power estimation | 7.69d? | 2008-11-10 | 2008-11-19 | 1350 | 91.01d | 0d | Ramkumar [65%] | 40h |  |
| 1352 | 1.5.4.18.8 | Weighting Filter Operation | 3.08d? | 2008-11-19 | 2008-11-24 | 1351 | 91.01d | 0d | Ramkumar [65%] | 16h |  |
| 1353 | 1.5.4.18.9 | Write code | 7.69d? | 2008-11-24 | 2008-12-04 | 1352 | 91.01d | 0d | Ramkumar [65%] | 40h |  |
| 1354 | 1.5.4.18.10 | Unit test the code | 3.85d? | 2008-12-04 | 2008-12-11 | 1353 | 90.01d | 0d | Ramkumar [65%] | 20h |  |

| ID | WBS | Task | Duration | Start | Finish | Predecessors | Total slack | Free slack | Constraint | Resources | Work | Text1 |
| --- | --- | --- | --- | --- | --- | --- | --- | --- | --- | --- | --- | --- |
| 1355 | 1.5.4.18.11 | **Verifcation** | 4.62d? | 2008-12-11 | 2008-12-18 |  | 90.01d |  |  |  | 24h |  |
| 1356 | 1.5.4.18.11.1 | Develop the verification code in Matlab | 1.54d? | 2008-12-11 | 2008-12-15 | 1354 | 90.01d | 0d |  | Ramkumar [65%] | 8h |  |
| 1357 | 1.5.4.18.11.2 | Define the test input data & pass to ML & MATLAB | 1.54d? | 2008-12-15 | 2008-12-16 | 1356 | 90.01d | 0d |  | Ramkumar [65%] | 8h |  |
| 1358 | 1.5.4.18.11.3 | Compare the outputs | 1.54d? | 2008-12-16 | 2008-12-18 | 1357 | 90.01d | 0d |  | Ramkumar [65%] | 8h |  |
| 1359 | 1.5.4.18.12 | Measure performance & document mesaurements | 1.54d? | 2008-12-18 | 2008-12-19 | 1358 | 90.01d | 0d |  | Ramkumar [65%] | 8h |  |
| 1360 | 1.5.4.18.13 | Interface definition, code, Nunit , Result & Doc review | 1.54d? | 2008-12-19 | 2008-12-23 | 1359 | 90.01d | 0d |  | Ramkumar [65%] | 8h |  |
| 1361 | 1.5.4.19 | **Orbit** | 15.62d? | 2008-12-23 | 2009-01-13 |  | 89.01d | 0d |  |  | 76h | P4 |
| 1362 | 1.5.4.19.1 | Review meas catalog & update | 0.77d? | 2008-12-23 | 2008-12-23 | 1360 | 90.01d | 0d |  | Ramkumar [65%] | 4h |  |
| 1363 | 1.5.4.19.2 | Review managed & Native interface definitions | 0.77d? | 2008-12-23 | 2008-12-24 | 1362 | 90.01d | 0d |  | Ramkumar [65%] | 4h |  |
| 1364 | 1.5.4.19.3 | Write code | 5.38d? | 2008-12-24 | 2009-01-02 | 1363 | 89.01d | 0d |  | Ramkumar [65%] | 28h |  |
| 1365 | 1.5.4.19.4 | Unit test the code | 2.31d? | 2009-01-02 | 2009-01-06 | 1364 | 89.01d | 0d |  | Ramkumar [65%] | 12h |  |
| 1366 | 1.5.4.19.5 | **Verifcation** | 2.31d? | 2009-01-06 | 2009-01-08 |  | 89.01d |  |  |  | 12h |  |
| 1367 | 1.5.4.19.5.1 | Develop the verification code in Matlab | 0.77d? | 2009-01-06 | 2009-01-07 | 1365 | 89.01d | 0d |  | Ramkumar [65%] | 4h |  |
| 1368 | 1.5.4.19.5.2 | Define the test input data & pass to ML & MATLAB | 0.77d? | 2009-01-07 | 2009-01-07 | 1367 | 89.01d | 0d |  | Ramkumar [65%] | 4h |  |
| 1369 | 1.5.4.19.5.3 | Compare the outputs | 0.77d? | 2009-01-07 | 2009-01-08 | 1368 | 89.01d | 0d |  | Ramkumar [65%] | 4h |  |
| 1370 | 1.5.4.19.6 | Measure performance & document mesaurements | 1.54d? | 2009-01-08 | 2009-01-12 | 1369 | 89.01d | 0d |  | Ramkumar [65%] | 8h |  |
| 1371 | 1.5.4.19.7 | Interface definition, code, Nunit , Result & Doc review | 1.54d? | 2009-01-12 | 2009-01-13 | 1370 | 89.01d | 0d |  | Ramkumar [65%] | 8h |  |
| 1372 | 1.5.4.20 | **Filters** | 94.92d? | 2008-07-07 | 2008-11-17 |  | 176.18d |  |  |  | 467.6h | P6 |
| 1373 | 1.5.4.20.1 | **Weighting filters for octave analysis A- weighting filter + B-weigghting filter +C- weighting filter** | 16.92d? | 2008-07-07 | 2008-07-30 |  | 181.18d |  |  |  | 88h |  |
| 1374 | 1.5.4.20.1.1 | Review meas catalog & update | 0.77d? | 2008-07-07 | 2008-07-08 | 1265 | 181.18d | 0d | start no earlier than 2008-02-04 | ShashiP [65%] | 4h |  |
| 1375 | 1.5.4.20.1.2 | Review managed & Native interface definitions | 1.54d? | 2008-07-08 | 2008-07-10 | 1374 | 181.18d | 0d |  | ShashiP [65%] | 8h |  |
| 1376 | 1.5.4.20.1.3 | Write code | 6.92d? | 2008-07-10 | 2008-07-21 | 1375 | 181.18d | 0d |  | ShashiP [65%] | 36h |  |
| 1377 | 1.5.4.20.1.4 | Unit test the code | 1.54d? | 2008-07-21 | 2008-07-22 | 1376 | 181.18d | 0d |  | ShashiP [65%] | 8h |  |
| 1378 | 1.5.4.20.1.5 | **Verifcation** | 3.85d? | 2008-07-22 | 2008-07-28 |  | 181.18d |  |  |  | 20h |  |
| 1379 | 1.5.4.20.1.5.1 | Develop the verification code in Matlab | 1.54d? | 2008-07-22 | 2008-07-24 | 1377 | 181.18d | 0d |  | ShashiP [65%] | 8h |  |
| 1380 | 1.5.4.20.1.5.2 | Define the test input data & pass to ML & MATLAB | 1.54d? | 2008-07-24 | 2008-07-25 | 1379 | 181.18d | 0d |  | ShashiP [65%] | 8h |  |
| 1381 | 1.5.4.20.1.5.3 | Compare the outputs | 0.77d? | 2008-07-25 | 2008-07-28 | 1380 | 181.18d | 0d |  | ShashiP [65%] | 4h |  |
| 1382 | 1.5.4.20.1.6 | Measure performance & document mesaurements | 0.77d? | 2008-07-28 | 2008-07-29 | 1381 | 181.18d | 0d |  | ShashiP [65%] | 4h |  |
| 1383 | 1.5.4.20.1.7 | Interface definition, code, Nunit , Result & Doc review | 1.54d? | 2008-07-29 | 2008-07-30 | 1382 | 181.18d | 0d |  | ShashiP [65%] | 8h |  |

| ID | WBS | Task | Duration | Start | Finish | Predecessors | Total slack | Free slack | Resources | Work |
| --- | --- | --- | --- | --- | --- | --- | --- | --- | --- | --- |
| 1384 | 1.5.4.20.2 | **General Weighting filters (A+B+C-weighting filter)** | 18.92d? | 2008-07-30 | 2008-08-26 |  | 180.18d |  |  | 93.2h |
| 1385 | 1.5.4.20.2.1 | Review meas catalog & update | 1.54d? | 2008-07-30 | 2008-08-01 | 1383 | 181.18d | 0d | ShashiP [65%] | 8h |
| 1386 | 1.5.4.20.2.2 | Review managed & Native interface definitions | 1.54d? | 2008-08-01 | 2008-08-04 | 1385 | 181.18d | 0d | ShashiP [65%] | 8h |
| 1387 | 1.5.4.20.2.3 | Write code | 7.69d? | 2008-08-04 | 2008-08-14 | 1386 | 181.18d | 0d | ShashiP [65%] | 40h |
| 1388 | 1.5.4.20.2.4 | Unit test the code | 1.54d? | 2008-08-14 | 2008-08-19 | 1387 | 180.18d | 0d | ShashiP [65%] | 8h |
| 1389 | 1.5.4.20.2.5 | **Verifcation** | 3.08d? | 2008-08-19 | 2008-08-22 |  | 180.18d |  |  | 16h |
| 1390 | 1.5.4.20.2.5.1 | Develop the verification code in Matlab | 1.54d? | 2008-08-19 | 2008-08-20 | 1388 | 180.18d | 0d | ShashiP [65%] | 8h |
| 1391 | 1.5.4.20.2.5.2 | Define the test input data & pass to ML & MATLAB | 0.77d? | 2008-08-20 | 2008-08-21 | 1390 | 180.18d | 0d | ShashiP [65%] | 4h |
| 1392 | 1.5.4.20.2.5.3 | Compare the outputs | 0.77d? | 2008-08-21 | 2008-08-22 | 1391 | 180.18d | 0d | ShashiP [65%] | 4h |
| 1393 | 1.5.4.20.2.6 | Measure performance & document mesaurements | 1.54d? | 2008-08-22 | 2008-08-25 | 1392 | 180.18d | 0d | ShashiP [65%] | 8h |
| 1394 | 1.5.4.20.2.7 | Interface definition, code, Nunit , Result & Doc review | 1d | 2008-08-25 | 2008-08-26 | 1393 | 180.18d | 0d | ShashiP [65%] | 5.2h |
| 1395 | 1.5.4.20.3 | **CCIR filters** | 23.77d? | 2008-08-26 | 2008-09-29 |  | 179.18d |  |  | 118.4h |
| 1396 | 1.5.4.20.3.1 | Review meas catalog & update | 1.54d? | 2008-08-26 | 2008-08-28 | 1394 | 180.18d | 0d | ShashiP [65%] | 8h |
| 1397 | 1.5.4.20.3.2 | Review managed & Native interface definitions | 1.54d? | 2008-08-28 | 2008-08-29 | 1396 | 180.18d | 0d | ShashiP [65%] | 8h |
| 1398 | 1.5.4.20.3.3 | Write code | 9.23d? | 2008-08-29 | 2008-09-15 | 1397 | 179.18d | 0d | ShashiP [65%] | 48h |
| 1399 | 1.5.4.20.3.4 | Unit test the code | 3.08d? | 2008-09-15 | 2008-09-18 | 1398 | 179.18d | 0d | ShashiP [65%] | 16h |
| 1400 | 1.5.4.20.3.5 | **Verifcation** | 4.62d? | 2008-09-18 | 2008-09-24 |  | 179.18d |  |  | 24h |
| 1401 | 1.5.4.20.3.5.1 | Develop the verification code in Matlab | 3.08d? | 2008-09-18 | 2008-09-23 | 1399 | 179.18d | 0d | ShashiP [65%] | 16h |
| 1402 | 1.5.4.20.3.5.2 | Define the test input data & pass to ML & MATLAB | 0.77d? | 2008-09-23 | 2008-09-23 | 1401 | 179.18d | 0d | ShashiP [65%] | 4h |
| 1403 | 1.5.4.20.3.5.3 | Compare the outputs | 0.77d? | 2008-09-23 | 2008-09-24 | 1402 | 179.18d | 0d | ShashiP [65%] | 4h |
| 1404 | 1.5.4.20.3.6 | Measure performance & document mesaurements | 0.77d? | 2008-09-24 | 2008-09-25 | 1403 | 179.18d | 0d | ShashiP [65%] | 4h |
| 1405 | 1.5.4.20.3.7 | Interface definition, code, Nunit , Result & Doc review | 2d? | 2008-09-25 | 2008-09-29 | 1404 | 179.18d | 0d | ShashiP [65%] | 10.4h |
| 1406 | 1.5.4.20.4 | **Low Pass, high pass, band pass, notch** | 20.46d? | 2008-09-29 | 2008-10-27 |  | 177.18d |  |  | 96h |
| 1407 | 1.5.4.20.4.1 | Review meas catalog & update | 1.54d? | 2008-09-29 | 2008-10-01 | 1405 | 179.18d | 0d | ShashiP [65%] | 8h |
| 1408 | 1.5.4.20.4.2 | Review managed & Native interface definitions | 1.54d? | 2008-10-01 | 2008-10-03 | 1407 | 178.18d | 0d | ShashiP [65%] | 8h |
| 1409 | 1.5.4.20.4.3 | Write code | 7.69d? | 2008-10-03 | 2008-10-16 | 1408 | 177.18d | 0d | ShashiP [65%] | 40h |
| 1410 | 1.5.4.20.4.4 | Unit test the code | 1.54d? | 2008-10-16 | 2008-10-17 | 1409 | 177.18d | 0d | ShashiP [65%] | 8h |

| ID | WBS | Task | Duration | Start | Finish | Predecessors | Total slack | Free slack | Resources | Work | Text1 |
| --- | --- | --- | --- | --- | --- | --- | --- | --- | --- | --- | --- |
| 1411 | 1.5.4.20.4.5 | **Verifcation** | 3.85d? | 2008-10-17 | 2008-10-23 |  | 177.18d |  |  | 20h |  |
| 1412 | 1.5.4.20.4.5.1 | Develop the verification code in Matlab | 2.31d? | 2008-10-17 | 2008-10-22 | 1410 | 177.18d | 0d | ShashiP [65%] | 12h |  |
| 1413 | 1.5.4.20.4.5.2 | Define the test input data & pass to ML & MATLAB | 0.77d? | 2008-10-22 | 2008-10-22 | 1412 | 177.18d | 0d | ShashiP [65%] | 4h |  |
| 1414 | 1.5.4.20.4.5.3 | Compare the outputs | 0.77d? | 2008-10-22 | 2008-10-23 | 1413 | 177.18d | 0d | ShashiP [65%] | 4h |  |
| 1415 | 1.5.4.20.4.6 | Measure performance & document mesaurements | 1.54d? | 2008-10-23 | 2008-10-27 | 1414 | 177.18d | 0d | ShashiP [65%] | 8h |  |
| 1416 | 1.5.4.20.4.7 | Interface definition, code, Nunit , Result & Doc review | 0.77d? | 2008-10-27 | 2008-10-27 | 1415 | 177.18d | 0d | ShashiP [65%] | 4h |  |
| 1417 | 1.5.4.20.5 | **Coherence** | 14.85d? | 2008-10-27 | 2008-11-17 |  | 176.18d |  |  | 72h |  |
| 1418 | 1.5.4.20.5.1 | Review meas catalog & update | 0.77d? | 2008-10-27 | 2008-10-29 | 1416 | 176.18d | 0d | ShashiP [65%] | 4h |  |
| 1419 | 1.5.4.20.5.2 | Review managed & Native interface definitions | 0.77d? | 2008-10-29 | 2008-10-30 | 1418 | 176.18d | 0d | ShashiP [65%] | 4h |  |
| 1420 | 1.5.4.20.5.3 | Write code | 4.62d? | 2008-10-30 | 2008-11-06 | 1419 | 176.18d | 0d | ShashiP [65%] | 24h |  |
| 1421 | 1.5.4.20.5.4 | Unit test the code | 1.54d? | 2008-11-06 | 2008-11-07 | 1420 | 176.18d | 0d | ShashiP [65%] | 8h |  |
| 1422 | 1.5.4.20.5.5 | **Verifcation** | 3.08d? | 2008-11-07 | 2008-11-12 |  | 176.18d |  |  | 16h |  |
| 1423 | 1.5.4.20.5.5.1 | Develop the verification code in Matlab | 1.54d? | 2008-11-07 | 2008-11-11 | 1421 | 176.18d | 0d | ShashiP [65%] | 8h |  |
| 1424 | 1.5.4.20.5.5.2 | Define the test input data & pass to ML & MATLAB | 0.77d? | 2008-11-11 | 2008-11-11 | 1423 | 176.18d | 0d | ShashiP [65%] | 4h |  |
| 1425 | 1.5.4.20.5.5.3 | Compare the outputs | 0.77d? | 2008-11-11 | 2008-11-12 | 1424 | 176.18d | 0d | ShashiP [65%] | 4h |  |
| 1426 | 1.5.4.20.5.6 | Measure performance & document mesaurements | 1.54d? | 2008-11-12 | 2008-11-14 | 1425 | 176.18d | 0d | ShashiP [65%] | 8h |  |
| 1427 | 1.5.4.20.5.7 | Interface definition, code, Nunit , Result & Doc review | 1.54d? | 2008-11-14 | 2008-11-17 | 1426 | 176.18d |  | ShashiP [65%] | 8h |  |
| 1428 | 1.5.4.21 | **Math** | 101.69d? | 2008-04-08 | 2008-08-27 |  | 92.01d | 119.44d |  | 508h | P7 |
| 1429 | 1.5.4.21.1 | **Cepstrum** | 15.08d? | 2008-04-08 | 2008-04-29 |  | 92.01d |  |  | 68h |  |
| 1430 | 1.5.4.21.1.1 | Review meas catalog & update | 0.77d? | 2008-04-08 | 2008-04-08 | 1332 | 92.01d | 0d | Ramkumar [65%] | 4h |  |
| 1431 | 1.5.4.21.1.2 | Review managed & Native interface definitions | 0.77d? | 2008-04-08 | 2008-04-09 | 1430 | 92.01d | 0d | Ramkumar [65%] | 4h |  |
| 1432 | 1.5.4.21.1.3 | Write code | 4.62d? | 2008-04-09 | 2008-04-17 | 1431 | 92.01d | 0d | Ramkumar [65%] | 24h |  |
| 1433 | 1.5.4.21.1.4 | Unit test the code | 1.54d? | 2008-04-17 | 2008-04-21 | 1432 | 91.01d | 0d | Ramkumar [65%] | 8h |  |
| 1434 | 1.5.4.21.1.5 | **Verifcation** | 3.08d? | 2008-04-21 | 2008-04-24 |  | 91.01d |  |  | 16h |  |
| 1435 | 1.5.4.21.1.5.1 | Develop the verification code in Matlab | 1.54d? | 2008-04-21 | 2008-04-23 | 1433 | 91.01d | 0d | Ramkumar [65%] | 8h |  |
| 1436 | 1.5.4.21.1.5.2 | Define the test input data & pass to ML & MATLAB | 0.77d? | 2008-04-23 | 2008-04-24 | 1435 | 91.01d | 0d | Ramkumar [65%] | 4h |  |
| 1437 | 1.5.4.21.1.5.3 | Compare the outputs | 0.77d? | 2008-04-24 | 2008-04-24 | 1436 | 91.01d | 0d | Ramkumar [65%] | 4h |  |
| 1438 | 1.5.4.21.1.6 | Measure performance & document mesaurements | 0.77d? | 2008-04-24 | 2008-04-25 | 1437 | 91.01d | 0d | Ramkumar [65%] | 4h |  |
| 1439 | 1.5.4.21.1.7 | Interface definition, code, Nunit , Result & Doc review | 1.54d? | 2008-04-25 | 2008-04-29 | 1438 | 91.01d | 0d | Ramkumar [65%] | 8h |  |

| ID | WBS | Task | Duration | Start | Finish | Predecessors | Total slack | Free slack | Resources | Work |
| --- | --- | --- | --- | --- | --- | --- | --- | --- | --- | --- |
| 1440 | 1.5.4.21.2 | **Basic Complex math** | 16.38d? | 2008-04-29 | 2008-05-21 |  | 91.01d |  |  | 80h |
| 1441 | 1.5.4.21.2.1 | Review meas catalog & update | 0.77d? | 2008-04-29 | 2008-04-29 | 1439 | 92.01d | 0d | Ramkumar [65%] | 4h |
| 1442 | 1.5.4.21.2.2 | Review managed & Native interface definitions | 0.77d? | 2008-04-29 | 2008-04-30 | 1441 | 92.01d | 0d | Ramkumar [65%] | 4h |
| 1443 | 1.5.4.21.2.3 | Write code | 6.15d? | 2008-04-30 | 2008-05-09 | 1442 | 91.01d | 0d | Ramkumar [65%] | 32h |
| 1444 | 1.5.4.21.2.4 | Unit test the code | 1.54d? | 2008-05-09 | 2008-05-13 | 1443 | 91.01d | 0d | Ramkumar [65%] | 8h |
| 1445 | 1.5.4.21.2.5 | **Verifcation** | 3.08d | 2008-05-13 | 2008-05-16 |  | 91.01d |  |  | 16h |
| 1446 | 1.5.4.21.2.5.1 | Develop the verification code in Matlab | 1.54d | 2008-05-13 | 2008-05-14 | 1444 | 91.01d | 0d | Ramkumar [65%] | 8h |
| 1447 | 1.5.4.21.2.5.2 | Define the test input data & pass to ML & MATLAB | 0.77d | 2008-05-14 | 2008-05-15 | 1446 | 91.01d | 0d | Ramkumar [65%] | 4h |
| 1448 | 1.5.4.21.2.5.3 | Compare the outputs | 0.77d | 2008-05-15 | 2008-05-16 | 1447 | 91.01d | 0d | Ramkumar [65%] | 4h |
| 1449 | 1.5.4.21.2.6 | Measure performance & document mesaurements | 1.54d? | 2008-05-16 | 2008-05-19 | 1448 | 91.01d | 0d | Ramkumar [65%] | 8h |
| 1450 | 1.5.4.21.2.7 | Interface definition, code, Nunit , Result & Doc review | 1.54d | 2008-05-19 | 2008-05-21 | 1449 | 91.01d | 0d | Ramkumar [65%] | 8h |
| 1451 | 1.5.4.21.3 | **Hilbert** | 15.38d | 2008-05-21 | 2008-06-11 |  | 91.01d |  |  | 80h |
| 1452 | 1.5.4.21.3.1 | Review meas catalog & update | 0.77d | 2008-05-21 | 2008-05-22 | 1450 | 91.01d | 0d | Ramkumar [65%] | 4h |
| 1453 | 1.5.4.21.3.2 | Review managed & Native interface definitions | 0.77d | 2008-05-22 | 2008-05-23 | 1452 | 91.01d | 0d | Ramkumar [65%] | 4h |
| 1454 | 1.5.4.21.3.3 | Write code | 6.15d | 2008-05-23 | 2008-06-02 | 1453 | 91.01d | 0d | Ramkumar [65%] | 32h |
| 1455 | 1.5.4.21.3.4 | Unit test the code | 1.54d | 2008-06-02 | 2008-06-03 | 1454 | 92.01d | 0d | Ramkumar [65%] | 8h |
| 1456 | 1.5.4.21.3.5 | **Verifcation** | 3.08d | 2008-06-03 | 2008-06-06 |  | 93.01d |  |  | 16h |
| 1457 | 1.5.4.21.3.5.1 | Develop the verification code in Matlab | 1.54d | 2008-06-03 | 2008-06-05 | 1455 | 93.01d | 0d | Ramkumar [65%] | 8h |
| 1458 | 1.5.4.21.3.5.2 | Define the test input data & pass to ML & MATLAB | 0.77d | 2008-06-05 | 2008-06-06 | 1457 | 93.01d | 0d | Ramkumar [65%] | 4h |
| 1459 | 1.5.4.21.3.5.3 | Compare the outputs | 0.77d | 2008-06-06 | 2008-06-06 | 1458 | 93.01d | 0d | Ramkumar [65%] | 4h |
| 1460 | 1.5.4.21.3.6 | Measure performance & document mesaurements | 1.54d | 2008-06-06 | 2008-06-10 | 1459 | 93.01d | 0d | Ramkumar [65%] | 8h |
| 1461 | 1.5.4.21.3.7 | Interface definition, code, Nunit , Result & Doc review | 1.54d | 2008-06-10 | 2008-06-11 | 1460 | 93.01d | 0d | Ramkumar [65%] | 8h |
| 1462 | 1.5.4.21.4 | **Conversions** | 21.54d? | 2008-06-11 | 2008-07-11 |  | 93.01d |  |  | 112h |
| 1463 | 1.5.4.21.4.1 | Review meas catalog & update | 0.77d? | 2008-06-11 | 2008-06-12 | 1461 | 93.01d | 0d | Ramkumar [65%] | 4h |
| 1464 | 1.5.4.21.4.2 | Review managed & Native interface definitions | 0.77d? | 2008-06-12 | 2008-06-13 | 1463 | 93.01d | 0d | Ramkumar [65%] | 4h |
| 1465 | 1.5.4.21.4.3 | Write code | 9.23d? | 2008-06-13 | 2008-06-26 | 1464 | 93.01d | 0d | Ramkumar [65%] | 48h |
| 1466 | 1.5.4.21.4.4 | Unit test the code | 3.08d? | 2008-06-26 | 2008-07-01 | 1465 | 94.01d | 0d | Ramkumar [65%] | 16h |

| ID | WBS | Task | Duration | Start | Finish | Predecessors | Complete | Total slack | Free slack | Resources | Work | Actual work | Text1 |
| --- | --- | --- | --- | --- | --- | --- | --- | --- | --- | --- | --- | --- | --- |
| 1467 | 1.5.4.21.4.5 | **Verifcation** | 4.62d? | 2008-07-01 | 2008-07-08 |  |  | 94.01d |  |  | 24h |  |  |
| 1468 | 1.5.4.21.4.5.1 | Develop the verification code in Matlab | 3.08d? | 2008-07-01 | 2008-07-04 | 1466 |  | 94.01d | 0d | Ramkumar [65%] | 16h |  |  |
| 1469 | 1.5.4.21.4.5.2 | Define the test input data & pass to ML & MATLAB | 0.77d? | 2008-07-04 | 2008-07-07 | 1468 |  | 94.01d | 0d | Ramkumar [65%] | 4h |  |  |
| 1470 | 1.5.4.21.4.5.3 | Compare the outputs | 0.77d? | 2008-07-07 | 2008-07-08 | 1469 |  | 94.01d | 0d | Ramkumar [65%] | 4h |  |  |
| 1471 | 1.5.4.21.4.6 | Measure performance & document mesaurements | 1.54d? | 2008-07-08 | 2008-07-09 | 1470 |  | 94.01d | 0d | Ramkumar [65%] | 8h |  |  |
| 1472 | 1.5.4.21.4.7 | Interface definition, code, Nunit , Result & Doc review | 1.54d? | 2008-07-09 | 2008-07-11 | 1471 |  | 94.01d | 0d | Ramkumar [65%] | 8h |  |  |
| 1473 | 1.5.4.21.5 | **Differentiation/Integration** | 14.62d? | 2008-07-11 | 2008-08-01 |  |  | 94.01d |  |  | 76h |  |  |
| 1474 | 1.5.4.21.5.1 | Review meas catalog & update | 0.77d? | 2008-07-11 | 2008-07-14 | 1472 |  | 94.01d | 0d | Ramkumar [65%] | 4h |  |  |
| 1475 | 1.5.4.21.5.2 | Review managed & Native interface definitions | 0.77d? | 2008-07-14 | 2008-07-14 | 1474 |  | 94.01d | 0d | Ramkumar [65%] | 4h |  |  |
| 1476 | 1.5.4.21.5.3 | Write code | 6.15d? | 2008-07-14 | 2008-07-23 | 1475 |  | 94.01d | 0d | Ramkumar [65%] | 32h |  |  |
| 1477 | 1.5.4.21.5.4 | Unit test the code | 1.54d? | 2008-07-23 | 2008-07-24 | 1476 |  | 94.01d | 0d | Ramkumar [65%] | 8h |  |  |
| 1478 | 1.5.4.21.5.5 | **Verifcation** | 3.08d? | 2008-07-24 | 2008-07-29 |  |  | 94.01d |  |  | 16h |  |  |
| 1479 | 1.5.4.21.5.5.1 | Develop the verification code in Matlab | 1.54d? | 2008-07-24 | 2008-07-28 | 1477 |  | 94.01d | 0d | Ramkumar [65%] | 8h |  |  |
| 1480 | 1.5.4.21.5.5.2 | Define the test input data & pass to ML & MATLAB | 0.77d? | 2008-07-28 | 2008-07-28 | 1479 |  | 94.01d | 0d | Ramkumar [65%] | 4h |  |  |
| 1481 | 1.5.4.21.5.5.3 | Compare the outputs | 0.77d? | 2008-07-28 | 2008-07-29 | 1480 |  | 94.01d | 0d | Ramkumar [65%] | 4h |  |  |
| 1482 | 1.5.4.21.5.6 | Measure performance & document mesaurements | 0.77d? | 2008-07-29 | 2008-07-30 | 1481 |  | 94.01d | 0d | Ramkumar [65%] | 4h |  |  |
| 1483 | 1.5.4.21.5.7 | Interface definition, code, Nunit , Result & Doc review | 1.54d? | 2008-07-30 | 2008-08-01 | 1482 |  | 95.01d | 0d | Ramkumar [65%] | 8h |  |  |
| 1484 | 1.5.4.21.6 | **Statistical (mean,mode…)** | 18.69d? | 2008-08-01 | 2008-08-27 |  |  | 95.01d |  |  | 92h |  |  |
| 1485 | 1.5.4.21.6.1 | Review meas catalog & update | 0.77d? | 2008-08-01 | 2008-08-01 | 1483 |  | 95.01d | 0d | Ramkumar [65%] | 4h |  |  |
| 1486 | 1.5.4.21.6.2 | Review managed & Native interface definitions | 1.54d? | 2008-08-01 | 2008-08-05 | 1485 |  | 95.01d | 0d | Ramkumar [65%] | 8h |  |  |
| 1487 | 1.5.4.21.6.3 | Write code | 6.15d? | 2008-08-05 | 2008-08-13 | 1486 |  | 95.01d | 0d | Ramkumar [65%] | 32h |  |  |
| 1488 | 1.5.4.21.6.4 | Unit test the code | 1.54d? | 2008-08-13 | 2008-08-18 | 1487 |  | 95.01d | 0d | Ramkumar [65%] | 8h |  |  |
| 1489 | 1.5.4.21.6.5 | **Verifcation** | 4.62d? | 2008-08-18 | 2008-08-22 |  |  | 95.01d |  |  | 24h |  |  |
| 1490 | 1.5.4.21.6.5.1 | Develop the verification code in Matlab | 3.08d? | 2008-08-18 | 2008-08-21 | 1488 |  | 95.01d | 0d | Ramkumar [65%] | 16h |  |  |
| 1491 | 1.5.4.21.6.5.2 | Define the test input data & pass to ML & MATLAB | 0.77d? | 2008-08-21 | 2008-08-21 | 1490 |  | 95.01d | 0d | Ramkumar [65%] | 4h |  |  |
| 1492 | 1.5.4.21.6.5.3 | Compare the outputs | 0.77d? | 2008-08-21 | 2008-08-22 | 1491 |  | 95.01d | 0d | Ramkumar [65%] | 4h |  |  |
| 1493 | 1.5.4.21.6.6 | Measure performance & document mesaurements | 1.54d? | 2008-08-22 | 2008-08-26 | 1492 |  | 95.01d | 0d | Ramkumar [65%] | 8h |  |  |
| 1494 | 1.5.4.21.6.7 | Interface definition, code, Nunit , Result & Doc review | 1.54d? | 2008-08-26 | 2008-08-27 | 1493 |  | 95.01d | 0d | Ramkumar [65%] | 8h |  |  |
| 1495 | 1.5.5 | Research & Investigation on MVP filters | 15.38d? | 2008-02-04 A | 2008-02-26 A |  | 100% |  |  | ShashiP [70%] | 80h | 80h | P1 |
| 1496 | 1.5.6 | Averaging-MATLAB simulation for MVP | 15.38d? | 2008-02-26 A | 2008-03-18 A | 1495 | 100% |  |  | ShashiP [70%] | 80h | 80h | P1 |
| 1497 | 1.5.7 | Research & invesitgation on Octave with MATLAB simulation | 24.08d? | 2008-02-04 A | 2008-03-10 A |  | 100% |  |  | ShashiP [70%] | 134.83h | 134.83h | P1 |

| ID | WBS | Task | Duration | Start | Finish | Predecessors | Complete | Remaining | Total slack | Free slack | Resources | Work | Actual work | Text1 |
| --- | --- | --- | --- | --- | --- | --- | --- | --- | --- | --- | --- | --- | --- | --- |
| 1498 | 1.5.8 | **Testing and Result Verification** | 167.71d? | 2008-08-28 A | 2009-04-21 |  | 14% | 143.82d? | 65.98d |  |  | 1048h | 152h |  |
| 1499 | 1.5.8.1 | Verify THD | 4.29d? | 2009-02-26 A | 2009-03-05 A | 1202 | 100% |  |  |  | Kapil [70%] | 24h | 24h | P2 |
| 1500 | 1.5.8.2 | Verify THD+N | 2.86d? | 2009-03-05 | 2009-03-10 | 1499 |  |  | 65.98d | 0d | Kapil [70%] | 16h |  | P2 |
| 1501 | 1.5.8.3 | Verify SINAD | 2.86d? | 2009-03-10 | 2009-03-12 | 1500 |  |  | 65.98d | 0d | Kapil [70%] | 16h |  | P4 |
| 1502 | 1.5.8.4 | Verify ENOB | 4.29d? | 2009-03-12 | 2009-03-19 | 1501 |  |  | 65.98d | 0d | Kapil [70%] | 24h |  | P4 |
| 1503 | 1.5.8.5 | Verify SNR | 2.86d? | 2009-03-19 | 2009-03-24 | 1502 |  |  | 65.98d | 0d | Kapil [70%] | 16h |  | P4 |
| 1504 | 1.5.8.6 | Verify SFDR | 4.29d? | 2009-03-24 | 2009-03-30 | 1503 |  |  | 65.98d | 0d | Kapil [70%] | 24h |  | P4 |
| 1505 | 1.5.8.7 | Verify Averaging | 4.29d? | 2009-03-30 | 2009-04-03 | 1504 |  |  | 65.98d | 0d | Kapil [70%] | 24h |  | P3 |
| 1506 | 1.5.8.8 | Verify Signal Generation | 4.29d? | 2009-04-03 | 2009-04-09 | 1505 |  |  | 65.98d | 0d | Kapil [70%] | 24h |  | P3 |
| 1507 | 1.5.8.9 | Verify Marker Functions | 7.14d? | 2009-04-09 | 2009-04-21 | 1506 |  |  | 65.98d |  | Kapil [70%] | 40h |  | P5 |
| 1508 | 1.5.8.10 | Verify Octave | 10d? | 2008-12-15 | 2008-12-26 | 1275 |  |  | 0d |  | Mike [50%] | 40h |  | P7 |
| 1509 | 1.5.8.11 | Verify Orbit | 8d? | 2008-12-29 | 2009-01-07 | 1508 |  |  | 0d |  | Mike [50%] | 32h |  | P4 |
| 1510 | 1.5.8.12 | Verify FFT | 4.62d? | 2008-08-28 A | 2008-09-04 A | 1494 | 100% |  |  |  | ShashiP [65%] | 24h | 24h | P2 |
| 1511 | 1.5.8.13 | Verify SFFT | 6.15d? | 2008-09-04 | 2008-09-15 | 1510 |  |  | 221.93d |  | ShashiP [65%] | 32h |  | P5 |
| 1512 | 1.5.8.14 | Verify Windowing | 6.15d? | 2008-09-15 A | 2008-09-23 A | 1511 | 100% |  |  |  | ShashiP [65%] | 32h | 32h | P2 |
| 1513 | 1.5.8.15 | Verify Resampling | 6.15d? | 2008-09-23 | 2008-10-01 | 1512 |  |  | 203.46d | 0d | ShashiP [65%] | 32h |  | P4 |
| 1514 | 1.5.8.16 | Verify Zoom FFT | 6.15d? | 2008-10-01 | 2008-10-13 | 1513 |  |  | 201.46d |  | ShashiP [65%] | 32h |  | P4 |
| 1515 | 1.5.8.17 | Verify Linear Spectrum | 4.62d? | 2008-10-13 A | 2008-10-20 A | 1514 | 100% |  |  |  | ShashiP [65%] | 24h | 24h | P2 |
| 1516 | 1.5.8.18 | Verify Power Spectrum | 4.62d? | 2008-10-20 A | 2008-10-24 A | 1515 | 100% |  |  |  | ShashiP [65%] | 24h | 24h | P2 |
| 1517 | 1.5.8.19 | Verify Phase Spectrum | 4.62d? | 2008-10-24 | 2008-11-03 | 1516 |  |  | 186.62d |  | ShashiP [65%] | 24h |  | P3 |
| 1518 | 1.5.8.20 | Verify Cross Power | 4.62d? | 2008-11-03 A | 2008-11-07 A | 1517 | 100% |  |  |  | ShashiP [65%] | 24h | 24h | P3 |
| 1519 | 1.5.8.21 | Verify Limit Lines | 7.69d? | 2008-11-07 | 2008-11-19 | 1518 |  |  | 128.16d | 0d | ShashiP [65%] | 40h |  | P7 |
| 1520 | 1.5.8.22 | Verify Swept Sine | 6.15d? | 2008-11-19 | 2008-11-27 | 1519 |  |  | 128.16d | 0d | ShashiP [65%] | 32h |  | P6 |
| 1521 | 1.5.8.23 | Verify Gain, Phase margins | 6.15d? | 2008-11-27 | 2008-12-05 | 1520 |  |  | 128.16d | 0d | ShashiP [65%] | 32h |  | P6 |
| 1522 | 1.5.8.24 | Verify Frequency, Damping | 6.15d? | 2008-12-05 | 2008-12-17 | 1521 |  |  | 127.16d | 0d | ShashiP [65%] | 32h |  | P6 |
| 1523 | 1.5.8.25 | Verify Frequency Response | 15.38d? | 2008-12-17 | 2009-01-08 | 1522 |  |  | 126.16d | 0d | ShashiP [65%] | 80h |  | P3 |
| 1524 | 1.5.8.26 | Verify Group Delay | 6.15d? | 2009-01-08 | 2009-01-16 | 1523 |  |  | 126.16d | 0d | ShashiP [65%] | 32h |  | P3 |
| 1525 | 1.5.8.27 | Verify Variance | 6.15d? | 2009-01-16 | 2009-01-26 | 1524 |  |  | 126.16d |  | ShashiP [65%] | 32h |  | P6 |
| 1526 | 1.5.8.28 | Verify Weighting filters for octave analysis A- weighting filter + B-weigghting filter +C- weighting filter | 7.69d? | 2009-01-13 | 2009-01-23 | 1371 |  |  | 89.01d | 0d | Ramkumar [65%] | 40h |  | P6 |
| 1527 | 1.5.8.29 | Verify General Weighting filters (A+B+C-weighting filter) | 7.69d? | 2009-01-23 | 2009-02-04 | 1526 |  |  | 89.01d | 0d | Ramkumar [65%] | 40h |  | P6 |
| 1528 | 1.5.8.30 | Verify CCIR filters | 7.69d? | 2009-02-04 | 2009-02-13 | 1527 |  |  | 89.01d | 0d | Ramkumar [65%] | 40h |  | P6 |
| 1529 | 1.5.8.31 | Verify Low Pass, high pass, band pass, notch | 7.69d? | 2009-02-13 | 2009-02-25 | 1528 |  |  | 89.01d | 0d | Ramkumar [65%] | 40h |  | P6 |
| 1530 | 1.5.8.32 | Verify Coherence | 7.69d? | 2009-02-25 | 2009-03-09 | 1529 |  |  | 89.01d | 0d | Ramkumar [65%] | 40h |  | P3 |
| 1531 | 1.5.8.33 | Verify all Math | 7.69d? | 2009-03-09 | 2009-03-18 | 1530 |  |  | 89.01d |  | Ramkumar [65%] | 40h |  | P7 |

| ID | WBS | Task | Duration | Start | Finish | Predecessors | Total slack | Resources | Work | Text1 |
| --- | --- | --- | --- | --- | --- | --- | --- | --- | --- | --- |
| 1532 | 1.5.9 | **Tests With Hardware** | 139d? | 2009-01-08 | 2009-07-21 |  | 0d |  | 476h | P9 |
| 1533 | 1.5.9.1 | **Transforms** | 11d? | 2009-01-08 | 2009-01-22 |  | 0d |  | 44h |  |
| 1534 | 1.5.9.1.1 | FFT | 2d? | 2009-01-08 | 2009-01-09 | 1509 | 0d | Mike [50%] | 8h |  |
| 1535 | 1.5.9.1.2 | Identify/Create actual input signals to match verification cases above | 2d? | 2009-01-12 | 2009-01-13 | 1534 | 0d | Mike [50%] | 8h |  |
| 1536 | 1.5.9.1.3 | Inject signals into hardware and capture the results. | 4d? | 2009-01-14 | 2009-01-19 | 1535 | 0d | Mike [50%] | 16h |  |
| 1537 | 1.5.9.1.4 | Compare results through hardware with software verfification | 2d? | 2009-01-20 | 2009-01-21 | 1536 | 0d | Mike [50%] | 8h |  |
| 1538 | 1.5.9.1.5 | Review Results | 1d? | 2009-01-22 | 2009-01-22 | 1537 | 0d | Mike [50%] | 4h |  |
| 1539 | 1.5.9.2 | **STFT** | 9d? | 2009-01-23 | 2009-02-04 |  | 0d |  | 36h |  |
| 1540 | 1.5.9.2.1 | Identify/Create actual input signals to match verification cases above | 2d? | 2009-01-23 | 2009-01-26 | 1538 | 0d | Mike [50%] | 8h |  |
| 1541 | 1.5.9.2.2 | Inject signals into hardware and capture the results. | 4d? | 2009-01-27 | 2009-01-30 | 1540 | 0d | Mike [50%] | 16h |  |
| 1542 | 1.5.9.2.3 | Compare results through hardware with software verfification | 2d? | 2009-02-02 | 2009-02-03 | 1541 | 0d | Mike [50%] | 8h |  |
| 1543 | 1.5.9.2.4 | Review Results | 1d? | 2009-02-04 | 2009-02-04 | 1542 | 0d | Mike [50%] | 4h |  |
| 1544 | 1.5.9.3 | **Windowing** | 6d? | 2009-02-05 | 2009-02-12 |  | 0d |  | 24h |  |
| 1545 | 1.5.9.3.1 | Identify/Create actual input signals to match verification cases above | 1d? | 2009-02-05 | 2009-02-05 | 1543 | 0d | Mike [50%] | 4h |  |
| 1546 | 1.5.9.3.2 | Inject signals into hardware and capture the results. | 2d? | 2009-02-06 | 2009-02-09 | 1545 | 0d | Mike [50%] | 8h |  |
| 1547 | 1.5.9.3.3 | Compare results through hardware with software verfification | 2d? | 2009-02-10 | 2009-02-11 | 1546 | 0d | Mike [50%] | 8h |  |
| 1548 | 1.5.9.3.4 | Review Results | 1d? | 2009-02-12 | 2009-02-12 | 1547 | 0d | Mike [50%] | 4h |  |
| 1549 | 1.5.9.4 | **Resampling** | 13d? | 2009-02-13 | 2009-03-03 |  | 0d |  | 52h |  |
| 1550 | 1.5.9.4.1 | Identify/Create actual input signals to match verification cases above | 4d? | 2009-02-13 | 2009-02-18 | 1548 | 0d | Mike [50%] | 16h |  |
| 1551 | 1.5.9.4.2 | Inject signals into hardware and capture the results. | 4d? | 2009-02-19 | 2009-02-24 | 1550 | 0d | Mike [50%] | 16h |  |
| 1552 | 1.5.9.4.3 | Compare results through hardware with software verfification | 4d? | 2009-02-25 | 2009-03-02 | 1551 | 0d | Mike [50%] | 16h |  |
| 1553 | 1.5.9.4.4 | Review Results | 1d? | 2009-03-03 | 2009-03-03 | 1552 | 0d | Mike [50%] | 4h |  |
| 1554 | 1.5.9.5 | **ZoomFFT** | 7d? | 2009-03-04 | 2009-03-12 |  | 0d |  | 28h |  |
| 1555 | 1.5.9.5.1 | Identify/Create actual input signals to match verification cases above | 2d? | 2009-03-04 | 2009-03-05 | 1553 | 0d | Mike [50%] | 8h |  |
| 1556 | 1.5.9.5.2 | Inject signals into hardware and capture the results. | 2d? | 2009-03-06 | 2009-03-09 | 1555 | 0d | Mike [50%] | 8h |  |
| 1557 | 1.5.9.5.3 | Compare results through hardware with software verfification | 2d? | 2009-03-10 | 2009-03-11 | 1556 | 0d | Mike [50%] | 8h |  |
| 1558 | 1.5.9.5.4 | Review Results | 1d? | 2009-03-12 | 2009-03-12 | 1557 | 0d | Mike [50%] | 4h |  |

| ID | WBS | Task | Duration | Start | Finish | Predecessors | Total slack | Resources | Work |
| --- | --- | --- | --- | --- | --- | --- | --- | --- | --- |
| 1559 | 1.5.9.6 | **Spectrums** | 25d? | 2009-03-13 | 2009-04-16 |  | 0d |  | 100h |
| 1560 | 1.5.9.6.1 | **Linear** | 5d? | 2009-03-13 | 2009-03-19 |  | 0d |  | 20h |
| 1561 | 1.5.9.6.1.1 | Identify/Create actual input signals to match verification cases above | 1d? | 2009-03-13 | 2009-03-13 | 1558 | 0d | Mike [50%] | 4h |
| 1562 | 1.5.9.6.1.2 | Inject signals into hardware and capture the results. | 2d? | 2009-03-16 | 2009-03-17 | 1561 | 0d | Mike [50%] | 8h |
| 1563 | 1.5.9.6.1.3 | Compare results through hardware with software verfification | 1d? | 2009-03-18 | 2009-03-18 | 1562 | 0d | Mike [50%] | 4h |
| 1564 | 1.5.9.6.1.4 | Review Results | 1d? | 2009-03-19 | 2009-03-19 | 1563 | 0d | Mike [50%] | 4h |
| 1565 | 1.5.9.6.2 | **Power** | 5d? | 2009-03-20 | 2009-03-26 |  | 0d |  | 20h |
| 1566 | 1.5.9.6.2.1 | Identify/Create actual input signals to match verification cases above | 1d? | 2009-03-20 | 2009-03-20 | 1564 | 0d | Mike [50%] | 4h |
| 1567 | 1.5.9.6.2.2 | Inject signals into hardware and capture the results. | 2d? | 2009-03-23 | 2009-03-24 | 1566 | 0d | Mike [50%] | 8h |
| 1568 | 1.5.9.6.2.3 | Compare results through hardware with software verfification | 1d? | 2009-03-25 | 2009-03-25 | 1567 | 0d | Mike [50%] | 4h |
| 1569 | 1.5.9.6.2.4 | Review Results | 1d? | 2009-03-26 | 2009-03-26 | 1568 | 0d | Mike [50%] | 4h |
| 1570 | 1.5.9.6.3 | **Phase** | 5d? | 2009-03-27 | 2009-04-02 |  | 0d |  | 20h |
| 1571 | 1.5.9.6.3.1 | Identify/Create actual input signals to match verification cases above | 1d? | 2009-03-27 | 2009-03-27 | 1569 | 0d | Mike [50%] | 4h |
| 1572 | 1.5.9.6.3.2 | Inject signals into hardware and capture the results. | 2d? | 2009-03-30 | 2009-03-31 | 1571 | 0d | Mike [50%] | 8h |
| 1573 | 1.5.9.6.3.3 | Compare results through hardware with software verfification | 1d? | 2009-04-01 | 2009-04-01 | 1572 | 0d | Mike [50%] | 4h |
| 1574 | 1.5.9.6.3.4 | Review Results | 1d? | 2009-04-02 | 2009-04-02 | 1573 | 0d | Mike [50%] | 4h |
| 1575 | 1.5.9.6.4 | **Auto power** | 5d? | 2009-04-03 | 2009-04-09 |  | 0d |  | 20h |
| 1576 | 1.5.9.6.4.1 | Identify/Create actual input signals to match verification cases above | 1d? | 2009-04-03 | 2009-04-03 | 1574 | 0d | Mike [50%] | 4h |
| 1577 | 1.5.9.6.4.2 | Inject signals into hardware and capture the results. | 2d? | 2009-04-06 | 2009-04-07 | 1576 | 0d | Mike [50%] | 8h |
| 1578 | 1.5.9.6.4.3 | Compare results through hardware with software verfification | 1d? | 2009-04-08 | 2009-04-08 | 1577 | 0d | Mike [50%] | 4h |
| 1579 | 1.5.9.6.4.4 | Review Results | 1d? | 2009-04-09 | 2009-04-09 | 1578 | 0d | Mike [50%] | 4h |
| 1580 | 1.5.9.6.5 | **Cross power** | 5d? | 2009-04-10 | 2009-04-16 |  | 0d |  | 20h |
| 1581 | 1.5.9.6.5.1 | Identify/Create actual input signals to match verification cases above | 1d? | 2009-04-10 | 2009-04-10 | 1579 | 0d | Mike [50%] | 4h |
| 1582 | 1.5.9.6.5.2 | Inject signals into hardware and capture the results. | 2d? | 2009-04-13 | 2009-04-14 | 1581 | 0d | Mike [50%] | 8h |
| 1583 | 1.5.9.6.5.3 | Compare results through hardware with software verfification | 1d? | 2009-04-15 | 2009-04-15 | 1582 | 0d | Mike [50%] | 4h |
| 1584 | 1.5.9.6.5.4 | Review Results | 1d? | 2009-04-16 | 2009-04-16 | 1583 | 0d | Mike [50%] | 4h |

| ID | WBS | Task | Duration | Start | Finish | Predecessors | Total slack | Resources | Work |
| --- | --- | --- | --- | --- | --- | --- | --- | --- | --- |
| 1585 | 1.5.9.7 | **Limit lines** | 10d? | 2009-04-17 | 2009-04-30 |  | 0d |  | 40h |
| 1586 | 1.5.9.7.1 | **Upper limit** | 5d? | 2009-04-17 | 2009-04-23 |  | 0d |  | 20h |
| 1587 | 1.5.9.7.1.1 | Identify/Create actual input signals to match verification cases above | 1d? | 2009-04-17 | 2009-04-17 | 1584 | 0d | Mike [50%] | 4h |
| 1588 | 1.5.9.7.1.2 | Inject signals into hardware and capture the results. | 2d? | 2009-04-20 | 2009-04-21 | 1587 | 0d | Mike [50%] | 8h |
| 1589 | 1.5.9.7.1.3 | Compare results through hardware with software verfification | 1d? | 2009-04-22 | 2009-04-22 | 1588 | 0d | Mike [50%] | 4h |
| 1590 | 1.5.9.7.1.4 | Review Results | 1d? | 2009-04-23 | 2009-04-23 | 1589 | 0d | Mike [50%] | 4h |
| 1591 | 1.5.9.7.2 | **Lower limit** | 5d? | 2009-04-24 | 2009-04-30 |  | 0d |  | 20h |
| 1592 | 1.5.9.7.2.1 | Identify/Create actual input signals to match verification cases above | 1d? | 2009-04-24 | 2009-04-24 | 1590 | 0d | Mike [50%] | 4h |
| 1593 | 1.5.9.7.2.2 | Inject signals into hardware and capture the results. | 2d? | 2009-04-27 | 2009-04-28 | 1592 | 0d | Mike [50%] | 8h |
| 1594 | 1.5.9.7.2.3 | Compare results through hardware with software verfification | 1d? | 2009-04-29 | 2009-04-29 | 1593 | 0d | Mike [50%] | 4h |
| 1595 | 1.5.9.7.2.4 | Review Results | 1d? | 2009-04-30 | 2009-04-30 | 1594 | 0d | Mike [50%] | 4h |
| 1596 | 1.5.9.8 | **Swept Sine** | 58d? | 2009-05-01 | 2009-07-21 |  | 0d |  | 152h |
| 1597 | 1.5.9.8.1 | **Gain, Phase margins** | 8d? | 2009-05-01 | 2009-05-12 |  | 0d |  | 32h |
| 1598 | 1.5.9.8.1.1 | Identify/Create actual input signals to match verification cases above | 4d? | 2009-05-01 | 2009-05-06 | 1595 | 0d | Mike [50%] | 16h |
| 1599 | 1.5.9.8.1.2 | Inject signals into hardware and capture the results. | 2d? | 2009-05-07 | 2009-05-08 | 1598 | 0d | Mike [50%] | 8h |
| 1600 | 1.5.9.8.1.3 | Compare results through hardware with software verfification | 1d? | 2009-05-11 | 2009-05-11 | 1599 | 0d | Mike [50%] | 4h |
| 1601 | 1.5.9.8.1.4 | Review Results | 1d? | 2009-05-12 | 2009-05-12 | 1600 | 0d | Mike [50%] | 4h |
| 1602 | 1.5.9.8.2 | **Frequency, Damping** | 8d? | 2009-05-13 | 2009-05-22 |  | 0d |  | 32h |
| 1603 | 1.5.9.8.2.1 | Identify/Create actual input signals to match verification cases above | 4d? | 2009-05-13 | 2009-05-18 | 1601 | 0d | Mike [50%] | 16h |
| 1604 | 1.5.9.8.2.2 | Inject signals into hardware and capture the results. | 2d? | 2009-05-19 | 2009-05-20 | 1603 | 0d | Mike [50%] | 8h |
| 1605 | 1.5.9.8.2.3 | Compare results through hardware with software verfification | 1d? | 2009-05-21 | 2009-05-21 | 1604 | 0d | Mike [50%] | 4h |
| 1606 | 1.5.9.8.2.4 | Review Results | 1d? | 2009-05-22 | 2009-05-22 | 1605 | 0d | Mike [50%] | 4h |
| 1607 | 1.5.9.8.3 | **Frequency Response** | 8d? | 2009-05-25 | 2009-06-03 |  | 0d |  | 24h |
| 1608 | 1.5.9.8.3.1 | Identify/Create actual input signals to match verification cases above | 2d? | 2009-05-25 | 2009-05-26 | 1606 | 0d | Mike [50%] | 8h |
| 1609 | 1.5.9.8.3.2 | Inject signals into hardware and capture the results. | 2d? | 2009-05-29 | 2009-06-01 | 1608 | 0d | Mike [50%] | 8h |
| 1610 | 1.5.9.8.3.3 | Compare results through hardware with software verfification | 1d? | 2009-06-02 | 2009-06-02 | 1609 | 0d | Mike [50%] | 4h |
| 1611 | 1.5.9.8.3.4 | Review Results | 1d? | 2009-06-03 | 2009-06-03 | 1610 | 0d | Mike [50%] | 4h |

| ID | WBS | Task | Duration | Start | Finish | Predecessors | Complete | Total slack | Resources | Work | Actual work | Text1 |
| --- | --- | --- | --- | --- | --- | --- | --- | --- | --- | --- | --- | --- |
| 1612 | 1.5.9.8.4 | **Variance** | 19d? | 2009-06-04 | 2009-06-30 |  |  | 0d |  | 32h |  |  |
| 1613 | 1.5.9.8.4.1 | Identify/Create actual input signals to match verification cases above | 4d? | 2009-06-04 | 2009-06-09 | 1611 |  | 0d | Mike [50%] | 16h |  |  |
| 1614 | 1.5.9.8.4.2 | Inject signals into hardware and capture the results. | 2d? | 2009-06-19 | 2009-06-22 | 1613 |  | 0d | Mike [50%] | 8h |  |  |
| 1615 | 1.5.9.8.4.3 | Compare results through hardware with software verfification | 1d? | 2009-06-29 | 2009-06-29 | 1614 |  | 0d | Mike [50%] | 4h |  |  |
| 1616 | 1.5.9.8.4.4 | Review Results | 1d? | 2009-06-30 | 2009-06-30 | 1615 |  | 0d | Mike [50%] | 4h |  |  |
| 1617 | 1.5.9.8.5 | **Group Delay** | 10d? | 2009-07-08 | 2009-07-21 |  |  | 0d |  | 32h |  |  |
| 1618 | 1.5.9.8.5.1 | Identify/Create actual input signals to match verification cases above | 4d? | 2009-07-08 | 2009-07-13 | 1616 |  | 0d | Mike [50%] | 16h |  |  |
| 1619 | 1.5.9.8.5.2 | Inject signals into hardware and capture the results. | 2d? | 2009-07-16 | 2009-07-17 | 1618 |  | 0d | Mike [50%] | 8h |  |  |
| 1620 | 1.5.9.8.5.3 | Compare results through hardware with software verfification | 1d? | 2009-07-20 | 2009-07-20 | 1619 |  | 0d | Mike [50%] | 4h |  |  |
| 1621 | 1.5.9.8.5.4 | Review Results | 1d? | 2009-07-21 | 2009-07-21 | 1620 |  | 0d | Mike [50%] | 4h |  |  |
| 1622 | 1.5.10 | **Error codes definition** | 10d? | 2008-02-14 A | 2008-02-28 A |  | 100% |  |  | 56h | 56h | P2 |
| 1623 | 1.5.10.1 | Categorize errors | 4.29d? | 2008-02-14 A | 2008-02-21 A |  | 100% |  | Himanshu [70%] | 24h | 24h |  |
| 1624 | 1.5.10.2 | Error code translation proposal/plan | 4.29d? | 2008-02-21 A | 2008-02-27 A | 1623 | 100% |  | Himanshu [70%] | 24h | 24h |  |
| 1625 | 1.5.10.3 | Review with team | 0.71d? | 2008-02-27 A | 2008-02-28 A | 1624 | 100% |  | Himanshu [70%] | 4h | 4h |  |
| 1626 | 1.5.10.4 | Incorporate review decisions | 0.71d? | 2008-02-28 A | 2008-02-28 A | 1625 | 100% |  | Himanshu [70%] | 4h | 4h |  |
| 1627 | 1.5.11 | **Define meas to be implemented in MVP** | 12d? | 2008-02-04 A | 2008-02-19 A |  | 100% |  |  | 48h | 48h | P1 |
| 1628 | 1.5.11.1 | List the meas for MVP | 2d? | 2008-02-04 A | 2008-02-05 A |  | 100% |  | Mike [50%] | 8h | 8h |  |
| 1629 | 1.5.11.2 | Identify dependecies on other meas | 4d? | 2008-02-06 A | 2008-02-11 A | 1628 | 100% |  | Mike [50%] | 16h | 16h |  |
| 1630 | 1.5.11.3 | Review with team | 2d? | 2008-02-12 A | 2008-02-13 A | 1629 | 100% |  | Mike [50%] | 8h | 8h |  |
| 1631 | 1.5.11.4 | Incorporate review decisions | 2d? | 2008-02-14 A | 2008-02-15 A | 1630 | 100% |  | Mike [50%] | 8h | 8h |  |
| 1632 | 1.5.11.5 | Finalize meas definition for MVP | 2d? | 2008-02-18 A | 2008-02-19 A | 1631 | 100% |  | Mike [50%] | 8h | 8h |  |
| 1633 | 1.5.12 | **Infrastructure Development** | 130.14d? | 2008-02-04 A | 2008-08-04 A |  | 100% |  |  | 64h | 64h | P1 |
| 1634 | 1.5.12.1 | Unit test framework setup | 2.86d? | 2008-02-04 A | 2008-02-06 A |  | 100% |  | Kapil [70%] | 16h | 16h |  |
| 1635 | 1.5.12.2 | Test result reporting and tracking | 4.29d? | 2008-02-06 A | 2008-02-14 A | 1634 | 100% |  | Kapil [70%] | 24h | 24h |  |
| 1636 | 1.5.12.3 | Folder structure (OS, Unit test, performance test, verfication test and results) | 1.43d? | 2008-02-14 A | 2008-02-15 A | 1635 | 100% |  | Kapil [70%] | 8h | 8h |  |
| 1637 | 1.5.12.4 | Work with LP to understand their needs | 4d? | 2008-07-29 A | 2008-08-04 A | 1632 | 100% |  | Mike [50%] | 16h | 16h |  |

| ID | WBS | Task | Duration | Start | Finish | Predecessors | Complete | Remaining | Total slack | Free slack | Resources | Work | Actual work |
| --- | --- | --- | --- | --- | --- | --- | --- | --- | --- | --- | --- | --- | --- |
| 1638 | 1.6 | **IE State Proxy** | 161.21d? | 2008-02-04 A | 2008-09-16 |  | 27% | 117.08d? | 220.79d |  |  | 1064h | 286.8h |
| 1639 | 1.6.1 | Design Instrument Proxy High Level Design | 4.29d? | 2008-02-04 A | 2008-02-08 A |  | 100% |  |  |  | Vishal [70%] | 24h | 24h |
| 1640 | 1.6.2 | Implement Instrument Proxy Framework into Build | 4.29d? | 2008-02-08 A | 2008-02-15 A | 1639 | 100% |  |  |  | Vishal [70%] | 24h | 24h |
| 1641 | 1.6.3 | **Design Parameters** | 17.14d? | 2008-02-15 A | 2008-03-11 |  | 82% | 3.12d? | 355.29d |  |  | 88h | 72h |
| 1642 | 1.6.3.1 | Arm | 2.86d? | 2008-02-15 A | 2008-02-20 A | 1640 | 100% |  |  |  | Vishal [70%] | 16h | 16h |
| 1643 | 1.6.3.2 | Channel | 2.86d? | 2008-02-21 A | 2008-02-26 A | 1642 | 100% |  |  |  | Vishal [70%] | 16h | 16h |
| 1644 | 1.6.3.3 | Frequency | 1.43d? | 2008-02-26 A | 2008-02-28 A | 1643 | 100% |  |  |  | Vishal [70%] | 8h | 8h |
| 1645 | 1.6.3.4 | Source | 1.43d? | 2008-02-28 | 2008-02-29 | 1644 |  |  | 362.43d |  | Vishal [70%] | 8h |  |
| 1646 | 1.6.3.5 | Trigger | 1.43d? | 2008-02-29 A | 2008-03-03 A | 1645 | 100% |  |  |  | Vishal [70%] | 8h | 8h |
| 1647 | 1.6.3.6 | Error Handling | 1.43d? | 2008-03-03 | 2008-03-05 | 1646 |  |  | 359.57d |  | Vishal [70%] | 8h |  |
| 1648 | 1.6.3.7 | Simulation Design | 1.43d? | 2008-03-05 A | 2008-03-06 A | 1647 | 100% |  |  |  | Vishal [70%] | 8h | 8h |
| 1649 | 1.6.3.8 | Instrument Engine Interface Design | 2.86d? | 2008-03-06 A | 2008-03-11 A | 1648 | 100% |  |  |  | Vishal [70%] | 16h | 16h |
| 1650 | 1.6.4 | **Design C# IE Interface** | 72.32d? | 2008-03-12 A | 2008-06-23 | 1649 | 14% | 62.24d? | 279.3d |  |  | 128h | 16.8h |
| 1651 | 1.6.4.1 | Implement / Test Enum Conversion | 1.97d | 2008-05-26 A | 2008-05-27 |  | 76% | 0.47d | 279.3d | 0d | Gowie [75%] | 11.2h | 8.4h |
| 1652 | 1.6.4.2 | Implement Test Struct Conversion | 1.97d | 2008-03-12 A | 2008-05-28 | 1651 | 76% | 0.47d | 279.3d | 0d | Gowie [75%] | 11.2h | 8.4h |
| 1653 | 1.6.4.3 | Implement / Test Init | 3.2d? | 2008-05-28 | 2008-06-02 | 1652 |  |  | 279.3d | 0d | Gowie [75%] | 19.2h |  |
| 1654 | 1.6.4.4 | Implement / Test Get | 3.2d? | 2008-06-02 | 2008-06-05 | 1653 |  |  | 279.3d | 0d | Gowie [75%] | 19.2h |  |
| 1655 | 1.6.4.5 | Implement / Test Validate | 3.2d? | 2008-06-05 | 2008-06-11 | 1654 |  |  | 279.3d | 0d | Gowie [75%] | 19.2h |  |
| 1656 | 1.6.4.6 | Implement / Test Set | 2d? | 2008-06-11 | 2008-06-13 | 1655 |  |  | 279.3d | 0d | Gowie [75%] | 12h |  |
| 1657 | 1.6.4.7 | Implement / Test Boot Up | 2d? | 2008-06-13 | 2008-06-17 | 1656 |  |  | 279.3d | 0d | Gowie [75%] | 12h |  |
| 1658 | 1.6.4.8 | Implement / Test Self Test | 2d? | 2008-06-17 | 2008-06-19 | 1657 |  |  | 279.3d | 0d | Gowie [75%] | 12h |  |
| 1659 | 1.6.4.9 | Implement / Test Calibration | 2d? | 2008-06-19 | 2008-06-23 | 1658 |  |  | 279.3d | 0d | Gowie [75%] | 12h |  |
| 1660 | 1.6.5 | **Tie C# IE into IP** | 2.67d? | 2008-06-23 | 2008-06-25 | 1659 |  |  | 279.3d |  |  | 96h |  |
| 1661 | 1.6.5.1 | Arm | 2.67d? | 2008-06-23 | 2008-06-25 |  |  |  | 279.3d |  | Gowie [75%] | 16h |  |
| 1662 | 1.6.5.2 | Channel | 2.67d? | 2008-06-23 | 2008-06-25 |  |  |  | 279.3d |  | Gowie [75%] | 16h |  |
| 1663 | 1.6.5.3 | Frequency | 2.67d? | 2008-06-23 | 2008-06-25 |  |  |  | 279.3d |  | Gowie [75%] | 16h |  |
| 1664 | 1.6.5.4 | Source | 2.67d? | 2008-06-23 | 2008-06-25 |  |  |  | 279.3d |  | Gowie [75%] | 16h |  |
| 1665 | 1.6.5.5 | Trigger | 2.67d? | 2008-06-23 | 2008-06-25 |  |  |  | 279.3d |  | Gowie [75%] | 16h |  |
| 1666 | 1.6.5.6 | Error Handling | 2.67d? | 2008-06-23 | 2008-06-25 |  |  |  | 279.3d |  | Gowie [75%] | 16h |  |

| ID | WBS | Task | Type | Duration | Start | Finish | Predecessors | Complete | Remaining | Total slack | Free slack | Resources | Work | Actual work |
| --- | --- | --- | --- | --- | --- | --- | --- | --- | --- | --- | --- | --- | --- | --- |
| 1667 | 1.6.6 | **Unit Testing** |  | 11d? | 2008-03-11 A | 2008-03-26 |  | 58% | 4.58d? | 344.29d |  |  | 48h | 28h |
| 1668 | 1.6.6.1 | Arm |  | 2.86d? | 2008-03-11 A | 2008-03-14 A | 1660 | 100% |  |  |  | Vishal [70%] | 16h | 16h |
| 1669 | 1.6.6.2 | Average | milestone | 0d? | 2008-03-14 | 2008-03-14 | 1668 |  |  | 351.36d | 1.43d | Vishal [70%] |  |  |
| 1670 | 1.6.6.3 | Channel |  | 1.43d? | 2008-03-17 A | 2008-03-19 | 1669 | 25% | 1.07d? | 349.57d |  | Vishal [70%] | 8h | 2h |
| 1671 | 1.6.6.4 | Frequency |  | 1.43d? | 2008-03-19 A | 2008-03-20 A | 1670 | 100% |  |  |  | Vishal [70%] | 8h | 8h |
| 1672 | 1.6.6.5 | Source |  | 1.43d? | 2008-03-20 | 2008-03-25 | 1671 |  |  | 336.07d | 0d | Vishal [70%] | 8h |  |
| 1673 | 1.6.6.6 | Trigger |  | 1.43d? | 2008-03-25 A | 2008-03-26 | 1672 | 25% | 1.07d? | 335.72d | 0d | Vishal [70%] | 8h | 2h |
| 1674 | 1.6.7 | **Error Handling and Exception Propogation** |  | 8.57d? | 2008-03-26 | 2008-04-08 |  |  |  | 335.72d |  |  | 48h |  |
| 1675 | 1.6.7.1 | Error Handling |  | 2.86d? | 2008-03-26 | 2008-03-31 | 1673 |  |  | 335.72d | 0d | Vishal [70%] | 16h |  |
| 1676 | 1.6.7.2 | Develop Thread Safe Tests |  | 2.86d? | 2008-03-31 | 2008-04-03 | 1675 |  |  | 335.72d | 0d | Vishal [70%] | 16h |  |
| 1677 | 1.6.7.3 | Develop Parameter Change Callback Tests |  | 2.86d? | 2008-04-03 | 2008-04-08 | 1676 |  |  | 335.72d |  | Vishal [70%] | 16h |  |
| 1678 | 1.6.8 | **Method Design** |  | 5.29d? | 2008-04-08 A | 2008-04-15 |  | 67% | 1.76d? | 330.43d |  |  | 24h | 16h |
| 1679 | 1.6.8.1 | Design Run / Stop / Pause / Continue |  | 2.86d? | 2008-04-08 A | 2008-04-11 A | 1677 | 100% |  |  |  | Vishal [70%] | 16h | 16h |
| 1680 | 1.6.8.2 | Design Reset |  | 1.43d? | 2008-04-11 | 2008-04-15 | 1679 |  |  | 330.43d |  | Vishal [70%] | 8h |  |
| 1681 | 1.6.9 | **Simulator(Frequency Parameter)** |  | 19.14d? | 2008-04-15 A | 2008-05-12 A |  | 100% |  |  |  |  | 96h | 96h |
| 1682 | 1.6.9.1 | Implement Simulation of Parameters |  | 2.86d? | 2008-04-15 A | 2008-04-21 A | 1680 | 100% |  |  |  | Vishal [70%] | 16h | 16h |
| 1683 | 1.6.9.2 | Implement Simulation of Methods |  | 14.29d? | 2008-04-21 A | 2008-05-12 A | 1682 | 100% |  |  |  | Vishal [70%] | 80h | 80h |
| 1684 | 1.6.10 | **Design Instrument Engine Call Protocol** |  | 9.93d? | 2008-05-12 A | 2008-05-26 |  | 22% | 7.74d? | 222.79d |  |  | 48h | 10h |
| 1685 | 1.6.10.1 | Arm |  | 1.33d | 2008-05-12 | 2008-05-14 | 1683 |  |  | 3.05d | 0d | Gowie [75%] | 8h |  |
| 1686 | 1.6.10.2 | Average | milestone | 0d? | 2008-05-14 | 2008-05-14 | 1685 |  |  | 3.05d | 0d | Gowie [75%] |  |  |
| 1687 | 1.6.10.3 | Channel |  | 1.33d? | 2008-05-14 | 2008-05-15 | 1686 |  |  | 3.05d |  | Gowie [75%] | 8h |  |
| 1688 | 1.6.10.4 | Frequency |  | 1.43d? | 2008-05-16 A | 2008-05-20 A | 1687 | 100% |  |  |  | Gowie [75%] | 8h | 8h |
| 1689 | 1.6.10.5 | Source |  | 1.33d? | 2008-05-20 | 2008-05-21 | 1688 |  |  | 223.26d | 0d | Gowie [75%] | 8h |  |
| 1690 | 1.6.10.6 | Trigger |  | 1.33d? | 2008-05-21 | 2008-05-23 | 1689 |  |  | 223.26d | 0.19d | Gowie [75%] | 8h |  |
| 1691 | 1.6.10.7 | Run / Pause / Cont / Stop / Reset |  | 1.36d? | 2008-05-23 A | 2008-05-26 | 1690 | 26% | 1d? | 222.79d | 0d | Gowie [75%] | 8h | 2h |

| ID | WBS | Task | Type | Duration | Start | Finish | Predecessors | Complete | Remaining | Total slack | Free slack | Resources | Work | Actual work |
| --- | --- | --- | --- | --- | --- | --- | --- | --- | --- | --- | --- | --- | --- | --- |
| 1692 | 1.6.11 | **Implement test Instrument Engine Calls** |  | 65.29d? | 2008-05-26 | 2008-08-25 |  |  |  | 221.79d |  |  | 360h |  |
| 1693 | 1.6.11.1 | Arm |  | 10d? | 2008-05-26 | 2008-06-09 | 1691 |  |  | 222.79d | 0d | Vishal [70%] | 56h |  |
| 1694 | 1.6.11.2 | Average | milestone | 0d? | 2008-06-09 | 2008-06-09 | 1693 |  |  | 222.79d | 0d | Vishal [70%] |  |  |
| 1695 | 1.6.11.3 | Channel |  | 10d? | 2008-06-09 | 2008-06-23 | 1694 |  |  | 222.79d | 0d | Vishal [70%] | 56h |  |
| 1696 | 1.6.11.4 | Frequency |  | 10d? | 2008-06-23 | 2008-07-07 | 1695 |  |  | 222.79d | 0d | Vishal [70%] | 56h |  |
| 1697 | 1.6.11.5 | Source |  | 10d? | 2008-07-07 | 2008-07-21 | 1696 |  |  | 222.79d | 0d | Vishal [70%] | 56h |  |
| 1698 | 1.6.11.6 | Trigger |  | 10d? | 2008-07-21 | 2008-08-04 | 1697 |  |  | 222.79d | 0d | Vishal [70%] | 56h |  |
| 1699 | 1.6.11.7 | Run / Pause / Cont / Stop / Reset |  | 14.29d? | 2008-08-04 | 2008-08-25 | 1698 |  |  | 221.79d | 0d | Vishal [70%] | 80h |  |
| 1700 | 1.6.12 | **Enabled** |  | 15.29d? | 2008-08-25 | 2008-09-16 |  |  |  | 220.79d |  |  | 80h |  |
| 1701 | 1.6.12.1 | Design Enabled |  | 2.86d? | 2008-08-25 | 2008-08-28 | 1699 |  |  | 221.79d | 0d | Vishal [70%] | 16h |  |
| 1702 | 1.6.12.2 | Implement Enabled |  | 5.71d? | 2008-08-28 | 2008-09-08 | 1701 |  |  | 220.79d | 0d | Vishal [70%] | 32h |  |
| 1703 | 1.6.12.3 | Test Enabled |  | 5.71d? | 2008-09-08 | 2008-09-16 | 1702 |  |  | 220.79d |  | Vishal [70%] | 32h |  |
| 1704 | 1.7 | **Instrument Interface** |  | 131.43d? | 2008-02-04 A | 2008-08-05 |  | 37% | 82.34d? | 250.57d |  |  | 664h | 248h |
| 1705 | 1.7.1 | **I.I public interfaces** |  | 16.71d? | 2008-02-04 A | 2008-02-26 A |  | 100% |  |  |  |  | 88h | 88h |
| 1706 | 1.7.1.1 | Design |  | 4.29d? | 2008-02-04 A | 2008-02-08 A |  | 100% |  |  |  | RKB [70%] | 24h | 24h |
| 1707 | 1.7.1.2 | Implementation |  | 5.71d? | 2008-02-08 A | 2008-02-18 A | 1706 | 100% |  |  |  | RKB [70%] | 32h | 32h |
| 1708 | 1.7.1.3 | Unit test |  | 5.71d? | 2008-02-19 A | 2008-02-26 A | 1707 | 100% |  |  |  | RKB [70%] | 32h | 32h |
| 1709 | 1.7.2 | **Channel Key pattern** |  | 73.29d? | 2008-02-29 A | 2008-06-11 |  | 29% | 52.35d? | 289.14d |  |  | 112h | 32h |
| 1710 | 1.7.2.1 | Channel config screen implementation |  | 2.86d? | 2008-06-02 A | 2008-06-11 A | 1708 | 100% |  |  |  | Himanshu [70%] | 16h | 16h |
| 1711 | 1.7.2.2 | Accelerators implementation |  | 2.86d? | 2008-02-29 A | 2008-03-05 A | 1710 | 100% |  |  |  | Himanshu [70%] | 16h | 16h |
| 1712 | 1.7.2.3 | Source key selection change/ Accelerator data change mechanism |  | 2.86d? | 2008-03-05 | 2008-03-10 | 1711 |  |  | 345.29d | 0d | Himanshu [70%] | 16h |  |
| 1713 | 1.7.2.4 | OK/Cancel framework |  | 2.86d? | 2008-03-10 | 2008-03-13 | 1712 |  |  | 345.29d | 0d | Himanshu [70%] | 16h |  |
| 1714 | 1.7.2.5 | Unit test for exposed User control |  | 1.43d? | 2008-03-13 | 2008-03-14 | 1713 |  |  | 345.29d | 0d | Himanshu [70%] | 8h |  |
| 1715 | 1.7.2.6 | Unit test for Accelerators |  | 1.43d? | 2008-03-14 | 2008-03-17 | 1714 |  |  | 345.29d | 0d | Himanshu [70%] | 8h |  |
| 1716 | 1.7.2.7 | Unit test for data refresh |  | 1.43d? | 2008-03-17 | 2008-03-19 | 1715 |  |  | 345.29d | 0d | Himanshu [70%] | 8h |  |
| 1717 | 1.7.2.8 | Unit test for OK/Cancel logic |  | 1.43d? | 2008-03-19 | 2008-03-20 | 1716 |  |  | 345.29d | 0d | Himanshu [70%] | 8h |  |
| 1718 | 1.7.2.9 | Code reviews |  | 1.43d? | 2008-03-20 | 2008-03-25 | 1717 |  |  | 344.29d | 0d | Himanshu [70%] | 8h |  |
| 1719 | 1.7.2.10 | Absorb code reviews changes |  | 1.43d? | 2008-03-25 | 2008-03-26 | 1718 |  |  | 344.29d |  | Himanshu [70%] | 8h |  |

| ID | WBS | Task | Duration | Start | Finish | Predecessors | Complete | Remaining | Total slack | Free slack | Resources | Work | Actual work |
| --- | --- | --- | --- | --- | --- | --- | --- | --- | --- | --- | --- | --- | --- |
| 1720 | 1.7.3 | **Frequency Key pattern** | 22d? | 2008-03-26 A | 2008-04-25 A |  | 100% |  |  |  |  | 96h | 96h |
| 1721 | 1.7.3.1 | Frequencyl config screen implementation | 2.86d? | 2008-03-26 A | 2008-03-31 A | 1719 | 100% |  |  |  | Himanshu [70%] | 16h | 16h |
| 1722 | 1.7.3.2 | Accelerators implementation | 2.86d? | 2008-03-31 A | 2008-04-03 A | 1721 | 100% |  |  |  | Himanshu [70%] | 16h | 16h |
| 1723 | 1.7.3.3 | OK/Cancel framework | 2.86d? | 2008-04-08 A | 2008-04-11 A | 1722 | 100% |  |  |  | Himanshu [70%] | 16h | 16h |
| 1724 | 1.7.3.4 | Unit test for exposed User control | 1.43d? | 2008-04-11 A | 2008-04-15 A | 1723 | 100% |  |  |  | Himanshu [70%] | 8h | 8h |
| 1725 | 1.7.3.5 | Unit test for Accelerators | 1.43d? | 2008-04-15 A | 2008-04-16 A | 1724 | 100% |  |  |  | Himanshu [70%] | 8h | 8h |
| 1726 | 1.7.3.6 | Unit test for data refresh | 1.43d? | 2008-04-16 A | 2008-04-21 A | 1725 | 100% |  |  |  | Himanshu [70%] | 8h | 8h |
| 1727 | 1.7.3.7 | Unit test for OK/Cancel logic | 1.43d? | 2008-04-21 A | 2008-04-22 A | 1726 | 100% |  |  |  | Himanshu [70%] | 8h | 8h |
| 1728 | 1.7.3.8 | Code reviews | 1.43d? | 2008-04-22 A | 2008-04-24 A | 1727 | 100% |  |  |  | Himanshu [70%] | 8h | 8h |
| 1729 | 1.7.3.9 | Absorb code reviews changes | 1.43d? | 2008-04-24 A | 2008-04-25 A | 1728 | 100% |  |  |  | Himanshu [70%] | 8h | 8h |
| 1730 | 1.7.4 | **Analyzer type Key pattern** | 6.71d? | 2008-04-25 | 2008-05-06 |  |  |  | 315.57d |  |  | 32h |  |
| 1731 | 1.7.4.1 | Analyzer slection change event implemntation | 2.86d? | 2008-04-25 | 2008-04-30 | 1729 |  |  | 316.57d | 0d | Himanshu [70%] | 16h |  |
| 1732 | 1.7.4.2 | Code reviews | 1.43d? | 2008-04-30 | 2008-05-02 | 1731 |  |  | 315.57d | 0d | Himanshu [70%] | 8h |  |
| 1733 | 1.7.4.3 | Absorb code reviews changes | 1.43d? | 2008-05-02 | 2008-05-06 | 1732 |  |  | 315.57d |  | Himanshu [70%] | 8h |  |
| 1734 | 1.7.5 | **Trigger Key pattern** | 20d? | 2008-05-06 A | 2008-06-03 |  | 29% | 14.29d? | 255.57d |  |  | 112h | 32h |
| 1735 | 1.7.5.1 | Trigger config screen implementation | 2.86d? | 2008-05-06 A | 2008-05-09 A | 1733 | 100% |  |  |  | Himanshu [70%] | 16h | 16h |
| 1736 | 1.7.5.2 | Accelerators implementation | 2.86d? | 2008-05-09 A | 2008-05-14 A | 1735 | 100% |  |  |  | Himanshu [70%] | 16h | 16h |
| 1737 | 1.7.5.3 | Source key selection change/ Accelerator data change mechanism | 2.86d? | 2008-05-14 | 2008-05-16 | 1736 |  |  | 255.57d | 0d | Himanshu [70%] | 16h |  |
| 1738 | 1.7.5.4 | OK/Cancel framework | 2.86d? | 2008-05-16 | 2008-05-21 | 1737 |  |  | 255.57d | 0d | Himanshu [70%] | 16h |  |
| 1739 | 1.7.5.5 | Unit test for exposed User control | 1.43d? | 2008-05-21 | 2008-05-23 | 1738 |  |  | 255.57d | 0d | Himanshu [70%] | 8h |  |
| 1740 | 1.7.5.6 | Unit test for Accelerators | 1.43d? | 2008-05-23 | 2008-05-26 | 1739 |  |  | 255.57d | 0d | Himanshu [70%] | 8h |  |
| 1741 | 1.7.5.7 | Unit test for data refresh | 1.43d? | 2008-05-26 | 2008-05-28 | 1740 |  |  | 255.57d | 0d | Himanshu [70%] | 8h |  |
| 1742 | 1.7.5.8 | Unit test for OK/Cancel logic | 1.43d? | 2008-05-28 | 2008-05-29 | 1741 |  |  | 255.57d | 0d | Himanshu [70%] | 8h |  |
| 1743 | 1.7.5.9 | Code reviews | 1.43d? | 2008-05-29 | 2008-05-30 | 1742 |  |  | 255.57d | 0d | Himanshu [70%] | 8h |  |
| 1744 | 1.7.5.10 | Absorb code reviews changes | 1.43d? | 2008-05-30 | 2008-06-03 | 1743 |  |  | 255.57d | 0d | Himanshu [70%] | 8h |  |

| ID | WBS | Task | Duration | Start | Finish | Predecessors | Complete | Remaining | Total slack | Free slack | Constraint | Resources | Work | Actual work | Text1 |
| --- | --- | --- | --- | --- | --- | --- | --- | --- | --- | --- | --- | --- | --- | --- | --- |
| 1745 | 1.7.6 | **Average setup Key pattern** | 25d? | 2008-06-03 | 2008-07-08 |  |  |  | 250.57d |  |  |  | 112h |  |  |
| 1746 | 1.7.6.1 | Average config screen implementation | 2.86d? | 2008-06-03 | 2008-06-13 | 1744 |  |  | 250.57d | 0d |  | Himanshu [70%] | 16h |  |  |
| 1747 | 1.7.6.2 | Accelerators implementation | 2.86d? | 2008-06-13 | 2008-06-18 | 1746 |  |  | 250.57d | 0d |  | Himanshu [70%] | 16h |  |  |
| 1748 | 1.7.6.3 | Source key selection change/ Accelerator data change mechanism | 2.86d? | 2008-06-18 | 2008-06-20 | 1747 |  |  | 250.57d | 0d |  | Himanshu [70%] | 16h |  |  |
| 1749 | 1.7.6.4 | OK/Cancel framework | 2.86d? | 2008-06-20 | 2008-06-25 | 1748 |  |  | 250.57d | 0d |  | Himanshu [70%] | 16h |  |  |
| 1750 | 1.7.6.5 | Unit test for exposed User control | 1.43d? | 2008-06-25 | 2008-06-27 | 1749 |  |  | 250.57d | 0d |  | Himanshu [70%] | 8h |  |  |
| 1751 | 1.7.6.6 | Unit test for Accelerators | 1.43d? | 2008-06-27 | 2008-06-30 | 1750 |  |  | 250.57d | 0d |  | Himanshu [70%] | 8h |  |  |
| 1752 | 1.7.6.7 | Unit test for data refresh | 1.43d? | 2008-06-30 | 2008-07-02 | 1751 |  |  | 250.57d | 0d |  | Himanshu [70%] | 8h |  |  |
| 1753 | 1.7.6.8 | Unit test for OK/Cancel logic | 1.43d? | 2008-07-02 | 2008-07-03 | 1752 |  |  | 250.57d | 0d |  | Himanshu [70%] | 8h |  |  |
| 1754 | 1.7.6.9 | Code reviews | 1.43d? | 2008-07-03 | 2008-07-04 | 1753 |  |  | 250.57d | 0d |  | Himanshu [70%] | 8h |  |  |
| 1755 | 1.7.6.10 | Absorb code reviews changes | 1.43d? | 2008-07-04 | 2008-07-08 | 1754 |  |  | 250.57d | 0d |  | Himanshu [70%] | 8h |  |  |
| 1756 | 1.7.7 | **Source Key pattern** | 20d? | 2008-07-08 | 2008-08-05 |  |  |  | 250.57d |  |  |  | 112h |  |  |
| 1757 | 1.7.7.1 | Source config screen implementation | 2.86d? | 2008-07-08 | 2008-07-11 | 1755 |  |  | 250.57d | 0d |  | Himanshu [70%] | 16h |  |  |
| 1758 | 1.7.7.2 | Accelerators implementation | 2.86d? | 2008-07-11 | 2008-07-16 | 1757 |  |  | 250.57d | 0d |  | Himanshu [70%] | 16h |  |  |
| 1759 | 1.7.7.3 | Source key selection change/ Accelerator data change mechanism | 2.86d? | 2008-07-16 | 2008-07-18 | 1758 |  |  | 250.57d | 0d |  | Himanshu [70%] | 16h |  |  |
| 1760 | 1.7.7.4 | OK/Cancel framework | 2.86d? | 2008-07-18 | 2008-07-23 | 1759 |  |  | 250.57d | 0d |  | Himanshu [70%] | 16h |  |  |
| 1761 | 1.7.7.5 | Unit test for exposed User control | 1.43d? | 2008-07-23 | 2008-07-25 | 1760 |  |  | 250.57d | 0d |  | Himanshu [70%] | 8h |  |  |
| 1762 | 1.7.7.6 | Unit test for Accelerators | 1.43d? | 2008-07-25 | 2008-07-28 | 1761 |  |  | 250.57d | 0d |  | Himanshu [70%] | 8h |  |  |
| 1763 | 1.7.7.7 | Unit test for data refresh | 1.43d? | 2008-07-28 | 2008-07-30 | 1762 |  |  | 250.57d | 0d |  | Himanshu [70%] | 8h |  |  |
| 1764 | 1.7.7.8 | Unit test for OK/Cancel logic | 1.43d? | 2008-07-30 | 2008-07-31 | 1763 |  |  | 250.57d | 0d |  | Himanshu [70%] | 8h |  |  |
| 1765 | 1.7.7.9 | Code reviews | 1.43d? | 2008-07-31 | 2008-08-01 | 1764 |  |  | 250.57d | 0d |  | Himanshu [70%] | 8h |  |  |
| 1766 | 1.7.7.10 | Absorb code reviews changes | 1.43d? | 2008-08-01 | 2008-08-05 | 1765 |  |  | 250.57d |  |  | Himanshu [70%] | 8h |  |  |
| 1767 | 1.8 | **AI Less SLIC Single Commands** | 342.33d? | 2008-02-04 A | 2009-05-27 |  | 2% | 336.41d? | 39.67d |  |  |  | 2887.99h | 52h |  |
| 1768 | 1.8.1 | Develop Code and Nunit tests for 200 Parser Commands (15 per Day) | 18.57d? | 2008-02-04 A | 2008-02-29 |  | 50% | 9.29d? | 48.67d | 0d | start no earlier than 2008-02-04 | Vishal [70%] | 104h | 52h | P1-P5 |

| ID | WBS | Task | Duration | Start | Finish | Predecessors | Total slack | Free slack | Resources | Work | Text1 |
| --- | --- | --- | --- | --- | --- | --- | --- | --- | --- | --- | --- |
| 1769 | 1.8.2 | **AI Layer to IE State Proxy (Instrument Engine AI Layer)** | 104.55d | 2008-02-29 | 2008-07-25 |  | 41.67d |  |  | 552h | P3 |
| 1770 | 1.8.2.1 | Design Frequency IE Interface | 2.86d | 2008-02-29 | 2008-03-05 | 1768 | 42.67d | 0d | Vishal [70%] | 16h |  |
| 1771 | 1.8.2.2 | Implement Frequency IE Interface | 2.86d | 2008-03-05 | 2008-03-10 | 1770 | 43.67d | 0d | Vishal [70%] | 16h |  |
| 1772 | 1.8.2.3 | Nunit Frequency IE Interface | 1.43d | 2008-03-10 | 2008-03-11 | 1771 | 43.67d | 0d | Vishal [70%] | 8h |  |
| 1773 | 1.8.2.4 | Design Channel IE Interface | 7.14d | 2008-03-11 | 2008-03-20 | 1772 | 43.67d | 0d | Vishal [70%] | 40h |  |
| 1774 | 1.8.2.5 | Implement Channel IE Interface | 7.14d | 2008-03-20 | 2008-04-01 | 1773 | 42.67d | 0d | Vishal [70%] | 40h |  |
| 1775 | 1.8.2.6 | Nunit Channel IE Interface | 4.29d | 2008-04-02 | 2008-04-08 | 1774 | 47.67d | 0d | Vishal [70%] | 24h |  |
| 1776 | 1.8.2.7 | Design Trigger IE Interface | 7.14d | 2008-04-08 | 2008-04-21 | 1775 | 40.67d | 0d | Vishal [70%] | 40h |  |
| 1777 | 1.8.2.8 | Implement Trigger IE Interface | 7.14d | 2008-04-21 | 2008-04-30 | 1776 | 40.67d | 0d | Vishal [70%] | 40h |  |
| 1778 | 1.8.2.9 | Nunit Trigger IE Interface | 4.29d | 2008-04-30 | 2008-05-07 | 1777 | 39.67d | 0d | Vishal [70%] | 24h |  |
| 1779 | 1.8.2.10 | Design Source IE Interface | 7.69d | 2008-05-07 | 2008-05-19 | 1778 | 39.67d | 0d | Anjali [65%] | 40h |  |
| 1780 | 1.8.2.11 | Implement Source IE Interface | 7.69d | 2008-05-19 | 2008-05-29 | 1779 | 39.67d | 0d | Anjali [65%] | 40h |  |
| 1781 | 1.8.2.12 | Nunit Source IE Interface | 4.62d | 2008-05-29 | 2008-06-04 | 1780 | 39.67d | 0d | Anjali [65%] | 24h |  |
| 1782 | 1.8.2.13 | Design CAL IE Interface | 3.08d | 2008-06-04 | 2008-06-09 | 1781 | 39.67d | 0d | Anjali [65%] | 16h |  |
| 1783 | 1.8.2.14 | Implement CAL IE Interface | 3.08d | 2008-06-09 | 2008-06-13 | 1782 | 39.67d | 0d | Anjali [65%] | 16h |  |
| 1784 | 1.8.2.15 | Nunit CAL IE Interface | 1.54d | 2008-06-13 | 2008-06-16 | 1783 | 39.67d | 0d | Anjali [65%] | 8h |  |
| 1785 | 1.8.2.16 | Design Data Access Free Run Mode IE Interface | 2.86d | 2008-06-16 | 2008-06-19 | 1784 | 39.67d | 0d | Vishal [70%] | 16h |  |
| 1786 | 1.8.2.17 | Implement Data Access Free Run Mode IE Interface | 2.86d | 2008-06-19 | 2008-06-24 | 1785 | 39.67d | 0d | Vishal [70%] | 16h |  |
| 1787 | 1.8.2.18 | Nunit Data Access Free Run Mode IE Interface | 1.43d | 2008-06-24 | 2008-06-25 | 1786 | 40.67d | 0d | Vishal [70%] | 8h |  |
| 1788 | 1.8.2.19 | Design Data Access Trigger Mode IE Interface | 5.71d | 2008-06-25 | 2008-07-03 | 1787 | 40.67d | 0d | Vishal [70%] | 32h |  |
| 1789 | 1.8.2.20 | Implement Data Access Trigger Mode IE Interface | 5.71d | 2008-07-03 | 2008-07-11 | 1788 | 40.67d | 0d | Vishal [70%] | 32h |  |
| 1790 | 1.8.2.21 | Nunit Data Access Trigger Mode IE Interface | 2.86d | 2008-07-11 | 2008-07-15 | 1789 | 41.67d | 0d | Vishal [70%] | 16h |  |
| 1791 | 1.8.2.22 | Design Data Access Octave Mode IE Interface | 2.86d | 2008-07-15 | 2008-07-18 | 1790 | 41.67d | 0d | Vishal [70%] | 16h |  |
| 1792 | 1.8.2.23 | Implement Data Access Octave Mode IE Interface | 2.86d | 2008-07-18 | 2008-07-23 | 1791 | 41.67d | 0d | Vishal [70%] | 16h |  |
| 1793 | 1.8.2.24 | Nunit Data Access Octave Mode IE Interface | 1.43d | 2008-07-23 | 2008-07-25 | 1792 | 41.67d | 0d | Vishal [70%] | 8h |  |

| ID | WBS | Task | Duration | Start | Finish | Predecessors | Total slack | Free slack | Resources | Work | Text1 |
| --- | --- | --- | --- | --- | --- | --- | --- | --- | --- | --- | --- |
| 1794 | 1.8.3 | **Status System** | 21d? | 2008-02-04 | 2008-03-03 |  | 78.62d |  |  | 103.99h | P2 |
| 1795 | 1.8.3.1 | Design Status System Registers | 7.69d? | 2008-02-04 | 2008-02-14 |  | 78.62d | 0d | Anjali [65%] | 39.99h |  |
| 1796 | 1.8.3.2 | Implement Status System Execution Routines | 7.69d | 2008-02-14 | 2008-02-26 | 1795 | 78.62d | 0d | Anjali [65%] | 40h |  |
| 1797 | 1.8.3.3 | Nunit Status System | 4.62d | 2008-02-26 | 2008-03-03 | 1796 | 78.62d | 0d | Anjali [65%] | 24h |  |
| 1798 | 1.8.4 | **SCPI Required Commands** | 108.62d? | 2008-03-03 | 2008-08-01 |  | 75.93d |  |  | 200h | P5 |
| 1799 | 1.8.4.1 | Design SCPI Required Commands | 15.38d? | 2008-03-03 | 2008-03-26 | 1797 | 77.62d | 0d | Anjali [65%] | 80h |  |
| 1800 | 1.8.4.2 | Implement SCPI Required Commands | 15.38d? | 2008-03-26 | 2008-04-25 | 1799 | 75.62d | 0d | Anjali [65%] | 80h |  |
| 1801 | 1.8.4.3 | Nunit SCPI Required commands | 7.69d? | 2008-07-22 | 2008-08-01 | 1800 | 75.93d | 0d | Anjali [65%] | 40h |  |
| 1802 | 1.8.5 | **Analyzer Modes** | 16.71d? | 2008-07-25 | 2008-08-18 |  | 41.67d |  |  | 88h | P5 |
| 1803 | 1.8.5.1 | Design FFT Mode | 4.29d? | 2008-07-25 | 2008-07-31 | 1793 | 41.67d | 0d | Vishal [70%] | 24h |  |
| 1804 | 1.8.5.2 | Design Octave Mode | 4.29d? | 2008-07-31 | 2008-08-06 | 1803 | 41.67d | 0d | Vishal [70%] | 24h |  |
| 1805 | 1.8.5.3 | Design Stepped Sine Mode | 7.14d? | 2008-08-06 | 2008-08-18 | 1804 | 42.67d | 0d | Vishal [70%] | 40h |  |
| 1806 | 1.8.6 | **Frequency Execution Routines** | 4.29d? | 2008-08-18 | 2008-08-25 |  | 42.67d |  |  | 24h | P2 |
| 1807 | 1.8.6.1 | Implement | 2.86d? | 2008-08-18 | 2008-08-21 | 1805 | 42.67d | 0d | Vishal [70%] | 16h |  |
| 1808 | 1.8.6.2 | Nunit | 1.43d? | 2008-08-21 | 2008-08-25 | 1807 | 42.67d | 0d | Vishal [70%] | 8h |  |
| 1809 | 1.8.7 | **Averaging Execution Routines** | 9.57d? | 2008-08-25 | 2008-09-05 |  | 42.67d |  |  | 48h | P3 |
| 1810 | 1.8.7.1 | Implement | 5.71d? | 2008-08-25 | 2008-09-01 | 1808 | 42.67d | 0d | Vishal [70%] | 32h |  |
| 1811 | 1.8.7.2 | Nunit | 2.86d? | 2008-09-01 | 2008-09-05 | 1810 | 42.67d | 0d | Vishal [70%] | 16h |  |
| 1812 | 1.8.8 | **Source Execution Routines** | 16.92d? | 2008-09-05 | 2008-09-30 |  | 42.67d |  |  | 88h | P5 |
| 1813 | 1.8.8.1 | Implement | 12.31d? | 2008-09-05 | 2008-09-23 | 1811 | 42.67d | 0d | Anjali [65%] | 64h |  |
| 1814 | 1.8.8.2 | Nunit | 4.62d? | 2008-09-23 | 2008-09-30 | 1813 | 42.67d | 0d | Anjali [65%] | 24h |  |
| 1815 | 1.8.9 | **Channel Execution Routines** | 17.71d? | 2008-09-30 | 2008-10-24 |  | 41.67d |  |  | 88h | P5 |
| 1816 | 1.8.9.1 | Implement | 11.43d? | 2008-09-30 | 2008-10-20 | 1814 | 41.67d | 0d | Vishal [70%] | 64h |  |
| 1817 | 1.8.9.2 | Nunit | 4.29d? | 2008-10-20 | 2008-10-24 | 1816 | 41.67d | 0d | Vishal [70%] | 24h |  |

| ID | WBS | Task | Duration | Start | Finish | Predecessors | Total slack | Free slack | Resources | Work | Text1 |
| --- | --- | --- | --- | --- | --- | --- | --- | --- | --- | --- | --- |
| 1818 | 1.8.10 | **Trigger Execution Routines** | 16.71d? | 2008-10-24 | 2008-11-18 |  | 41.67d |  |  | 88h | P5 |
| 1819 | 1.8.10.1 | Implement | 11.43d? | 2008-10-24 | 2008-11-11 | 1817 | 41.67d | 0d | Vishal [70%] | 64h |  |
| 1820 | 1.8.10.2 | Nunit | 4.29d? | 2008-11-11 | 2008-11-18 | 1819 | 41.67d | 0d | Vishal [70%] | 24h |  |
| 1821 | 1.8.11 | Nunit For TCA Commands | 7.69d? | 2008-08-22 | 2008-09-04 | 1801 | 75.93d | 0d | Anjali [65%] | 40h | P5 |
| 1822 | 1.8.12 | **Trace Commands** | 47.71d | 2008-11-18 | 2009-01-22 |  | 39.67d |  |  | 256h | P2 |
| 1823 | 1.8.12.1 | Design AI - Analysis Layer Interface | 4.29d | 2008-11-18 | 2008-11-24 | 1820 | 41.67d | 0d | Vishal [70%] | 24h |  |
| 1824 | 1.8.12.2 | Implement AI -- Analysis Layer Interface | 4.29d | 2008-11-24 | 2008-11-28 | 1823 | 41.67d | 0d | Vishal [70%] | 24h |  |
| 1825 | 1.8.12.3 | Design Trace Combinations | 14.29d | 2008-11-28 | 2008-12-19 | 1824 | 40.67d | 0d | Vishal [70%] | 80h |  |
| 1826 | 1.8.12.4 | Implement Trace Combinations | 14.29d | 2008-12-19 | 2009-01-12 | 1825 | 39.67d | 0d | Vishal [70%] | 80h |  |
| 1827 | 1.8.12.5 | Implement Fetch Command | 2.86d | 2009-01-12 | 2009-01-15 | 1826 | 39.67d | 0d | Vishal [70%] | 16h |  |
| 1828 | 1.8.12.6 | Nunit Fetch Commands | 5.71d | 2009-01-15 | 2009-01-22 | 1827 | 39.67d | 0d | Vishal [70%] | 32h |  |
| 1829 | 1.8.13 | **Measurement Value** | 88.57d | 2009-01-22 | 2009-05-27 |  | 39.67d |  |  | 496h | P2-P5 |
| 1830 | 1.8.13.1 | Design MV Combinations (19 Measurements * 2 Days per Measurment) | 54.29d | 2009-01-22 | 2009-04-09 | 1828 | 39.67d | 0d | Vishal [70%] | 304h |  |
| 1831 | 1.8.13.2 | Implement Trace Combinations | 14.29d | 2009-04-09 | 2009-04-29 | 1830 | 39.67d | 0d | Vishal [70%] | 80h |  |
| 1832 | 1.8.13.3 | Implement Fetch Command | 14.29d | 2009-04-29 | 2009-05-19 | 1831 | 39.67d | 0d | Vishal [70%] | 80h |  |
| 1833 | 1.8.13.4 | Nunit Fetch Commands | 5.71d | 2009-05-19 | 2009-05-27 | 1832 | 39.67d |  | Vishal [70%] | 32h |  |
| 1834 | 1.8.14 | **Analysis** | 242.77d | 2008-02-04 | 2009-01-07 |  | 80.08d |  |  | 464h | P7 |
| 1835 | 1.8.14.1 | Design Analysis Combinations (3 Measurements * 3 Days per Measurment) | 16.36d | 2008-02-04 | 2008-02-26 |  | 80.08d | 0d | Gowie [55%] | 72h |  |
| 1836 | 1.8.14.2 | Design Equation Parser | 9.09d | 2008-02-26 | 2008-03-10 | 1835 | 80.08d | 0d | Gowie [55%] | 40h |  |
| 1837 | 1.8.14.3 | Implement Equation Parser | 30.77d | 2008-04-30 | 2008-07-22 | 1836 | 80.08d | 0d | Anjali [65%] | 160h |  |
| 1838 | 1.8.14.4 | Implement Trace Combinations | 15.38d | 2008-09-04 | 2008-10-22 | 1837 | 81.54d | 0d | Anjali [65%] | 80h |  |
| 1839 | 1.8.14.5 | Implement Fetch Command | 15.38d | 2008-11-27 | 2008-12-19 | 1838 | 80.54d | 0d | Anjali [65%] | 80h |  |
| 1840 | 1.8.14.6 | Nunit Fetch Commands | 6.15d | 2008-12-30 | 2009-01-07 | 1839 | 82.23d | 0d | Anjali [65%] | 32h |  |
| 1841 | 1.8.15 | **Lan Configuration** | 25.62d | 2008-10-22 | 2008-11-27 |  | 74.93d |  |  | 64h | P7 |
| 1842 | 1.8.15.1 | Port from Heroes | 7.69d | 2008-10-22 | 2008-11-04 | 1821 | 74.93d | 0d | Anjali [65%] | 40h |  |
| 1843 | 1.8.15.2 | Nunit | 4.62d | 2008-11-20 | 2008-11-27 | 1842 | 74.93d | 0d | Anjali [65%] | 24h |  |

| ID | WBS | Task | Duration | Start | Finish | Predecessors | Complete | Total slack | Free slack | Constraint | Resources | Work | Actual work | Text1 |
| --- | --- | --- | --- | --- | --- | --- | --- | --- | --- | --- | --- | --- | --- | --- |
| 1844 | 1.8.16 | **Calibration Commands** | 21.54d | 2009-02-26 | 2009-03-27 |  |  | 82.16d |  |  |  | 64h |  | P7 |
| 1845 | 1.8.16.1 | Implement | 7.69d | 2009-02-26 | 2009-03-09 | 1840 |  | 82.16d | 0d |  | Anjali [65%] | 40h |  |  |
| 1846 | 1.8.16.2 | Nunit | 4.62d | 2009-03-23 | 2009-03-27 | 1845 |  | 82.31d |  |  | Anjali [65%] | 24h |  |  |
| 1847 | 1.8.17 | **Misc Commands** | 64.62d | 2009-01-07 | 2009-04-08 |  |  | 74.62d |  |  |  | 120h |  | P7 |
| 1848 | 1.8.17.1 | Implement | 15.38d | 2009-01-07 | 2009-01-29 | 1843 |  | 74.85d | 0d |  | Anjali [65%] | 80h |  |  |
| 1849 | 1.8.17.2 | Nunit | 7.69d | 2009-03-27 | 2009-04-08 | 1848 |  | 74.62d |  |  | Anjali [65%] | 40h |  |  |
| 1850 | 2 | **35670A DataLinker** | 335.51d? | 2008-01-07 A | 2009-04-20 A |  | 100% |  |  |  |  | 616h | 616h |  |
| 1851 | 2.1 | **Design** | 23.86d? | 2008-01-07 A | 2008-02-07 A |  | 100% |  |  |  |  | 128h | 128h |  |
| 1852 | 2.1.1 | FrameWork Design | 5.71d? | 2008-01-07 A | 2008-01-14 A |  | 100% |  |  | start no earlier than 2008-01-07 | Anurag [70%] | 32h | 32h |  |
| 1853 | 2.1.2 | Review and Updation | 2.86d? | 2008-01-14 A | 2008-01-18 A | 1852 | 100% |  |  |  | Anurag [70%] | 16h | 16h |  |
| 1854 | 2.1.3 | UI Design | 7.14d? | 2008-01-18 A | 2008-01-29 A | 1853 | 100% |  |  |  | Anurag [70%] | 40h | 40h |  |
| 1855 | 2.1.4 | Review and Updation | 7.14d? | 2008-01-29 A | 2008-02-07 A | 1854 | 100% |  |  |  | Anurag [70%] | 40h | 40h |  |
| 1856 | 2.2 | **Functionality** | 214.61d? | 2008-02-15 A | 2008-12-12 A |  | 100% |  |  |  |  | 296h | 296h |  |
| 1857 | 2.2.1 | Finding 35670 on LAN-GPIB Converter | 4.62d? | 2008-03-03 A | 2008-03-07 A | 1855 | 100% |  |  |  | Ravi [65%] | 24h | 24h |  |
| 1858 | 2.2.2 | Finding 35670 on USB-GPIB Converter | 4.62d? | 2008-02-15 A | 2008-02-22 A | 1857 | 100% |  |  |  | Ravi [65%] | 24h | 24h |  |
| 1859 | 2.2.3 | Finding 35670 on GPIB-GPIB | 4.62d? | 2008-02-22 A | 2008-02-28 A | 1858 | 100% |  |  |  | Ravi [65%] | 24h | 24h |  |
| 1860 | 2.2.4 | Ibasic prog for Dir info transfer in RAM | 6.15d? | 2008-02-28 A | 2008-05-05 A | 1859 | 100% |  |  |  | Ravi [65%] | 32h | 32h |  |
| 1861 | 2.2.5 | Ibasic prog for Dir info transfer in Floppy Drive | 4.62d? | 2008-05-05 A | 2008-09-09 A | 1860 | 100% |  |  |  | Ravi [65%] | 24h | 24h |  |
| 1862 | 2.2.6 | Implement Data structure to store Dir Info | 3.08d? | 2008-09-17 A | 2008-09-22 A | 1861 | 100% |  |  |  | Ravi [65%] | 16h | 16h |  |
| 1863 | 2.2.7 | Parse the ascii file and store the info in datastructure | 1.54d? | 2008-09-22 A | 2008-09-24 A | 1862 | 100% |  |  |  | Ravi [65%] | 8h | 8h |  |
| 1864 | 2.2.8 | Display data on Screen as per Format | 3.08d? | 2008-09-29 A | 2008-10-03 A | 1863 | 100% |  |  |  | Ravi [65%] | 16h | 16h |  |
| 1865 | 2.2.9 | Sorting of displayed data | 3.08d? | 2008-10-10 A | 2008-10-15 A | 1864 | 100% |  |  |  | Ravi [65%] | 16h | 16h |  |
| 1866 | 2.2.10 | Download selected file | 3.08d? | 2008-10-20 A | 2008-10-23 A | 1865 | 100% |  |  |  | Ravi [65%] | 16h | 16h |  |
| 1867 | 2.2.11 | Download Directory selection dialog box | 1.54d? | 2008-10-23 A | 2008-10-24 A | 1866 | 100% |  |  |  | Ravi [65%] | 8h | 8h |  |
| 1868 | 2.2.12 | DataViewer integration | 4.62d? | 2008-11-04 A | 2008-11-11 A | 1867 | 100% |  |  |  | Ravi [65%] | 24h | 24h |  |
| 1869 | 2.2.13 | Uint Testing | 12.31d? | 2008-11-24 A | 2008-12-12 A | 1868 | 100% |  |  |  | Ravi [65%] | 64h | 64h |  |
| 1870 | 2.3 | System Testing | 15.38d | 2009-01-07 A | 2009-01-29 A | 1869 | 100% |  |  |  | Ravi [65%] | 80h | 80h |  |

| ID | WBS | Task | Duration | Start | Finish | Predecessors | Complete | Resources | Work | Actual work |
| --- | --- | --- | --- | --- | --- | --- | --- | --- | --- | --- |
| 1871 | 2.4 | **Help** | 12.31d? | 2009-02-09 A | 2009-02-26 A |  | 100% |  | 64h | 64h |
| 1872 | 2.4.1 | Online Manual help | 4.62d? | 2009-02-09 A | 2009-02-16 A | 1870 | 100% | Ravi [65%] | 24h | 24h |
| 1873 | 2.4.2 | Link Dialog Help button | 3.08d? | 2009-02-16 A | 2009-02-19 A | 1872 | 100% | Ravi [65%] | 16h | 16h |
| 1874 | 2.4.3 | Getting Started | 4.62d? | 2009-02-19 A | 2009-02-26 A | 1873 | 100% | Ravi [65%] | 24h | 24h |
| 1875 | 2.5 | Show Software (Version number etc) | 3.08d? | 2009-03-02 A | 2009-03-05 A | 1874 | 100% | Ravi [65%] | 16h | 16h |
| 1876 | 2.6 | Installer/Uninstaller | 6.15d? | 2009-04-10 A | 2009-04-20 A | 1875 | 100% | Ravi [65%] | 32h | 32h |
